# 차량 계량대 시스템 재구축 WBS (작업 분해 구조)

| id | name | description | order | work_packages | milestone | deliverables |
| --- | --- | --- | --- | --- | --- | --- |
| P1 | 요구사항 분석 | 요구사항 수집, 분석 및 PRD 확정 단계 | 1 | P1-WP1 요구사항 수집 기존 시스템 분석 및 이해관계자 인터뷰를 통한 요구사항 수집 P1-WP1-T1 킥오프 미팅 및 프로젝트 계획 수립 16.0 NOT_STARTED PM 100.0 1 프로젝트 계획서, P1-WP1-T2 기존 시스템 분석 24.0 NOT_STARTED PM 50.0 1, 백엔드 개발자 50.0 1 P1-WP1-T1 FS 0 현행 시스템 분석서, P1-WP1-T3 이해관계자 인터뷰 (관리자, 운전기사) 24.0 NOT_STARTED PM 100.0 1 P1-WP1-T1 FS 0 인터뷰 결과 보고서, P1-WP1-T4 요구사항 정리 및 분류 16.0 NOT_STARTED PM 100.0 1 P1-WP1-T2 FS 0, P1-WP1-T3 FS 0 요구사항 목록, P1-WP2 요구사항 분석 수집된 요구사항을 분석하고 PRD 문서 작성 P1-WP2-T1 기능 요구사항 분석 24.0 NOT_STARTED PM 100.0 1 P1-WP1-T4 FS 0 FR 목록, P1-WP2-T2 비기능 요구사항 분석 16.0 NOT_STARTED PM 50.0 1, 백엔드 개발자 50.0 1 P1-WP1-T4 FS 0 NFR 목록, P1-WP2-T3 PRD 문서 작성 40.0 NOT_STARTED PM 100.0 1 P1-WP2-T1 FS 0, P1-WP2-T2 FS 0 PRD 문서, P1-WP2-T4 PRD 검토 및 확정 16.0 NOT_STARTED PM 100.0 1 P1-WP2-T3 FS 0 승인된 PRD, P1-WP3 UI/UX 벤치마킹 경쟁 제품 및 유사 시스템 벤치마킹 P1-WP3-T1 경쟁 제품 조사 16.0 NOT_STARTED UI/UX 디자이너 100.0 1 P1-WP1-T1 FS 0 벤치마킹 자료, P1-WP3-T2 사용자 경험 분석 8.0 NOT_STARTED UI/UX 디자이너 100.0 1 P1-WP3-T1 FS 0 UX 분석 보고서 | M1 - 요구사항 분석 완료 | 요구사항 정의서, PRD 문서, UI/UX 벤치마킹 자료 |
| P2 | 설계 | 시스템 아키텍처, DB 설계, API 설계, UI/UX 설계 단계 | 2 | P2-WP1 시스템 아키텍처 설계 전체 시스템 구조 및 기술 스택 설계 P2-WP1-T1 기술 스택 선정 16.0 NOT_STARTED 백엔드 개발자 100.0 1 P1-WP2-T4 FS 0 기술 스택 문서, P2-WP1-T2 시스템 아키텍처 설계 32.0 NOT_STARTED 백엔드 개발자 100.0 1 P2-WP1-T1 FS 0 아키텍처 설계서, P2-WP1-T3 인프라 아키텍처 설계 24.0 NOT_STARTED 인프라 엔지니어 100.0 1 P2-WP1-T1 FS 0 인프라 설계서, P2-WP1-T4 TRD 문서 작성 24.0 NOT_STARTED 백엔드 개발자 100.0 1 P2-WP1-T2 FS 0, P2-WP1-T3 FS 0 TRD 문서, P2-WP2 데이터베이스 설계 데이터 모델 및 스키마 설계 P2-WP2-T1 데이터 모델링 24.0 NOT_STARTED 백엔드 개발자 100.0 1 P2-WP1-T2 FS 0 ERD, P2-WP2-T2 테이블 스키마 설계 16.0 NOT_STARTED 백엔드 개발자 100.0 1 P2-WP2-T1 FS 0 DDL 스크립트, P2-WP2-T3 인덱스 및 최적화 설계 8.0 NOT_STARTED 백엔드 개발자 100.0 1 P2-WP2-T2 FS 0 DB 설계서, P2-WP3 API 설계 REST API 및 WebSocket 인터페이스 설계 P2-WP3-T1 API 엔드포인트 설계 32.0 NOT_STARTED 백엔드 개발자 100.0 1 P2-WP2-T2 FS 0 API 명세서, P2-WP3-T2 WebSocket 이벤트 설계 16.0 NOT_STARTED 백엔드 개발자 100.0 1 P2-WP3-T1 FS 0 WebSocket 명세서, P2-WP3-T3 API 문서화 (OpenAPI) 16.0 NOT_STARTED 백엔드 개발자 100.0 1 P2-WP3-T2 FS 0 Swagger 문서, P2-WP4 UI/UX 설계 웹 및 모바일 앱 UI/UX 설계 P2-WP4-T1 웹 대시보드 와이어프레임 32.0 NOT_STARTED UI/UX 디자이너 100.0 1 P1-WP3-T2 FS 0 FR-001 와이어프레임, P2-WP4-T2 모바일 앱 와이어프레임 24.0 NOT_STARTED UI/UX 디자이너 100.0 1 P1-WP3-T2 FS 0 FR-006 와이어프레임, P2-WP4-T3 UI 디자인 (웹) 40.0 NOT_STARTED UI/UX 디자이너 100.0 1 P2-WP4-T1 FS 0 디자인 시안, P2-WP4-T4 UI 디자인 (모바일) 32.0 NOT_STARTED UI/UX 디자이너 100.0 1 P2-WP4-T2 FS 0 디자인 시안, P2-WP4-T5 디자인 시스템 구축 16.0 NOT_STARTED UI/UX 디자이너 100.0 1 P2-WP4-T3 SS 0 디자인 시스템 | M2 - 설계 완료 | TRD (기술 요구사항 문서), DB 설계서, API 명세서, UI/UX 디자인 |
| P3 | 개발 | 웹 시스템, 모바일 앱, 엣지 서버, 연동 모듈 개발 단계 | 3 | P3-WP1 백엔드 개발 API 서버 및 비즈니스 로직 개발 P3-WP1-T1 프로젝트 구조 및 환경 설정 16.0 NOT_STARTED 백엔드 개발자 100.0 1 P2-WP3-T3 FS 0 프로젝트 셋업, P3-WP1-T2 인증/인가 모듈 개발 40.0 NOT_STARTED 백엔드 개발자 100.0 1 P3-WP1-T1 FS 0 NFR-003 인증 모듈, P3-WP1-T3 차량/운전기사 관리 API 개발 40.0 NOT_STARTED 백엔드 개발자 100.0 1 P3-WP1-T2 FS 0 FR-003, FR-004 API 모듈, P3-WP1-T4 계량 데이터 관리 API 개발 48.0 NOT_STARTED 백엔드 개발자 100.0 1 P3-WP1-T2 FS 0 FR-005, FR-010 API 모듈, P3-WP1-T5 대기열 관리 API 개발 40.0 NOT_STARTED 백엔드 개발자 100.0 1 P3-WP1-T2 FS 0 FR-006, FR-007 API 모듈, P3-WP1-T6 통계/리포트 API 개발 32.0 NOT_STARTED 백엔드 개발자 100.0 1 P3-WP1-T4 FS 0 FR-001, FR-002 API 모듈, P3-WP1-T7 WebSocket 서버 개발 32.0 NOT_STARTED 백엔드 개발자 100.0 1 P3-WP1-T5 FS 0 FR-001, FR-006 WebSocket 서버, P3-WP1-T8 푸시 알림 서비스 개발 24.0 NOT_STARTED 백엔드 개발자 100.0 1 P3-WP1-T5 FS 0 FR-007 푸시 서비스, P3-WP2 프론트엔드 개발 (웹) React 기반 웹 대시보드 개발 P3-WP2-T1 프로젝트 구조 및 환경 설정 16.0 NOT_STARTED 프론트엔드 개발자 100.0 1 P2-WP4-T3 FS 0 프로젝트 셋업, P3-WP2-T2 공통 컴포넌트 개발 40.0 NOT_STARTED 프론트엔드 개발자 100.0 1 P3-WP2-T1 FS 0 컴포넌트 라이브러리, P3-WP2-T3 대시보드 화면 개발 56.0 NOT_STARTED 프론트엔드 개발자 100.0 1 P3-WP2-T2 FS 0, P3-WP1-T6 FS 0 FR-001 대시보드 화면, P3-WP2-T4 차량/운전기사 관리 화면 개발 48.0 NOT_STARTED 프론트엔드 개발자 100.0 1 P3-WP2-T2 FS 0, P3-WP1-T3 FS 0 FR-003, FR-004 관리 화면, P3-WP2-T5 계량 이력 조회 화면 개발 40.0 NOT_STARTED 프론트엔드 개발자 100.0 1 P3-WP2-T2 FS 0, P3-WP1-T4 FS 0 FR-005 조회 화면, P3-WP2-T6 리포트 화면 개발 32.0 NOT_STARTED 프론트엔드 개발자 100.0 1 P3-WP2-T3 FS 0 FR-002 리포트 화면, P3-WP2-T7 실시간 연동 (WebSocket) 24.0 NOT_STARTED 프론트엔드 개발자 100.0 1 P3-WP1-T7 FS 0, P3-WP2-T3 FS 0 FR-001 실시간 기능, P3-WP3 모바일 앱 개발 Flutter 기반 운전기사용 모바일 앱 개발 P3-WP3-T1 프로젝트 구조 및 환경 설정 16.0 NOT_STARTED 모바일 개발자 100.0 1 P2-WP4-T4 FS 0 프로젝트 셋업, P3-WP3-T2 인증/로그인 화면 개발 32.0 NOT_STARTED 모바일 개발자 100.0 1 P3-WP3-T1 FS 0, P3-WP1-T2 FS 0 NFR-003 로그인 화면, P3-WP3-T3 대기 순번 화면 개발 48.0 NOT_STARTED 모바일 개발자 100.0 1 P3-WP3-T2 FS 0, P3-WP1-T5 FS 0 FR-006 순번 화면, P3-WP3-T4 계량 결과 화면 개발 40.0 NOT_STARTED 모바일 개발자 100.0 1 P3-WP3-T2 FS 0, P3-WP1-T4 FS 0 FR-009 결과 화면, P3-WP3-T5 전자 전표 화면 개발 32.0 NOT_STARTED 모바일 개발자 100.0 1 P3-WP3-T4 FS 0 FR-008 전표 화면, P3-WP3-T6 푸시 알림 연동 (FCM) 24.0 NOT_STARTED 모바일 개발자 100.0 1 P3-WP1-T8 FS 0, P3-WP3-T3 FS 0 FR-007 푸시 기능, P3-WP3-T7 오프라인 캐싱 구현 16.0 NOT_STARTED 모바일 개발자 100.0 1 P3-WP3-T3 FS 0 FR-006 오프라인 기능, P3-WP4 엣지 서버 개발 현장 인디케이터 데이터 수집 프로그램 개발 P3-WP4-T1 시리얼 통신 모듈 개발 (A사) 40.0 NOT_STARTED 백엔드 개발자 100.0 1 P3-WP1-T4 FS 0 FR-010 시리얼 모듈, P3-WP4-T2 시리얼 통신 모듈 개발 (B사) 24.0 NOT_STARTED 백엔드 개발자 100.0 1 P3-WP4-T1 FS 0 FR-010 시리얼 모듈, P3-WP4-T3 데이터 파싱 및 전송 모듈 32.0 NOT_STARTED 백엔드 개발자 100.0 1 P3-WP4-T1 FS 0 FR-010 파싱 모듈, P3-WP4-T4 오프라인 버퍼링 (SQLite) 16.0 NOT_STARTED 백엔드 개발자 100.0 1 P3-WP4-T3 FS 0 FR-010 버퍼 모듈, P3-WP5 연동 모듈 개발 ERP 및 전광판 연동 모듈 개발 P3-WP5-T1 ERP 연동 모듈 개발 40.0 NOT_STARTED 백엔드 개발자 100.0 1 P3-WP1-T4 FS 0 FR-011 ERP 연동 모듈, P3-WP5-T2 전광판 연동 모듈 개발 24.0 NOT_STARTED 백엔드 개발자 100.0 1 P3-WP1-T5 FS 0 FR-012 전광판 연동 모듈, P3-WP5-T3 배치 스케줄러 개발 (Celery) 16.0 NOT_STARTED 백엔드 개발자 100.0 1 P3-WP5-T1 FS 0 FR-011 배치 모듈 | M3 - 개발 완료 | 웹 시스템, 모바일 앱 (iOS/Android), 엣지 수집 프로그램, 연동 모듈 |
| P4 | 테스트 | 통합 테스트, 사용자 테스트, 성능 테스트 단계 | 4 | P4-WP1 통합 테스트 시스템 전체 통합 테스트 P4-WP1-T1 테스트 계획 수립 16.0 NOT_STARTED QA 100.0 1 P3-WP2-T7 FS 0 테스트 계획서, P4-WP1-T2 테스트 케이스 작성 40.0 NOT_STARTED QA 100.0 1 P4-WP1-T1 FS 0 테스트 케이스, P4-WP1-T3 API 테스트 40.0 NOT_STARTED QA 100.0 1 P4-WP1-T2 FS 0 테스트 결과, P4-WP1-T4 웹 시스템 테스트 32.0 NOT_STARTED QA 100.0 1 P4-WP1-T3 SS 0 테스트 결과, P4-WP1-T5 모바일 앱 테스트 32.0 NOT_STARTED QA 100.0 1 P4-WP1-T3 SS 0 테스트 결과, P4-WP1-T6 연동 테스트 (인디케이터, ERP, 전광판) 24.0 NOT_STARTED QA 50.0 1, 백엔드 개발자 50.0 1 P4-WP1-T3 FS 0 FR-010, FR-011, FR-012 테스트 결과, P4-WP2 사용자 테스트 (UAT) 실제 사용자 환경에서의 테스트 P4-WP2-T1 UAT 계획 및 환경 준비 16.0 NOT_STARTED PM 50.0 1, QA 50.0 1 P4-WP1-T4 FS 0 UAT 계획서, P4-WP2-T2 관리자 UAT 수행 24.0 NOT_STARTED QA 100.0 1 P4-WP2-T1 FS 0 UAT 결과, P4-WP2-T3 운전기사 UAT 수행 24.0 NOT_STARTED QA 100.0 1 P4-WP2-T1 FS 0 UAT 결과, P4-WP2-T4 피드백 반영 및 수정 40.0 NOT_STARTED 백엔드 개발자 50.0 1, 프론트엔드 개발자 25.0 1, 모바일 개발자 25.0 1 P4-WP2-T2 FS 0, P4-WP2-T3 FS 0 수정 사항, P4-WP3 성능 테스트 부하 테스트 및 성능 최적화 P4-WP3-T1 부하 테스트 시나리오 작성 8.0 NOT_STARTED QA 100.0 1 P4-WP1-T3 FS 0 NFR-001 테스트 시나리오, P4-WP3-T2 부하 테스트 수행 16.0 NOT_STARTED QA 100.0 1 P4-WP3-T1 FS 0 NFR-001 테스트 결과, P4-WP3-T3 성능 최적화 24.0 NOT_STARTED 백엔드 개발자 100.0 1 P4-WP3-T2 FS 0 NFR-001, NFR-002 최적화 완료, P4-WP4 문서화 사용자 매뉴얼 및 운영 문서 작성 P4-WP4-T1 사용자 매뉴얼 작성 (웹) 16.0 NOT_STARTED PM 100.0 1 P4-WP2-T4 FS 0 사용자 매뉴얼, P4-WP4-T2 사용자 매뉴얼 작성 (앱) 8.0 NOT_STARTED PM 100.0 1 P4-WP2-T4 FS 0 사용자 매뉴얼 | M4 - 테스트 완료 | 테스트 계획서, 테스트 케이스, 테스트 결과 보고서, 사용자 매뉴얼 |
| P5 | 배포 및 오픈 | 시스템 배포 및 안정화 단계 | 5 | P5-WP1 인프라 구축 AWS 인프라 및 현장 엣지 서버 구축 P5-WP1-T1 AWS 인프라 구축 24.0 NOT_STARTED 인프라 엔지니어 100.0 1 P4-WP3-T3 FS 0 인프라 환경, P5-WP1-T2 CI/CD 파이프라인 구축 16.0 NOT_STARTED 인프라 엔지니어 100.0 1 P5-WP1-T1 SS 0 CI/CD 환경, P5-WP1-T3 현장 엣지 서버 설치 16.0 NOT_STARTED 백엔드 개발자 100.0 1 P5-WP1-T1 FS 0 FR-010 엣지 서버, P5-WP1-T4 VPN 설정 및 연결 8.0 NOT_STARTED 인프라 엔지니어 100.0 1 P5-WP1-T3 FS 0 VPN 연결, P5-WP2 배포 시스템 배포 및 데이터 마이그레이션 P5-WP2-T1 운영 환경 배포 16.0 NOT_STARTED 백엔드 개발자 100.0 1 P5-WP1-T4 FS 0 배포 완료, P5-WP2-T2 데이터 마이그레이션 24.0 NOT_STARTED 백엔드 개발자 100.0 1 P5-WP2-T1 FS 0 마이그레이션 완료, P5-WP2-T3 앱 스토어 배포 (iOS/Android) 16.0 NOT_STARTED 모바일 개발자 100.0 1 P5-WP2-T1 FS 0 앱 배포, P5-WP3 교육 및 안정화 사용자 교육 및 시스템 안정화 P5-WP3-T1 운영 매뉴얼 작성 16.0 NOT_STARTED PM 100.0 1 P5-WP2-T2 FS 0 운영 매뉴얼, P5-WP3-T2 사용자 교육 수행 16.0 NOT_STARTED PM 100.0 1 P5-WP3-T1 FS 0 교육 완료, P5-WP3-T3 오픈 후 안정화 지원 40.0 NOT_STARTED 백엔드 개발자 40.0 1, 프론트엔드 개발자 30.0 1, 모바일 개발자 30.0 1 P5-WP3-T2 FS 0 안정화 완료 | M5 - 오픈 | 운영 매뉴얼, 교육 자료, 운영 시스템 |

Links (resource_type, total_hours, total_days, peak_allocation):
- PM 320.0 40.0 1
- 백엔드 개발자 720.0 90.0 2
- 프론트엔드 개발자 560.0 70.0 1
- 모바일 개발자 400.0 50.0 1
- UI/UX 디자이너 200.0 25.0 1
- QA 240.0 30.0 1
- 인프라 엔지니어 40.0 5.0 1
