# 요구사항 - 작업분해구조 (WBS)

| id | name | description | order | work_packages | start_date | end_date | milestone | deliverables |
| --- | --- | --- | --- | --- | --- | --- | --- | --- |
| PH-001 | 프로젝트 초기화 및 설계 | 프로젝트 환경 구성, 기술 스택 선정, UI/UX 설계 및 시스템 아키텍처 정의 | 1 | WP-001 프로젝트 환경 구성 및 기술 스택 선정 개발 환경 설정, 프론트엔드/백엔드 기술 스택 확정, 빌드 및 배포 파이프라인 구성, 코드 저장소 초기화 및 프로젝트 보일러플레이트 생성 TSK-001 기술 스택 후보 조사 및 비교 분석 프로젝트 요구사항에 적합한 프론트엔드/백엔드/DB/인프라 기술 스택 후보를 조사하고 비교 분석표를 작성한다. 성능, 생태계, 팀 역량, 라이선스, 커뮤니티 활성도 등을 기준으로 평가한다. 16.0 NOT_STARTED PM 100.0 1 2026-02-02 2026-02-03 기술 스택 비교 분석서, 기술 스택 평가 매트릭스, TSK-002 기술 스택 확정 및 아키텍처 의사결정 문서 작성 이해관계자 리뷰를 거쳐 프론트엔드, 백엔드, 데이터베이스, 메시지 큐, 캐시, 인프라 등 최종 기술 스택을 확정하고 ADR(Architecture Decision Record)을 작성한다. 8.0 NOT_STARTED PM 100.0 1 TSK-001 FS 0 2026-02-04 2026-02-04 기술 스택 확정 문서, ADR 문서, TSK-003 코드 저장소 초기화 및 브랜치 전략 수립 Git 저장소를 생성하고 브랜치 전략(Git Flow/GitHub Flow 등)을 수립한다. README, .gitignore, CODEOWNERS, PR 템플릿, 이슈 템플릿 등 기본 파일을 구성한다. 8.0 NOT_STARTED 개발자 100.0 1 TSK-002 FS 0 2026-02-05 2026-02-05 Git 저장소, 브랜치 전략 문서, PR/이슈 템플릿, TSK-004 프론트엔드 프로젝트 보일러플레이트 생성 확정된 프론트엔드 기술 스택 기반으로 프로젝트 초기 구조를 생성한다. 폴더 구조, 라우팅, 상태 관리, API 클라이언트, 공통 컴포넌트 템플릿, 환경 변수 설정 등을 포함한다. 16.0 NOT_STARTED 개발자 100.0 1 TSK-003 FS 0 2026-02-06 2026-02-07 프론트엔드 보일러플레이트 코드, 프론트엔드 프로젝트 구조 문서, TSK-005 백엔드 프로젝트 보일러플레이트 생성 확정된 백엔드 기술 스택 기반으로 프로젝트 초기 구조를 생성한다. 폴더 구조, 미들웨어, 로깅, 에러 핸들링, DB 연결 설정, 환경 변수 관리, 헬스체크 엔드포인트 등을 포함한다. 16.0 NOT_STARTED 개발자 100.0 1 TSK-003 FS 0 2026-02-08 2026-02-09 백엔드 보일러플레이트 코드, 백엔드 프로젝트 구조 문서, TSK-006 로컬 개발 환경 구성 및 문서화 Docker Compose 기반 로컬 개발 환경을 구성한다. DB, 캐시, 메시지 큐 등 의존 서비스의 로컬 실행 환경을 설정하고, 개발자 온보딩 가이드를 작성한다. 16.0 NOT_STARTED 개발자 100.0 1 TSK-004 FS 0, TSK-005 FS 0 2026-02-10 2026-02-11 docker-compose.yml, 로컬 개발 환경 설정 가이드, 환경 변수 샘플 파일(.env.example), TSK-007 코드 품질 도구 설정 (Lint, Formatter, Pre-commit Hook) ESLint, Prettier, Stylelint 등 코드 품질 도구를 설정하고 pre-commit hook(Husky, lint-staged 등)을 구성한다. 백엔드 측도 해당 언어에 맞는 린터와 포매터를 설정한다. 8.0 NOT_STARTED 개발자 100.0 1 TSK-004 FS 0, TSK-005 FS 0 2026-02-12 2026-02-12 린트 설정 파일, 포매터 설정 파일, pre-commit hook 설정, TSK-008 단위 테스트 및 통합 테스트 프레임워크 구성 프론트엔드(Jest, Vitest, Testing Library 등)와 백엔드(JUnit, pytest 등) 테스트 프레임워크를 설정하고, 샘플 테스트 코드를 작성하여 테스트 실행 환경을 검증한다. 12.0 NOT_STARTED QA 100.0 1 TSK-004 FS 0, TSK-005 FS 0 2026-02-13 2026-02-13 테스트 프레임워크 설정 파일, 샘플 테스트 코드, 테스트 실행 가이드, TSK-009 CI 파이프라인 구성 GitHub Actions, GitLab CI 등을 활용하여 CI 파이프라인을 구성한다. 코드 푸시/PR 시 자동으로 빌드, 린트, 테스트가 실행되도록 설정한다. 16.0 NOT_STARTED 개발자 100.0 1 TSK-007 FS 0, TSK-008 FS 0 2026-02-14 2026-02-15 CI 파이프라인 설정 파일, CI 파이프라인 구성 문서, TSK-010 CD 파이프라인 및 배포 환경 구성 개발(Dev), 스테이징(Staging), 운영(Production) 환경을 정의하고, 각 환경에 대한 자동 배포 파이프라인을 구성한다. 컨테이너 레지스트리, 오케스트레이션(K8s/ECS 등), 환경별 설정 관리를 포함한다. 24.0 NOT_STARTED 개발자 100.0 1 TSK-009 FS 0 2026-02-16 2026-02-18 CD 파이프라인 설정 파일, 배포 환경 구성도, Dockerfile, 배포 가이드 문서, TSK-011 디자인 시스템 초기 구성 및 UI 킷 연동 디자인 토큰(색상, 타이포그래피, 간격 등)을 정의하고 Figma 등 디자인 도구와 프론트엔드 프로젝트 간 연동 체계를 수립한다. Storybook 등 UI 컴포넌트 문서화 도구를 설정한다. 16.0 NOT_STARTED 디자이너 100.0 1 TSK-004 FS 0 2026-02-19 2026-02-20 디자인 토큰 정의서, Storybook 설정, 디자인-개발 연동 가이드, TSK-012 개발 환경 통합 검증 및 온보딩 테스트 전체 개발 환경(로컬 개발, CI/CD, 코드 품질 도구, 테스트 프레임워크)을 통합 검증한다. 신규 개발자 관점에서 온보딩 가이드를 따라 환경을 구성하고, 미비점을 보완한다. 8.0 NOT_STARTED QA 100.0 1 TSK-006 FS 0, TSK-009 FS 0, TSK-010 FS 0, TSK-011 FS 0 2026-02-21 2026-02-21 환경 검증 체크리스트, 온보딩 테스트 결과 보고서, 보완 사항 목록 2026-02-02 2026-02-21, WP-002 시스템 아키텍처 설계 전체 시스템 아키텍처 정의, API 설계, 데이터 흐름 설계, 외부 데이터 소스(주식 시세, 금/은, 암호화폐, 시장지수) 연동 방식 정의, 종목 교체 가능 구조를 위한 모듈화 아키텍처 설계 TSK-001 시스템 요구사항 분석 및 정리 전체 시스템의 기능적/비기능적 요구사항을 수집하고 정리. 외부 데이터 소스(주식 시세, 금/은, 암호화폐, 시장지수) 연동 요구사항, 종목 교체 가능 구조 요구사항, 성능/확장성/보안 요구사항을 문서화 16.0 NOT_STARTED PM 100.0 1 TSK-012 FS 0 2026-02-22 2026-02-23 요구사항 정의서, 외부 데이터 소스 목록 및 사양서, 비기능 요구사항 명세서, TSK-002 외부 데이터 소스 API 조사 및 분석 주식 시세, 금/은 가격, 암호화폐, 시장지수 등 외부 데이터 제공 API를 조사. 각 API의 호출 제한, 인증 방식, 응답 형식, 지연시간, 비용 구조를 분석하고 비교 평가 24.0 NOT_STARTED 개발자 100.0 1 TSK-001 FS 0 2026-02-24 2026-02-26 외부 API 비교 분석서, API별 기술 사양 정리 문서, 데이터 소스 선정 권고안, TSK-003 전체 시스템 아키텍처 설계 시스템 전체 구조를 정의. 프론트엔드/백엔드/데이터 계층 분리, 마이크로서비스 또는 모놀리식 여부 결정, 인프라 구성(클라우드/온프레미스), 메시지 큐/캐시/DB 등 미들웨어 선정. 종목 교체가 가능한 플러그인 기반 모듈화 아키텍처 반영 32.0 NOT_STARTED 개발자 100.0 1 TSK-001 FS 0, TSK-002 FS 0 2026-02-27 2026-03-02 시스템 아키텍처 다이어그램(C4 모델), 기술 스택 선정 문서, 아키텍처 의사결정 기록(ADR), TSK-004 모듈화 아키텍처 상세 설계 종목 교체 가능 구조를 위한 모듈화 아키텍처 상세 설계. 데이터 소스 어댑터 패턴 정의, 플러그인 인터페이스 규격 설계, 종목 추가/제거/교체 시 영향 범위 최소화를 위한 추상화 계층 설계 24.0 NOT_STARTED 개발자 100.0 1 TSK-003 FS 0 2026-03-03 2026-03-05 모듈 구조 설계서, 어댑터 인터페이스 명세서, 플러그인 라이프사이클 정의서, 모듈 간 의존성 다이어그램, TSK-005 데이터 흐름 설계 외부 데이터 소스로부터 데이터 수집, 정규화, 저장, 가공, 표시까지의 전체 데이터 파이프라인 설계. 실시간 스트리밍과 배치 처리 흐름 정의, 데이터 변환 규칙 및 정규화 스키마 설계 24.0 NOT_STARTED 개발자 100.0 1 TSK-003 FS 0, TSK-004 FS 0 2026-03-06 2026-03-08 데이터 흐름 다이어그램(DFD), 데이터 정규화 스키마, ETL/스트리밍 파이프라인 설계서, TSK-006 데이터베이스 스키마 설계 시세 데이터, 종목 메타정보, 사용자 설정, 시장지수 등을 저장하기 위한 DB 스키마 설계. 시계열 데이터 저장 전략, 파티셔닝/인덱싱 전략 수립. 종목 교체 시 스키마 영향도 최소화 설계 20.0 NOT_STARTED 개발자 100.0 1 TSK-005 FS 0 2026-03-09 2026-03-10 ERD, DDL 스크립트, 인덱싱/파티셔닝 전략 문서, 데이터 보존 정책서, TSK-007 API 엔드포인트 설계 내부 서비스 간 API 및 클라이언트 대상 REST/GraphQL API 설계. 시세 조회, 종목 관리, 시장지수 조회, 사용자 설정 등 도메인별 API 엔드포인트 정의. 페이지네이션, 필터링, 에러 핸들링 규격 통일 24.0 NOT_STARTED 개발자 100.0 1 TSK-003 FS 0, TSK-005 FS 0 2026-03-11 2026-03-13 API 명세서(OpenAPI/Swagger), API 버저닝 정책 문서, 에러 코드 체계 정의서, TSK-008 외부 데이터 소스 연동 인터페이스 설계 주식 시세, 금/은, 암호화폐, 시장지수 등 각 외부 데이터 소스와의 연동 인터페이스 상세 설계. 인증/인가 흐름, 재시도 정책, 장애 대응(Circuit Breaker), 데이터 캐싱 전략, Rate Limit 처리 방안 정의 20.0 NOT_STARTED 개발자 100.0 1 TSK-002 FS 0, TSK-004 FS 0 2026-03-14 2026-03-15 외부 연동 인터페이스 설계서, 장애 대응 시나리오 문서, 캐싱 전략 문서, TSK-009 보안 아키텍처 설계 인증/인가 체계, API Key 관리, 외부 API 크레덴셜 보관 방식, 데이터 암호화(전송/저장), CORS 정책, 입력 검증 등 보안 관련 아키텍처 요소 설계 16.0 NOT_STARTED 개발자 100.0 1 TSK-003 FS 0, TSK-007 FS 0 2026-03-16 2026-03-17 보안 아키텍처 설계서, 인증/인가 흐름도, 보안 체크리스트, TSK-010 UI/UX 정보 구조 및 화면 흐름 설계 시세 대시보드, 종목 관리, 시장지수 뷰 등 주요 화면의 정보 구조(IA)와 화면 흐름(User Flow) 설계. 실시간 데이터 표시, 종목 교체 UI, 차트/테이블 레이아웃 등 핵심 인터랙션 정의 20.0 NOT_STARTED 디자이너 100.0 1 TSK-001 FS 0, TSK-007 FS 0 2026-03-18 2026-03-19 정보 구조도(IA), 화면 흐름도(User Flow), 와이어프레임, TSK-011 인프라 및 배포 아키텍처 설계 CI/CD 파이프라인, 컨테이너 오케스트레이션, 모니터링/로깅/알림 체계, 오토스케일링, 환경별(개발/스테이징/프로덕션) 구성 설계 16.0 NOT_STARTED 개발자 100.0 1 TSK-003 FS 0 2026-03-20 2026-03-21 인프라 구성도, CI/CD 파이프라인 설계서, 모니터링/로깅 전략 문서, TSK-012 아키텍처 검증 및 PoC 핵심 아키텍처 요소에 대한 기술 검증(PoC) 수행. 외부 데이터 소스 1종 연동 프로토타입, 종목 교체 모듈 동적 로딩 검증, 실시간 데이터 파이프라인 성능 테스트 32.0 NOT_STARTED 개발자 100.0 1 TSK-004 FS 0, TSK-005 FS 0, TSK-008 FS 0 2026-03-22 2026-03-25 PoC 소스코드, 기술 검증 결과 보고서, 성능 벤치마크 데이터, TSK-013 QA 전략 및 테스트 아키텍처 설계 단위/통합/E2E 테스트 전략 수립. 외부 데이터 소스 모킹 전략, 종목 교체 시나리오 테스트 케이스 설계, 성능/부하 테스트 계획 수립 16.0 NOT_STARTED QA 100.0 1 TSK-007 FS 0, TSK-008 FS 0 2026-03-26 2026-03-27 테스트 전략서, 테스트 아키텍처 문서, 외부 API 모킹 가이드, TSK-014 아키텍처 리뷰 및 최종 문서화 전체 아키텍처 설계 결과에 대한 이해관계자 리뷰 수행. 피드백 반영 후 최종 아키텍처 문서 확정. 개발 가이드라인 및 코딩 컨벤션 문서 작성 16.0 NOT_STARTED PM 100.0 1 TSK-006 FS 0, TSK-007 FS 0, TSK-009 FS 0, TSK-010 FS 0, TSK-011 FS 0, TSK-012 FS 0, TSK-013 FS 0 2026-03-28 2026-03-29 최종 아키텍처 설계서, 아키텍처 리뷰 회의록, 개발 가이드라인 문서, 코딩 컨벤션 문서 2026-02-22 2026-03-29, WP-003 대시보드 UI/UX 설계 메인 대시보드 레이아웃 설계, 와이어프레임 및 프로토타입 제작, 위젯 배치 구조 정의(차트, 뉴스, 종목 정보, 시세 영역), 반응형 디자인 가이드 수립 TSK-001 대시보드 요구사항 분석 및 벤치마킹 주요 금융 대시보드 서비스(Bloomberg, Yahoo Finance, 키움증권 등) 벤치마킹 및 사용자 요구사항 정리. 대시보드에 포함될 위젯(차트, 뉴스, 종목 정보, 시세 영역) 기능 요구사항과 우선순위 도출 12.0 NOT_STARTED PM 100.0 1 TSK-014 FS 0 2026-03-30 2026-03-30 벤치마킹 분석 보고서, 기능 요구사항 정의서, 위젯 목록 및 우선순위 매트릭스, TSK-002 정보 구조(IA) 설계 대시보드 메인 화면의 정보 구조 설계. 위젯 간 계층 구조, 네비게이션 흐름, 데이터 그룹핑 정의. 차트/뉴스/종목정보/시세 영역의 정보 우선순위 및 배치 논리 수립 10.0 NOT_STARTED 디자이너 100.0 1 TSK-001 FS 0 2026-03-31 2026-03-31 정보 구조(IA) 다이어그램, 사이트맵, 콘텐츠 인벤토리, TSK-003 데스크톱 와이어프레임 설계 데스크톱 해상도(1280px 이상) 기준 대시보드 메인 레이아웃 와이어프레임 제작. 차트 위젯, 뉴스 위젯, 종목 정보 위젯, 시세 영역 위젯의 배치 구조 및 그리드 시스템 정의 16.0 NOT_STARTED 디자이너 100.0 1 TSK-002 FS 0 2026-04-01 2026-04-02 데스크톱 와이어프레임(Lo-Fi), 그리드 시스템 정의서, 위젯 배치 구조도, TSK-004 태블릿/모바일 와이어프레임 설계 태블릿(768px~1279px) 및 모바일(767px 이하) 해상도 대응 와이어프레임 제작. 각 브레이크포인트별 위젯 재배치 규칙 및 축소/숨김 정책 정의 14.0 NOT_STARTED 디자이너 100.0 1 TSK-003 FS 0 2026-04-03 2026-04-03 태블릿 와이어프레임, 모바일 와이어프레임, 브레이크포인트별 위젯 배치 규칙 문서, TSK-005 UI 디자인 시스템 및 스타일 가이드 수립 대시보드에 적용할 컬러 팔레트, 타이포그래피, 아이콘 세트, 컴포넌트 스타일(버튼, 카드, 테이블 등) 정의. 다크모드/라이트모드 고려 16.0 NOT_STARTED 디자이너 100.0 1 TSK-003 FS 0 2026-04-04 2026-04-05 UI 스타일 가이드, 컬러 팔레트 정의서, 컴포넌트 라이브러리 초안, TSK-006 차트 위젯 상세 설계 주가 차트, 기술적 지표 차트 등 차트 위젯의 상세 UI 설계. 캔들스틱/라인 차트 전환, 시간 범위 선택, 줌/패닝 인터랙션, 툴팁 표시 방식 정의 14.0 NOT_STARTED 디자이너 100.0 1 TSK-005 FS 0 2026-04-06 2026-04-06 차트 위젯 Hi-Fi 디자인, 차트 인터랙션 명세서, TSK-007 뉴스/종목정보/시세 위젯 상세 설계 뉴스 피드 위젯, 종목 상세 정보 위젯, 실시간 시세 영역 위젯의 상세 UI 설계. 리스트 정렬/필터, 실시간 업데이트 표시(깜빡임/색상 변화), 스크롤 동작 등 인터랙션 정의 16.0 NOT_STARTED 디자이너 100.0 1 TSK-005 FS 0 2026-04-07 2026-04-08 뉴스 위젯 Hi-Fi 디자인, 종목정보 위젯 Hi-Fi 디자인, 시세 위젯 Hi-Fi 디자인, 인터랙션 명세서, TSK-008 위젯 커스터마이징 UX 설계 사용자가 위젯을 드래그앤드롭으로 재배치, 크기 조절, 추가/삭제할 수 있는 커스터마이징 기능의 UX 흐름 설계. 레이아웃 저장/초기화 기능 포함 12.0 NOT_STARTED 디자이너 100.0 1 TSK-006 FS 0, TSK-007 FS 0 2026-04-09 2026-04-09 커스터마이징 UX 플로우 다이어그램, 커스터마이징 모드 UI 디자인, TSK-009 인터랙티브 프로토타입 제작 Figma 등 프로토타이핑 도구를 활용하여 전체 대시보드의 인터랙티브 프로토타입 제작. 위젯 간 전환, 데이터 로딩 상태, 에러 상태, 빈 상태 등 주요 상태 포함 20.0 NOT_STARTED 디자이너 100.0 1 TSK-006 FS 0, TSK-007 FS 0, TSK-008 FS 0 2026-04-10 2026-04-11 인터랙티브 프로토타입(Figma), 상태별 화면 정의서(로딩/에러/빈 상태), TSK-010 반응형 디자인 가이드 수립 브레이크포인트 정의, 그리드 시스템 상세 규격, 위젯별 반응형 동작 규칙, 미디어 쿼리 전략, 터치/마우스 인터랙션 차이점 등 개발자 핸드오프용 반응형 디자인 가이드 작성 12.0 NOT_STARTED 디자이너 100.0 1 TSK-004 FS 0, TSK-009 FS 0 2026-04-12 2026-04-12 반응형 디자인 가이드 문서, 브레이크포인트 정의서, 개발 핸드오프 스펙 문서, TSK-011 프론트엔드 기술 검토 및 컴포넌트 구조 설계 디자인 시안 기반 프론트엔드 컴포넌트 트리 구조 설계. 차트 라이브러리 선정, 그리드/레이아웃 라이브러리 검토, 상태 관리 전략 등 기술적 구현 방안 사전 검토 12.0 NOT_STARTED 개발자 100.0 1 TSK-009 FS 0, TSK-010 FS 0 2026-04-13 2026-04-13 프론트엔드 컴포넌트 구조도, 기술 스택 검토 보고서, TSK-012 디자인 리뷰 및 사용성 검증 프로토타입 기반 내부 디자인 리뷰 수행. PM/개발자/QA 참여하여 사용성, 구현 가능성, 접근성 검토. 피드백 수렴 및 수정사항 반영 10.0 NOT_STARTED QA 100.0 1 TSK-009 FS 0, TSK-010 FS 0 2026-04-14 2026-04-14 디자인 리뷰 회의록, 수정 요청 목록, 최종 승인된 디자인 시안, TSK-013 최종 산출물 정리 및 핸드오프 디자인 리뷰 피드백 반영 후 최종 디자인 산출물 정리. 개발팀 핸드오프를 위한 디자인 토큰, 에셋 추출, 컴포넌트 스펙 문서 최종 정리 8.0 NOT_STARTED 디자이너 100.0 1 TSK-011 FS 0, TSK-012 FS 0 2026-04-15 2026-04-15 최종 디자인 파일(Figma), 디자인 토큰 정의서, 아이콘/이미지 에셋 패키지, 개발 핸드오프 완료 문서 2026-03-30 2026-04-15, WP-004 시세 표시 모듈 UI/UX 설계 국내주식 시세, 금/은 시세, 암호화폐 시세, 국내/해외 시장지수 표시를 위한 개별 컴포넌트 UI 설계, 실시간 데이터 갱신 UX 패턴 정의, 종목 교체 인터페이스 설계 TSK-001 시세 표시 모듈 요구사항 분석 및 정의 국내주식, 금/은, 암호화폐, 국내/해외 시장지수 각 시세 유형별 표시 요구사항 수집 및 정의. 표시 항목(현재가, 등락률, 거래량 등), 갱신 주기, 데이터 소스 등 UI 설계에 필요한 기능 요구사항 명세 작성 16.0 NOT_STARTED PM 100.0 1 TSK-013 FS 0 2026-04-16 2026-04-17 시세 표시 요구사항 명세서, 시세 유형별 표시 항목 정의서, 데이터 갱신 주기 정의서, TSK-002 경쟁사 및 레퍼런스 UI/UX 벤치마킹 주요 증권사 앱, 암호화폐 거래소, 금융 포털 등의 시세 표시 UI/UX 패턴 조사. 실시간 갱신 애니메이션, 색상 코드, 레이아웃 패턴 등 벤치마킹 분석 12.0 NOT_STARTED 디자이너 100.0 1 TSK-001 FS 0 2026-04-18 2026-04-18 벤치마킹 분석 보고서, UI 패턴 레퍼런스 시트, TSK-003 시세 데이터 구조 및 갱신 방식 기술 검토 각 시세 유형별 API 데이터 구조 분석, WebSocket/Polling 등 실시간 갱신 기술 방식 검토. UI 설계에 반영할 기술적 제약사항 및 가능 범위 도출 12.0 NOT_STARTED 개발자 100.0 1 TSK-001 FS 0 2026-04-19 2026-04-19 기술 검토 보고서, 시세 유형별 데이터 스키마 정의서, 갱신 방식 비교 분석서, TSK-004 국내주식 시세 컴포넌트 UI 설계 국내주식 개별 종목 시세 표시 컴포넌트 UI 설계. 현재가, 전일대비, 등락률, 거래량, 고가/저가 등 표시 레이아웃 설계. 상승/하락/보합 색상 코드 정의, 호가창 미니뷰 포함 여부 결정 16.0 NOT_STARTED 디자이너 100.0 1 TSK-001 FS 0, TSK-002 FS 0, TSK-003 FS 0 2026-04-20 2026-04-21 국내주식 시세 컴포넌트 와이어프레임, 시각 디자인 시안, TSK-005 금/은 시세 컴포넌트 UI 설계 금/은 귀금속 시세 표시 컴포넌트 UI 설계. 국제 금/은 시세(USD/oz), 국내 금/은 시세(원/g), 전일대비 등락 표시, 단위 전환(g, oz, kg) 인터페이스 포함 12.0 NOT_STARTED 디자이너 100.0 1 TSK-001 FS 0, TSK-002 FS 0, TSK-003 FS 0 2026-04-22 2026-04-22 금/은 시세 컴포넌트 와이어프레임, 시각 디자인 시안, TSK-006 암호화폐 시세 컴포넌트 UI 설계 암호화폐 시세 표시 컴포넌트 UI 설계. 코인별 현재가, 24시간 변동률, 거래대금, 미니 차트 표시. KRW/USD 마켓 전환, 김치프리미엄 표시 등 암호화폐 특화 UI 요소 설계 16.0 NOT_STARTED 디자이너 100.0 1 TSK-001 FS 0, TSK-002 FS 0, TSK-003 FS 0 2026-04-23 2026-04-24 암호화폐 시세 컴포넌트 와이어프레임, 시각 디자인 시안, TSK-007 국내/해외 시장지수 컴포넌트 UI 설계 KOSPI, KOSDAQ, S&P500, NASDAQ, 다우존스, 니케이 등 주요 시장지수 표시 컴포넌트 UI 설계. 지수값, 등락폭, 등락률, 일중 미니 차트, 장 상태(개장/마감/프리마켓) 표시 14.0 NOT_STARTED 디자이너 100.0 1 TSK-001 FS 0, TSK-002 FS 0, TSK-003 FS 0 2026-04-25 2026-04-25 시장지수 컴포넌트 와이어프레임, 시각 디자인 시안, TSK-008 실시간 데이터 갱신 UX 패턴 정의 시세 데이터 실시간 갱신 시 UX 패턴 설계. 가격 변동 시 깜빡임(blink) 애니메이션, 숫자 롤링 효과, 색상 전환 효과 정의. 데이터 로딩/에러/연결 끊김 상태 표시, 갱신 주기 인디케이터, 수동 새로고침 UX 포함 16.0 NOT_STARTED 디자이너 100.0 1 TSK-003 FS 0, TSK-004 FS 0 2026-04-26 2026-04-27 실시간 갱신 UX 가이드라인, 애니메이션 스펙 문서, 상태별 UI 시안, TSK-009 종목 교체 인터페이스 설계 사용자가 모니터링 종목을 추가/삭제/교체할 수 있는 인터페이스 설계. 종목 검색(자동완성), 드래그 앤 드롭 순서 변경, 관심 종목 그룹 관리, 종목 유형별 필터링 UI 포함 20.0 NOT_STARTED 디자이너 100.0 1 TSK-004 FS 0, TSK-005 FS 0, TSK-006 FS 0, TSK-007 FS 0 2026-04-28 2026-04-29 종목 교체 인터페이스 와이어프레임, 종목 검색 UI 시안, 인터랙션 플로우 다이어그램, TSK-010 반응형 레이아웃 및 컴포넌트 배치 설계 다양한 화면 크기(데스크톱, 태블릿, 모바일)에 대한 시세 컴포넌트 반응형 레이아웃 설계. 그리드/리스트 뷰 전환, 컴포넌트 축소/확대 동작, 대시보드 배치 커스터마이징 기능 UI 설계 16.0 NOT_STARTED 디자이너 100.0 1 TSK-004 FS 0, TSK-005 FS 0, TSK-006 FS 0, TSK-007 FS 0 2026-04-30 2026-05-01 반응형 레이아웃 가이드, 브레이크포인트별 UI 시안, 컴포넌트 배치 규칙 문서, TSK-011 디자인 시스템 컴포넌트 정의 및 스타일 가이드 작성 시세 표시 모듈 전체에 적용될 디자인 시스템 정의. 색상 팔레트(상승/하락/보합), 타이포그래피(숫자 전용 폰트, 크기 체계), 간격/여백 규칙, 공통 아이콘 세트, 다크/라이트 모드 대응 정의 14.0 NOT_STARTED 디자이너 100.0 1 TSK-004 FS 0, TSK-005 FS 0, TSK-006 FS 0, TSK-007 FS 0, TSK-008 FS 0 2026-05-02 2026-05-02 시세 모듈 디자인 시스템 문서, 컴포넌트 라이브러리 스펙, 스타일 가이드, TSK-012 인터랙티브 프로토타입 제작 설계된 UI/UX를 기반으로 Figma 등 도구를 활용한 인터랙티브 프로토타입 제작. 실시간 갱신 애니메이션, 종목 교체 플로우, 화면 전환 등 주요 인터랙션 시뮬레이션 포함 24.0 NOT_STARTED 디자이너 100.0 1 TSK-008 FS 0, TSK-009 FS 0, TSK-010 FS 0, TSK-011 FS 0 2026-05-03 2026-05-05 인터랙티브 프로토타입, 프로토타입 사용 가이드, TSK-013 UI/UX 사용성 검토 및 QA 제작된 프로토타입 기반 사용성 검토. 정보 가독성, 색상 접근성(WCAG), 인터랙션 일관성, 엣지 케이스(데이터 없음, 극단적 숫자값, 장시간 미갱신 등) 검증 12.0 NOT_STARTED QA 100.0 1 TSK-012 FS 0 2026-05-06 2026-05-06 사용성 검토 보고서, 접근성 검증 결과서, 개선 사항 목록, TSK-014 개발팀 핸드오프 문서 작성 프론트엔드 개발팀에 전달할 최종 디자인 핸드오프 문서 작성. 컴포넌트별 상세 스펙(크기, 색상, 폰트, 간격), 상태별 UI 변화, 애니메이션 타이밍/이징 값, 에셋 목록 정리 12.0 NOT_STARTED 디자이너 100.0 1 TSK-012 FS 0, TSK-013 FS 0 2026-05-07 2026-05-07 개발 핸드오프 문서, 디자인 에셋 패키지, 컴포넌트 스펙 시트, TSK-015 최종 검토 및 이해관계자 승인 PM 주관 최종 디자인 리뷰 미팅 진행. 요구사항 충족 여부 확인, 기술적 구현 가능성 최종 검토, 이해관계자 피드백 반영 및 최종 승인 획득 8.0 NOT_STARTED PM 100.0 1 TSK-014 FS 0 2026-05-08 2026-05-08 최종 승인 문서, 리뷰 회의록, 확정 디자인 산출물 패키지 2026-04-16 2026-05-08, WP-005 차트 및 데이터 시각화 설계 주식 차트 라이브러리 선정 및 평가, 차트 유형별(캔들차트, 라인차트 등) 표현 방식 정의, 차트 인터랙션 설계, 데이터 시각화 컴포넌트 설계 명세 작성 TSK-001 주식 차트 라이브러리 후보 조사 및 비교 분석 TradingView Lightweight Charts, Apache ECharts, Highcharts Stock, D3.js 등 주요 주식 차트 라이브러리를 조사하고 라이선스, 성능, 기능, 커뮤니티 지원, 번들 사이즈, 모바일 대응 등 기준으로 비교 분석표를 작성한다. 16.0 NOT_STARTED 개발자 100.0 1 TSK-015 FS 0 2026-05-09 2026-05-10 차트 라이브러리 비교 분석표, 기술 조사 보고서, TSK-002 차트 라이브러리 PoC 개발 및 성능 검증 상위 2~3개 후보 라이브러리로 캔들차트 프로토타입을 구현하여 대량 데이터(1만 건 이상) 렌더링 성능, 실시간 데이터 업데이트 처리, 메모리 사용량 등을 실측 검증한다. 24.0 NOT_STARTED 개발자 100.0 1 TSK-001 FS 0 2026-05-11 2026-05-13 PoC 소스 코드, 성능 벤치마크 결과 보고서, TSK-003 차트 라이브러리 최종 선정 및 의사결정 문서 작성 PoC 결과와 비교 분석 자료를 기반으로 이해관계자 리뷰를 진행하고, 최종 차트 라이브러리를 선정한다. 선정 사유와 리스크 요인을 포함한 의사결정 문서를 작성한다. 8.0 NOT_STARTED PM 100.0 1 TSK-002 FS 0 2026-05-14 2026-05-14 라이브러리 선정 의사결정 문서, 이해관계자 리뷰 회의록, TSK-004 차트 유형 분류 및 요구사항 정의 서비스에서 필요한 차트 유형(캔들차트, 라인차트, 영역차트, 바차트, 히스토그램 등)을 분류하고, 각 차트 유형별 데이터 포맷, 표시 항목, 사용 맥락, 우선순위를 정의한다. 12.0 NOT_STARTED PM 100.0 1 TSK-003 FS 0 2026-05-15 2026-05-15 차트 유형 분류표, 차트 유형별 요구사항 명세서, TSK-005 캔들차트 표현 방식 및 스타일 설계 캔들차트의 시각적 표현 규칙을 정의한다. 양봉/음봉 색상, 윅(wick) 스타일, 타임프레임별(1분/5분/일/주/월) 표현 차이, 보조지표(이동평균선, 볼린저밴드 등) 오버레이 방식을 설계한다. 16.0 NOT_STARTED 디자이너 100.0 1 TSK-004 FS 0 2026-05-16 2026-05-17 캔들차트 디자인 가이드, 타임프레임별 캔들차트 시안, TSK-006 라인차트 및 영역차트 표현 방식 설계 라인차트와 영역차트의 시각적 표현 규칙을 정의한다. 선 두께, 그라데이션 영역, 다중 종목 비교 시 색상 팔레트, 데이터 포인트 표시 규칙, 결측 데이터 처리 방식 등을 설계한다. 12.0 NOT_STARTED 디자이너 100.0 1 TSK-004 FS 0 2026-05-18 2026-05-18 라인차트/영역차트 디자인 가이드, 비교차트 시안, TSK-007 보조지표 차트 표현 방식 설계 거래량 바차트, RSI, MACD, 스토캐스틱 등 보조지표의 하단 패널 표현 방식을 설계한다. 메인 차트와의 레이아웃 비율, 패널 추가/제거 UX, 지표 범례 표시 방식을 정의한다. 16.0 NOT_STARTED 디자이너 100.0 1 TSK-005 FS 0 2026-05-19 2026-05-20 보조지표 디자인 가이드, 보조지표 패널 레이아웃 시안, TSK-008 차트 줌/팬 인터랙션 설계 차트의 확대/축소(줌) 및 좌우 이동(팬) 인터랙션을 설계한다. 마우스 휠 줌, 핀치 줌(모바일), 드래그 팬, 줌 리셋, 범위 선택 줌 등의 동작 흐름과 애니메이션 사양을 정의한다. 12.0 NOT_STARTED 디자이너 100.0 1 TSK-005 FS 0, TSK-006 FS 0 2026-05-21 2026-05-21 줌/팬 인터랙션 플로우 다이어그램, 인터랙션 프로토타입, TSK-009 크로스헤어 및 툴팁 인터랙션 설계 마우스/터치 호버 시 크로스헤어 표시, 가격/시간 축 라벨, 데이터 포인트 툴팁(시가/고가/저가/종가/거래량)의 동작 및 시각 디자인을 설계한다. 다중 지표 표시 시 툴팁 그룹핑 방식도 정의한다. 12.0 NOT_STARTED 디자이너 100.0 1 TSK-005 FS 0 2026-05-22 2026-05-22 크로스헤어/툴팁 디자인 명세, 인터랙션 프로토타입, TSK-010 타임프레임 전환 및 차트 유형 전환 인터랙션 설계 타임프레임 변경(1분/5분/15분/1시간/일/주/월) 및 차트 유형 전환(캔들→라인 등) 시의 UI 컨트롤 배치, 전환 애니메이션, 데이터 로딩 상태 처리를 설계한다. 8.0 NOT_STARTED 디자이너 100.0 1 TSK-008 FS 0 2026-05-23 2026-05-23 타임프레임/차트 전환 UI 시안, 전환 인터랙션 명세서, TSK-011 드로잉 도구 인터랙션 설계 추세선, 피보나치 되돌림, 수평선, 직사각형 등 차트 드로잉 도구의 인터랙션을 설계한다. 도구 선택 UI, 그리기/편집/삭제 동작, 스냅 기능, 저장/복원 흐름을 정의한다. 16.0 NOT_STARTED 디자이너 100.0 1 TSK-008 FS 0 2026-05-24 2026-05-25 드로잉 도구 인터랙션 명세서, 드로잉 도구 UI 시안, TSK-012 데이터 시각화 컴포넌트 아키텍처 설계 차트 시각화 컴포넌트의 전체 아키텍처를 설계한다. 컴포넌트 계층 구조(ChartContainer, ChartCanvas, Axis, Series, Overlay 등), 상태 관리 방식, 데이터 흐름, 이벤트 버스 구조를 정의한다. 16.0 NOT_STARTED 개발자 100.0 1 TSK-003 FS 0, TSK-004 FS 0 2026-05-26 2026-05-27 컴포넌트 아키텍처 다이어그램, 컴포넌트 상태 흐름도, TSK-013 차트 데이터 모델 및 인터페이스 설계 차트에서 사용할 데이터 모델(OHLCV, Tick, Indicator 등)과 컴포넌트 간 데이터 전달 인터페이스(Props, Context, Store)를 설계한다. 실시간 데이터 스트림 처리 인터페이스도 포함한다. 12.0 NOT_STARTED 개발자 100.0 1 TSK-012 FS 0 2026-05-28 2026-05-28 데이터 모델 명세서, 인터페이스 정의서(TypeScript 타입), TSK-014 반응형 및 모바일 차트 레이아웃 설계 데스크톱/태블릿/모바일 환경별 차트 레이아웃과 터치 인터랙션 차이를 설계한다. 브레이크포인트별 차트 영역 비율, 컨트롤 UI 배치 변화, 모바일 전용 제스처(스와이프, 롱프레스 등)를 정의한다. 12.0 NOT_STARTED 디자이너 100.0 1 TSK-008 FS 0, TSK-009 FS 0 2026-05-29 2026-05-29 반응형 레이아웃 가이드, 모바일 차트 인터랙션 명세, TSK-015 차트 테마 및 디자인 토큰 정의 차트 컴포넌트에 적용할 디자인 토큰(색상, 폰트, 간격, 선 스타일 등)을 정의한다. 라이트/다크 모드 대응, 접근성(색맹 대응 팔레트 포함)을 고려하여 토큰 체계를 수립한다. 8.0 NOT_STARTED 디자이너 100.0 1 TSK-005 FS 0, TSK-006 FS 0, TSK-007 FS 0 2026-05-30 2026-05-30 차트 디자인 토큰 명세서, 라이트/다크 테마 색상표, TSK-016 데이터 시각화 컴포넌트 설계 명세서 통합 작성 앞서 산출된 모든 설계 산출물(라이브러리 선정, 차트 유형별 디자인, 인터랙션, 컴포넌트 아키텍처, 데이터 모델, 반응형 설계, 테마)을 통합하여 최종 설계 명세서를 작성한다. 16.0 NOT_STARTED PM 100.0 1 TSK-010 FS 0, TSK-011 FS 0, TSK-012 FS 0, TSK-013 FS 0, TSK-014 FS 0, TSK-015 FS 0 2026-05-31 2026-06-01 데이터 시각화 컴포넌트 설계 명세서(통합본), TSK-017 설계 명세서 검증 및 QA 리뷰 통합 설계 명세서의 완전성, 일관성, 구현 가능성을 검증한다. 요구사항 추적 매트릭스를 작성하여 누락된 요구사항이 없는지 확인하고, 개발 관점의 기술적 리스크를 식별한다. 12.0 NOT_STARTED QA 100.0 1 TSK-016 FS 0 2026-06-02 2026-06-02 QA 리뷰 보고서, 요구사항 추적 매트릭스, 리스크 식별 문서 2026-05-09 2026-06-02, WP-006 외부 데이터 소스 조사 및 API 연동 설계 국내주식, 금/은, 암호화폐, 국내/해외 시장지수, 뉴스 데이터를 제공하는 외부 API 조사 및 선정, API 인터페이스 명세 작성, 데이터 모델 정의, 에러 처리 및 폴백 전략 수립 TSK-001 국내주식 데이터 API 조사 및 선정 국내주식 시세, 종목정보, 호가, 체결 데이터를 제공하는 외부 API 후보군 조사(한국투자증권 OpenAPI, KRX 정보데이터시스템, 네이버 금융, eBest OpenAPI 등). 각 API의 요금 체계, 호출 제한, 데이터 범위, 실시간 지원 여부, 안정성을 비교 분석하여 최종 API를 선정한다. 12.0 NOT_STARTED 백엔드 개발자 100.0 1 TSK-017 FS 0 2026-06-03 2026-06-03 API 후보군 비교표, 최종 선정 API 및 선정 사유 문서, TSK-002 금/은 귀금속 데이터 API 조사 및 선정 금, 은 등 귀금속 시세 데이터를 제공하는 외부 API 후보군 조사(GoldAPI, Metals API, 한국금거래소 등). 원화/달러 기준 시세, 실시간/지연 데이터 여부, 과거 데이터 조회 범위, 요금 체계를 비교 분석하여 최종 API를 선정한다. 8.0 NOT_STARTED 백엔드 개발자 100.0 1 TSK-001 FS 0 2026-06-04 2026-06-04 API 후보군 비교표, 최종 선정 API 및 선정 사유 문서, TSK-003 암호화폐 데이터 API 조사 및 선정 비트코인, 이더리움 등 주요 암호화폐 시세 데이터를 제공하는 외부 API 후보군 조사(업비트 OpenAPI, 빗썸 API, Binance API, CoinGecko 등). 지원 코인 범위, 웹소켓 실시간 지원, 호출 제한, 요금 체계, 원화마켓 지원 여부를 비교 분석하여 최종 API를 선정한다. 8.0 NOT_STARTED 백엔드 개발자 100.0 1 TSK-002 FS 0 2026-06-05 2026-06-05 API 후보군 비교표, 최종 선정 API 및 선정 사유 문서, TSK-004 국내/해외 시장지수 데이터 API 조사 및 선정 KOSPI, KOSDAQ, S&P500, NASDAQ, 다우존스, 니케이 등 국내외 주요 시장지수 데이터를 제공하는 외부 API 후보군 조사(Yahoo Finance API, Alpha Vantage, Twelve Data, KRX 등). 지수 커버리지, 업데이트 주기, 과거 데이터 범위, 요금 체계를 비교 분석하여 최종 API를 선정한다. 10.0 NOT_STARTED 백엔드 개발자 100.0 1 TSK-003 FS 0 2026-06-06 2026-06-06 API 후보군 비교표, 최종 선정 API 및 선정 사유 문서, TSK-005 뉴스 데이터 API 조사 및 선정 금융/경제 관련 뉴스 데이터를 제공하는 외부 API 후보군 조사(네이버 뉴스 검색 API, NewsAPI, 연합뉴스 API, Google News API 등). 한국어 지원, 카테고리 필터링, 검색 기능, 실시간성, 요금 체계, 저작권 이슈를 비교 분석하여 최종 API를 선정한다. 8.0 NOT_STARTED 백엔드 개발자 100.0 1 TSK-004 FS 0 2026-06-07 2026-06-07 API 후보군 비교표, 최종 선정 API 및 선정 사유 문서, TSK-006 API 선정 결과 종합 검토 및 승인 각 데이터 소스별 API 선정 결과를 종합하여 전체적인 비용, 기술적 일관성, 라이선스 제약사항을 검토한다. 이해관계자 리뷰를 통해 최종 승인을 받고, 필요 시 대안 API를 재조정한다. 8.0 NOT_STARTED PM 100.0 1 TSK-001 FS 0, TSK-002 FS 0, TSK-003 FS 0, TSK-004 FS 0, TSK-005 FS 0 2026-06-08 2026-06-08 외부 API 선정 종합 보고서, 이해관계자 승인 기록, TSK-007 공통 데이터 모델 정의 각 외부 API에서 수신하는 데이터를 내부 시스템에서 통일된 형태로 사용하기 위한 공통 데이터 모델을 정의한다. 주식 시세, 귀금속 시세, 암호화폐 시세, 시장지수, 뉴스 각각의 엔티티 구조, 필드 타입, 필수/선택 항목, 정규화 규칙을 명세한다. 16.0 NOT_STARTED 백엔드 개발자 100.0 1 TSK-006 FS 0 2026-06-09 2026-06-10 데이터 모델 정의서(ERD 포함), 필드 매핑 테이블, TSK-008 국내주식 API 인터페이스 명세 작성 선정된 국내주식 API에 대해 호출 엔드포인트, 요청/응답 파라미터, 인증 방식, 호출 제한, 응답 데이터와 내부 데이터 모델 간 매핑 규칙을 상세히 명세한다. 12.0 NOT_STARTED 백엔드 개발자 100.0 1 TSK-007 FS 0 2026-06-11 2026-06-11 국내주식 API 인터페이스 명세서, TSK-009 금/은 귀금속 API 인터페이스 명세 작성 선정된 금/은 귀금속 API에 대해 호출 엔드포인트, 요청/응답 파라미터, 인증 방식, 호출 제한, 응답 데이터와 내부 데이터 모델 간 매핑 규칙을 상세히 명세한다. 8.0 NOT_STARTED 백엔드 개발자 100.0 1 TSK-007 FS 0 2026-06-12 2026-06-12 금/은 API 인터페이스 명세서, TSK-010 암호화폐 API 인터페이스 명세 작성 선정된 암호화폐 API에 대해 REST 및 WebSocket 엔드포인트, 요청/응답 파라미터, 인증 방식, 호출 제한, 응답 데이터와 내부 데이터 모델 간 매핑 규칙을 상세히 명세한다. 12.0 NOT_STARTED 백엔드 개발자 100.0 1 TSK-007 FS 0 2026-06-13 2026-06-13 암호화폐 API 인터페이스 명세서, TSK-011 시장지수 API 인터페이스 명세 작성 선정된 국내/해외 시장지수 API에 대해 호출 엔드포인트, 요청/응답 파라미터, 인증 방식, 호출 제한, 응답 데이터와 내부 데이터 모델 간 매핑 규칙을 상세히 명세한다. 10.0 NOT_STARTED 백엔드 개발자 100.0 1 TSK-007 FS 0 2026-06-14 2026-06-14 시장지수 API 인터페이스 명세서, TSK-012 뉴스 API 인터페이스 명세 작성 선정된 뉴스 API에 대해 호출 엔드포인트, 요청/응답 파라미터, 인증 방식, 호출 제한, 응답 데이터와 내부 데이터 모델 간 매핑 규칙을 상세히 명세한다. 8.0 NOT_STARTED 백엔드 개발자 100.0 1 TSK-007 FS 0 2026-06-15 2026-06-15 뉴스 API 인터페이스 명세서, TSK-013 API 연동 아키텍처 설계 외부 API 연동을 위한 전체 아키텍처를 설계한다. API Gateway 패턴, 어댑터 패턴 적용 여부, 캐싱 전략(Redis 등), 데이터 갱신 주기(폴링/웹소켓/SSE), Rate Limiting 처리, 비동기 처리 구조를 포함한 시스템 아키텍처 다이어그램을 작성한다. 16.0 NOT_STARTED 백엔드 개발자 100.0 1 TSK-007 FS 0 2026-06-16 2026-06-17 API 연동 아키텍처 설계서, 시스템 아키텍처 다이어그램, TSK-014 에러 처리 및 폴백 전략 수립 외부 API 장애, 타임아웃, Rate Limit 초과, 데이터 이상 등 각종 에러 시나리오별 처리 전략을 수립한다. 서킷 브레이커 패턴, 재시도 정책(지수 백오프), 폴백 데이터 소스 전환 규칙, 캐시 데이터 활용 전략, 에러 로깅 및 알림 기준을 정의한다. 12.0 NOT_STARTED 백엔드 개발자 100.0 1 TSK-013 FS 0 2026-06-18 2026-06-18 에러 처리 정책 문서, 폴백 전략 매트릭스, TSK-015 API 연동 모니터링 및 헬스체크 설계 각 외부 API의 가용성, 응답 시간, 에러율을 모니터링하기 위한 헬스체크 메커니즘을 설계한다. 대시보드 지표 정의, 알림 임계값 설정, API 상태 리포팅 주기를 명세한다. 8.0 NOT_STARTED 백엔드 개발자 100.0 1 TSK-013 FS 0 2026-06-19 2026-06-19 모니터링 설계서, 헬스체크 명세서, TSK-016 API 인터페이스 명세 및 설계 리뷰 작성된 전체 API 인터페이스 명세서, 데이터 모델, 아키텍처 설계, 에러 처리 전략에 대해 기술 리뷰를 수행한다. 개발팀, QA, PM이 참여하여 누락 사항, 일관성, 실현 가능성을 검증하고 피드백을 반영한다. 8.0 NOT_STARTED PM 100.0 1 TSK-008 FS 0, TSK-009 FS 0, TSK-010 FS 0, TSK-011 FS 0, TSK-012 FS 0, TSK-014 FS 0, TSK-015 FS 0 2026-06-20 2026-06-20 리뷰 회의록, 수정 반영 최종 문서 세트 2026-06-03 2026-06-20 | 2026-02-02 | 2026-06-20 | 설계 완료 | 요구사항 정의서, 시스템 아키텍처 설계서, UI/UX 와이어프레임, API 명세서, 기술 스택 정의서, 데이터 소스 연동 계획서 |
| PH-002 | MVP - 핵심 대시보드 구축 | 대시보드 레이아웃 구현, 주식 차트 표시, 국내주식 시세 표시, 종목 정보 표시 등 핵심 기능 개발 | 2 | WP-001 대시보드 레이아웃 및 기본 구조 개발 주식 웹 포털의 메인 대시보드 레이아웃 설계 및 구현, 반응형 그리드 시스템 구축, 위젯 배치 영역 정의, 종목 교체가 가능한 컴포넌트 구조 설계 TSK-001 대시보드 UI/UX 와이어프레임 설계 주식 웹 포털 메인 대시보드의 전체 레이아웃 와이어프레임 설계. 위젯 배치 영역, 네비게이션, 헤더/푸터 구조 정의. 데스크톱/태블릿/모바일 각 브레이크포인트별 레이아웃 초안 작성 16.0 NOT_STARTED 디자이너 100.0 1 TSK-016 FS 0 2026-06-21 2026-06-22 와이어프레임 문서(Figma/Sketch), 레이아웃 브레이크포인트 정의서, 위젯 배치 영역 맵, TSK-002 대시보드 디자인 시스템 및 스타일 가이드 정의 대시보드에 사용될 컬러 팔레트, 타이포그래피, 간격(spacing), 그림자, 카드 스타일 등 디자인 토큰 정의. 주식 포털 특성에 맞는 데이터 시각화 색상 체계 포함 12.0 NOT_STARTED 디자이너 100.0 1 TSK-001 FS 0 2026-06-23 2026-06-23 디자인 토큰 정의서, 스타일 가이드 문서, 컴포넌트 디자인 스펙, TSK-003 프론트엔드 프로젝트 초기 설정 및 기술 스택 구성 React/Next.js 등 프레임워크 기반 프로젝트 초기 세팅. ESLint, Prettier, TypeScript 설정. CSS-in-JS 또는 Tailwind 등 스타일링 도구 설정. 폴더 구조 및 코드 컨벤션 정의 8.0 NOT_STARTED 개발자 100.0 1 TSK-002 FS 0 2026-06-24 2026-06-24 프로젝트 보일러플레이트, 기술 스택 결정 문서, 폴더 구조 가이드, TSK-004 반응형 그리드 시스템 구축 대시보드의 핵심 반응형 그리드 레이아웃 시스템 구현. CSS Grid 또는 Flexbox 기반 다단 그리드 구성. 데스크톱(3~4열), 태블릿(2열), 모바일(1열) 브레이크포인트 대응. 그리드 간격, 최소/최대 너비 제약 조건 설정 16.0 NOT_STARTED 개발자 100.0 1 TSK-001 FS 0, TSK-003 FS 0 2026-06-25 2026-06-26 그리드 레이아웃 컴포넌트, 브레이크포인트 유틸리티, 반응형 동작 데모, TSK-005 대시보드 셸 레이아웃 컴포넌트 개발 대시보드 전체 프레임을 구성하는 셸 컴포넌트 구현. 상단 헤더(종목 검색바, 사용자 메뉴), 사이드바(네비게이션), 메인 콘텐츠 영역, 푸터 등 영역별 레이아웃 컴포넌트 개발 16.0 NOT_STARTED 개발자 100.0 1 TSK-002 FS 0, TSK-004 FS 0 2026-06-27 2026-06-28 Header 컴포넌트, Sidebar 컴포넌트, MainContent 컴포넌트, DashboardShell 컴포넌트, TSK-006 위젯 컨테이너 컴포넌트 설계 및 구현 대시보드 내 개별 위젯을 담는 공통 컨테이너 컴포넌트 개발. 위젯 헤더(제목, 종목명 표시, 설정 버튼), 본문 영역, 로딩/에러 상태 처리 포함. 위젯 크기(1x1, 2x1, 2x2 등) 변형 지원 16.0 NOT_STARTED 개발자 100.0 1 TSK-004 FS 0 2026-06-29 2026-06-30 WidgetContainer 컴포넌트, 위젯 크기 변형 타입 정의, 로딩/에러 상태 UI, TSK-007 종목 교체 가능한 컴포넌트 아키텍처 설계 위젯 내 종목(ticker)을 동적으로 교체할 수 있는 컴포넌트 아키텍처 설계. Context 또는 상태 관리를 통한 종목 코드 주입 패턴 정의. 종목 변경 시 하위 컴포넌트 데이터 갱신 흐름 설계. 종목 선택기(Ticker Selector) 컴포넌트 인터페이스 정의 12.0 NOT_STARTED 개발자 100.0 1 TSK-006 FS 0 2026-07-01 2026-07-01 컴포넌트 아키텍처 문서, 종목 Context/Provider 설계서, 데이터 흐름 다이어그램, TSK-008 종목 선택기(Ticker Selector) 컴포넌트 구현 위젯 내에서 종목을 검색하고 교체할 수 있는 종목 선택기 컴포넌트 구현. 자동완성 검색, 최근 조회 종목 표시, 종목 코드/이름 표시 기능 포함. 위젯 컨테이너 헤더에 통합 16.0 NOT_STARTED 개발자 100.0 1 TSK-007 FS 0 2026-07-02 2026-07-03 TickerSelector 컴포넌트, 종목 검색 자동완성 UI, 최근 조회 종목 관리 로직, TSK-009 종목 Context Provider 및 상태 관리 구현 위젯별 독립적인 종목 상태를 관리하는 Context Provider 구현. 종목 변경 이벤트 전파, 위젯 간 종목 연동/독립 모드 지원. 글로벌 종목과 위젯별 개별 종목 상태 분리 관리 12.0 NOT_STARTED 개발자 100.0 1 TSK-007 FS 0 2026-07-04 2026-07-04 TickerContext Provider, 종목 상태 관리 훅(useTickerContext), 글로벌/로컬 종목 상태 전환 로직, TSK-010 위젯 배치 영역 정의 및 레이아웃 구성 시스템 구현 대시보드 내 위젯 배치 영역(슬롯)을 정의하고 구성하는 시스템 구현. 위젯 배치 설정을 JSON 또는 상태로 관리. 기본 대시보드 레이아웃 프리셋(차트 중심, 호가 중심 등) 정의 16.0 NOT_STARTED 개발자 100.0 1 TSK-005 FS 0, TSK-006 FS 0 2026-07-05 2026-07-06 레이아웃 구성 스키마(JSON), DashboardLayoutManager 컴포넌트, 기본 레이아웃 프리셋 2~3종, TSK-011 대시보드 레이아웃 반응형 테스트 및 QA 구현된 대시보드 레이아웃의 반응형 동작 검증. 주요 브레이크포인트별(데스크톱 1920/1440/1280, 태블릿 1024/768, 모바일 430/375) 레이아웃 정상 렌더링 확인. 크로스 브라우저(Chrome, Safari, Firefox, Edge) 호환성 테스트 12.0 NOT_STARTED QA 100.0 1 TSK-005 FS 0, TSK-010 FS 0 2026-07-07 2026-07-07 반응형 테스트 결과 보고서, 크로스 브라우저 호환성 보고서, 버그 리포트, TSK-012 종목 교체 기능 통합 테스트 및 QA 종목 선택기를 통한 종목 교체 기능의 통합 테스트. 위젯별 독립 종목 교체, 글로벌 종목 변경 시 연동 동작, 종목 교체 시 UI 상태 전환(로딩/갱신) 검증. 엣지 케이스(잘못된 종목코드, 빈 값, 빠른 연속 교체 등) 테스트 8.0 NOT_STARTED QA 100.0 1 TSK-008 FS 0, TSK-009 FS 0 2026-07-08 2026-07-08 통합 테스트 결과 보고서, 엣지 케이스 테스트 결과, 버그 리포트, TSK-013 작업 패키지 일정 관리 및 리뷰 조율 대시보드 레이아웃 개발 작업 패키지의 진행 상황 추적, 디자이너-개발자-QA 간 핸드오프 조율, 코드 리뷰 일정 관리, 이슈 트래킹 및 리스크 관리 12.0 NOT_STARTED PM 100.0 1 TSK-012 FS 0 2026-07-09 2026-07-09 주간 진행 보고서, 이슈 트래킹 로그, 핸드오프 체크리스트 2026-06-21 2026-07-09, WP-002 주식 차트 및 종목 정보 모듈 개발 주식 차트 표시 기능 구현(캔들차트, 라인차트 등), 종목 상세 정보 표시 패널 개발, 차트 인터랙션(기간 선택, 확대/축소) 기능 구현 TSK-001 주식 차트 모듈 요구사항 분석 및 기술 설계 주식 차트 및 종목 정보 모듈의 상세 요구사항을 분석하고, 사용할 차트 라이브러리 선정(예: D3.js, Lightweight Charts, ECharts 등), 컴포넌트 아키텍처 설계, 데이터 흐름 정의 등 기술 설계 문서를 작성한다. 16.0 NOT_STARTED PM 100.0 1 TSK-013 FS 0 2026-07-10 2026-07-11 요구사항 정의서, 기술 설계 문서, 차트 라이브러리 비교 분석서, 컴포넌트 아키텍처 다이어그램, TSK-002 차트 UI/UX 디자인 캔들차트, 라인차트, 종목 상세 정보 패널, 기간 선택기, 확대/축소 컨트롤 등 전체 차트 모듈의 UI/UX를 디자인한다. 반응형 레이아웃, 다크/라이트 테마, 인터랙션 상태(호버, 클릭, 드래그) 등을 포함한다. 24.0 NOT_STARTED 디자이너 100.0 1 TSK-001 FS 0 2026-07-12 2026-07-14 UI 디자인 시안(Figma), 인터랙션 명세서, 디자인 토큰 정의서, TSK-003 주식 시세 데이터 API 설계 및 개발 차트 렌더링에 필요한 주식 시세 데이터(OHLCV)를 제공하는 백엔드 API를 설계하고 구현한다. 일봉/주봉/월봉 등 기간별 데이터 조회, 페이징, 캐싱 전략을 포함한다. 24.0 NOT_STARTED 백엔드 개발자 100.0 1 TSK-001 FS 0 2026-07-15 2026-07-17 API 엔드포인트 코드, API 명세서(Swagger/OpenAPI), DB 쿼리 및 인덱스 설계서, TSK-004 종목 상세 정보 API 설계 및 개발 종목명, 현재가, 전일 대비, 거래량, 시가총액, PER, PBR 등 종목 상세 정보를 제공하는 백엔드 API를 설계하고 구현한다. 실시간 시세 연동 방식(WebSocket 또는 Polling)을 정의한다. 20.0 NOT_STARTED 백엔드 개발자 100.0 1 TSK-001 FS 0 2026-07-18 2026-07-19 API 엔드포인트 코드, API 명세서, 실시간 데이터 연동 설계서, TSK-005 차트 기본 컴포넌트 개발 (캔들차트) 선정된 차트 라이브러리를 기반으로 캔들차트(봉차트) 컴포넌트를 구현한다. 시가/고가/저가/종가 데이터 매핑, 양봉/음봉 색상 구분, X축(날짜)/Y축(가격) 스케일링, 거래량 하단 바 차트를 포함한다. 24.0 NOT_STARTED 프론트엔드 개발자 100.0 1 TSK-002 FS 0, TSK-003 FS 0 2026-07-20 2026-07-22 캔들차트 컴포넌트 코드, 컴포넌트 스토리북, TSK-006 라인차트 컴포넌트 개발 종가 기반 라인차트 컴포넌트를 구현한다. 단일 종목 라인차트, 다중 종목 비교 라인차트, 영역 채우기(Area Chart) 옵션, 이동평균선(5일, 20일, 60일, 120일) 오버레이 기능을 포함한다. 16.0 NOT_STARTED 프론트엔드 개발자 100.0 1 TSK-005 FS 0 2026-07-23 2026-07-24 라인차트 컴포넌트 코드, 컴포넌트 스토리북, TSK-007 차트 인터랙션 기능 개발 (기간 선택) 차트의 기간 선택 기능을 구현한다. 프리셋 버튼(1일, 1주, 1개월, 3개월, 6개월, 1년, 전체), 캘린더 기반 사용자 지정 기간 선택, 기간 변경 시 데이터 리로딩 및 차트 재렌더링 로직을 포함한다. 16.0 NOT_STARTED 프론트엔드 개발자 100.0 1 TSK-005 FS 0 2026-07-25 2026-07-26 기간 선택 컴포넌트 코드, 기간별 데이터 페칭 로직, TSK-008 차트 인터랙션 기능 개발 (확대/축소, 드래그) 차트의 확대/축소(Zoom In/Out) 및 패닝(드래그 이동) 기능을 구현한다. 마우스 휠/핀치 줌, 드래그를 통한 차트 이동, 더블클릭 리셋, 터치 디바이스 제스처 지원을 포함한다. 20.0 NOT_STARTED 프론트엔드 개발자 100.0 1 TSK-005 FS 0 2026-07-27 2026-07-28 줌/패닝 인터랙션 코드, 터치 제스처 핸들러, TSK-009 차트 툴팁 및 크로스헤어 기능 개발 차트 위 마우스 호버 시 크로스헤어(십자선)와 해당 지점의 OHLCV 데이터를 표시하는 툴팁 기능을 구현한다. 가격축/시간축 라벨 동기화, 모바일 터치 대응을 포함한다. 12.0 NOT_STARTED 프론트엔드 개발자 100.0 1 TSK-005 FS 0 2026-07-29 2026-07-29 크로스헤어 컴포넌트 코드, 툴팁 컴포넌트 코드, TSK-010 종목 상세 정보 패널 개발 종목의 상세 정보를 표시하는 패널 컴포넌트를 구현한다. 종목명/코드, 현재가(실시간 업데이트), 전일 대비 등락률, 거래량/거래대금, 시가총액, 52주 최고/최저, PER/PBR/EPS 등 재무지표 표시를 포함한다. 20.0 NOT_STARTED 프론트엔드 개발자 100.0 1 TSK-002 FS 0, TSK-004 FS 0 2026-07-30 2026-07-31 종목 상세 정보 패널 컴포넌트 코드, 실시간 데이터 바인딩 로직, TSK-011 차트 타입 전환 및 설정 기능 개발 캔들차트/라인차트 간 타입 전환 기능과 차트 설정 패널을 구현한다. 차트 타입 토글, 이동평균선 on/off, 거래량 표시 on/off, 차트 색상 테마 설정을 포함한다. 12.0 NOT_STARTED 프론트엔드 개발자 100.0 1 TSK-005 FS 0, TSK-006 FS 0 2026-08-01 2026-08-01 차트 설정 패널 컴포넌트 코드, 상태 관리 로직, TSK-012 차트 모듈 통합 및 상태 관리 개별 개발된 차트 컴포넌트, 인터랙션 기능, 종목 정보 패널을 하나의 통합 모듈로 조립한다. 전역 상태 관리(선택 종목, 기간, 차트 타입 등), 컴포넌트 간 이벤트 통신, 에러/로딩 상태 처리를 구현한다. 16.0 NOT_STARTED 프론트엔드 개발자 100.0 1 TSK-006 FS 0, TSK-007 FS 0, TSK-008 FS 0, TSK-009 FS 0, TSK-010 FS 0, TSK-011 FS 0 2026-08-02 2026-08-03 통합 차트 모듈 코드, 상태 관리 스토어 코드, TSK-013 차트 성능 최적화 대량 데이터(수천 개 이상의 봉 데이터) 렌더링 시 성능을 최적화한다. 데이터 다운샘플링, 가상화(뷰포트 외 데이터 미렌더링), 메모이제이션, requestAnimationFrame 기반 렌더링 최적화를 수행한다. 16.0 NOT_STARTED 프론트엔드 개발자 100.0 1 TSK-012 FS 0 2026-08-04 2026-08-05 성능 최적화 적용 코드, 성능 벤치마크 리포트, TSK-014 단위 테스트 및 통합 테스트 작성 차트 모듈의 단위 테스트와 통합 테스트를 작성한다. 데이터 변환 로직 단위 테스트, 컴포넌트 렌더링 테스트, 인터랙션 시나리오 통합 테스트, API 연동 테스트를 포함한다. 20.0 NOT_STARTED QA 100.0 1 TSK-012 FS 0 2026-08-06 2026-08-07 테스트 코드, 테스트 커버리지 리포트, TSK-015 크로스 브라우저 및 반응형 테스트 주요 브라우저(Chrome, Safari, Firefox, Edge)와 다양한 디바이스 해상도에서 차트 모듈의 정상 동작을 검증한다. 터치 디바이스 인터랙션, 브라우저별 렌더링 차이, 반응형 레이아웃 깨짐 여부를 점검한다. 16.0 NOT_STARTED QA 100.0 1 TSK-013 FS 0 2026-08-08 2026-08-09 크로스 브라우저 테스트 리포트, 버그 리포트, TSK-016 최종 QA 및 버그 수정 전체 차트 모듈에 대한 최종 QA를 수행하고, 발견된 버그를 수정한다. 엣지 케이스(데이터 없음, 네트워크 오류, 극단값 등) 테스트, UX 검수, 성능 이슈 최종 확인을 포함한다. 24.0 NOT_STARTED QA 100.0 1 TSK-014 FS 0, TSK-015 FS 0 2026-08-10 2026-08-12 최종 QA 리포트, 버그 수정 완료 코드, 릴리스 체크리스트 2026-07-10 2026-08-12, WP-003 국내주식 시세 및 시장지수 모듈 개발 국내주식 실시간/지연 시세 표시 기능 구현, 국내 시장지수(KOSPI, KOSDAQ 등) 표시 위젯 개발, 시세 데이터 API 연동 및 자동 갱신 처리 TSK-001 시세 데이터 요구사항 분석 및 API 조사 국내주식 시세 및 시장지수 표시에 필요한 데이터 항목 정의, 외부 시세 데이터 제공 API(한국거래소, 증권사 API 등) 조사 및 비교 분석, 실시간/지연 시세 정책 확인 16.0 NOT_STARTED PM 100.0 1 TSK-016 FS 0 2026-08-13 2026-08-14 요구사항 정의서, API 비교 분석서, 데이터 항목 정의서, TSK-002 시세 모듈 아키텍처 설계 시세 데이터 수집, 캐싱, 배포 구조 설계. WebSocket/Polling 방식 결정, 데이터 갱신 주기 정책 수립, 시스템 구성도 및 시퀀스 다이어그램 작성 16.0 NOT_STARTED 백엔드 개발자 100.0 1 TSK-001 FS 0 2026-08-15 2026-08-16 시스템 아키텍처 문서, 시퀀스 다이어그램, 기술 스택 결정서, TSK-003 시세 데이터 DB 스키마 설계 종목 마스터, 실시간 시세, 일별 시세, 시장지수 등 시세 관련 테이블 설계. 인덱스 전략 및 파티셔닝 정책 수립 12.0 NOT_STARTED 백엔드 개발자 100.0 1 TSK-002 FS 0 2026-08-17 2026-08-17 ERD, DDL 스크립트, 인덱스 설계서, TSK-004 외부 시세 API 연동 모듈 개발 선정된 외부 시세 데이터 API와의 연동 모듈 구현. API 인증, 요청/응답 처리, 에러 핸들링, 재시도 로직 포함 24.0 NOT_STARTED 백엔드 개발자 100.0 1 TSK-002 FS 0 2026-08-18 2026-08-20 API 연동 모듈 코드, 연동 테스트 결과서, TSK-005 시세 데이터 수집 및 캐싱 서비스 개발 외부 API로부터 수집한 시세 데이터를 캐시(Redis 등)에 저장하고 관리하는 서비스 개발. 데이터 정규화, 캐시 갱신 정책, TTL 관리 구현 24.0 NOT_STARTED 백엔드 개발자 100.0 1 TSK-003 FS 0, TSK-004 FS 0 2026-08-21 2026-08-23 캐싱 서비스 코드, 캐시 정책 문서, TSK-006 실시간 시세 자동 갱신 처리 개발 WebSocket 또는 SSE 기반 실시간 시세 데이터 푸시 서비스 구현. 클라이언트 구독/해제 관리, 갱신 주기 제어, 연결 상태 관리 포함 32.0 NOT_STARTED 백엔드 개발자 100.0 1 TSK-005 FS 0 2026-08-24 2026-08-27 실시간 갱신 서비스 코드, WebSocket API 명세서, TSK-007 국내주식 시세 조회 REST API 개발 종목별 현재가, 호가, 체결 내역, 일별 시세 등 조회 REST API 엔드포인트 구현. 페이징, 필터링, 정렬 기능 포함 24.0 NOT_STARTED 백엔드 개발자 100.0 1 TSK-005 FS 0 2026-08-28 2026-08-30 REST API 코드, API 명세서(Swagger), TSK-008 시장지수 조회 API 개발 KOSPI, KOSDAQ, KPI200 등 주요 시장지수 현재값, 등락률, 차트 데이터 조회 API 구현 16.0 NOT_STARTED 백엔드 개발자 100.0 1 TSK-005 FS 0 2026-08-31 2026-09-01 시장지수 API 코드, API 명세서, TSK-009 시세 화면 UI/UX 디자인 국내주식 시세 표시 화면 디자인. 종목 시세 카드, 호가창, 체결 내역, 차트 영역 등 UI 컴포넌트 디자인. 실시간 변동 시 시각적 피드백(색상 변화, 애니메이션) 정의 24.0 NOT_STARTED 디자이너 100.0 1 TSK-001 FS 0 2026-09-02 2026-09-04 시세 화면 디자인 시안, UI 컴포넌트 스타일 가이드, 인터랙션 정의서, TSK-010 시장지수 위젯 UI/UX 디자인 시장지수 표시 위젯 디자인. KOSPI/KOSDAQ 지수, 등락률, 미니 차트 등을 포함한 위젯 레이아웃 디자인. 반응형 대응 포함 16.0 NOT_STARTED 디자이너 100.0 1 TSK-001 FS 0 2026-09-05 2026-09-06 시장지수 위젯 디자인 시안, 반응형 레이아웃 가이드, TSK-011 국내주식 시세 프론트엔드 컴포넌트 개발 종목 시세 표시 화면 프론트엔드 구현. 현재가, 등락률, 거래량, 호가창, 체결 내역 등 컴포넌트 개발. 실시간 데이터 바인딩 및 시각적 피드백 처리 32.0 NOT_STARTED 프론트엔드 개발자 100.0 1 TSK-007 FS 0, TSK-009 FS 0 2026-09-07 2026-09-10 시세 화면 프론트엔드 코드, 컴포넌트 문서, TSK-012 실시간 시세 갱신 프론트엔드 연동 WebSocket/SSE 클라이언트 구현 및 실시간 시세 데이터 수신 처리. 연결 상태 관리, 자동 재연결, 구독 종목 관리 로직 구현 24.0 NOT_STARTED 프론트엔드 개발자 100.0 1 TSK-006 FS 0, TSK-011 FS 0 2026-09-11 2026-09-13 실시간 연동 클라이언트 코드, TSK-013 시장지수 위젯 프론트엔드 개발 KOSPI, KOSDAQ 등 시장지수 표시 위젯 프론트엔드 구현. 지수값, 등락률, 미니 차트 컴포넌트 개발. 자동 갱신 처리 포함 24.0 NOT_STARTED 프론트엔드 개발자 100.0 1 TSK-008 FS 0, TSK-010 FS 0 2026-09-14 2026-09-16 시장지수 위젯 코드, 위젯 사용 가이드, TSK-014 시세 데이터 정합성 검증 및 백엔드 테스트 외부 API 연동 데이터 정합성 검증, 캐싱 로직 단위 테스트, API 통합 테스트, 부하 테스트 수행. 장중/장외 시간대별 동작 검증 24.0 NOT_STARTED QA 100.0 1 TSK-006 FS 0, TSK-007 FS 0, TSK-008 FS 0 2026-09-17 2026-09-19 테스트 케이스 문서, 테스트 결과 보고서, 버그 리포트, TSK-015 시세 화면 및 위젯 UI 테스트 시세 표시 화면 및 시장지수 위젯 기능 테스트. 실시간 갱신 동작 확인, 브라우저 호환성 테스트, 반응형 레이아웃 검증, 비정상 데이터 표시 테스트 24.0 NOT_STARTED QA 100.0 1 TSK-011 FS 0, TSK-012 FS 0, TSK-013 FS 0 2026-09-20 2026-09-22 UI 테스트 케이스, 테스트 결과 보고서, 버그 리포트, TSK-016 성능 최적화 및 안정성 테스트 대량 동시 접속 시 시세 갱신 성능 테스트, 메모리 누수 점검, 네트워크 단절 시 복구 동작 검증, 장시간 운영 안정성 테스트 16.0 NOT_STARTED QA 100.0 1 TSK-014 FS 0, TSK-015 FS 0 2026-09-23 2026-09-24 성능 테스트 결과서, 최적화 권고 사항, TSK-017 버그 수정 및 최종 통합 검증 QA에서 발견된 버그 수정, 전체 모듈 통합 테스트, 운영 환경 배포 전 최종 검증 수행 24.0 NOT_STARTED 백엔드 개발자 100.0 1 TSK-016 FS 0 2026-09-25 2026-09-27 버그 수정 코드, 통합 테스트 결과서, 배포 체크리스트 2026-08-13 2026-09-27, WP-004 해외 시장지수 및 대체자산 시세 모듈 개발 해외 주요 시장지수(S&P500, 나스닥, 다우 등) 표시 위젯 개발, 금/은 귀금속 시세 표시 기능 구현, 암호화폐(비트코인, 이더리움 등) 시세 표시 기능 구현 TSK-001 해외 시장지수 및 대체자산 데이터 소스 조사 해외 시장지수(S&P500, 나스닥, 다우 등), 귀금속(금/은), 암호화폐(비트코인, 이더리움 등) 시세 데이터를 제공하는 외부 API 후보군 조사 및 비교 분석. 비용, 호출 제한, 데이터 지연시간, 안정성 등을 평가하여 최적 API 선정 16.0 NOT_STARTED 백엔드 개발자 100.0 1 TSK-017 FS 0 2026-09-28 2026-09-29 API 후보군 비교 분석서, 최종 API 선정 보고서, API 키 발급 및 계정 설정 완료, TSK-002 데이터 모델 및 DB 스키마 설계 해외 시장지수, 귀금속, 암호화폐 시세 데이터 저장을 위한 데이터 모델 설계. 실시간 시세, 히스토리 데이터, 메타정보(종목명, 심볼, 통화 등) 테이블 설계. 인덱스 및 파티셔닝 전략 수립 12.0 NOT_STARTED 백엔드 개발자 100.0 1 TSK-001 FS 0 2026-09-30 2026-09-30 ERD, DDL 스크립트, 데이터 모델 설계 문서, TSK-003 시세 데이터 수집 서비스 개발 - 해외 시장지수 S&P500, 나스닥, 다우존스, FTSE100, 닛케이225 등 주요 해외 시장지수 데이터를 외부 API로부터 주기적으로 수집하는 백엔드 서비스 개발. 스케줄링, 에러 핸들링, 재시도 로직 포함 24.0 NOT_STARTED 백엔드 개발자 100.0 1 TSK-001 FS 0, TSK-002 FS 0 2026-10-01 2026-10-03 시장지수 수집 서비스 코드, 스케줄러 설정 파일, 단위 테스트 코드, TSK-004 시세 데이터 수집 서비스 개발 - 귀금속 금, 은 등 귀금속 시세 데이터를 외부 API로부터 수집하는 백엔드 서비스 개발. 국제 시세(트로이온스 기준) 및 원화 환산 가격 처리 로직 포함 16.0 NOT_STARTED 백엔드 개발자 100.0 1 TSK-001 FS 0, TSK-002 FS 0 2026-10-04 2026-10-05 귀금속 수집 서비스 코드, 환율 연동 로직, 단위 테스트 코드, TSK-005 시세 데이터 수집 서비스 개발 - 암호화폐 비트코인, 이더리움 등 주요 암호화폐 시세 데이터를 외부 API로부터 실시간 수집하는 백엔드 서비스 개발. 24시간 운영 특성을 고려한 수집 주기 설정 및 WebSocket 연동 검토 20.0 NOT_STARTED 백엔드 개발자 100.0 1 TSK-001 FS 0, TSK-002 FS 0 2026-10-06 2026-10-07 암호화폐 수집 서비스 코드, WebSocket 연동 모듈(해당 시), 단위 테스트 코드, TSK-006 시세 데이터 제공 API 개발 프론트엔드에서 사용할 시세 데이터 조회 REST API 개발. 실시간 시세 조회, 기간별 히스토리 조회, 종목 목록 조회 등 엔드포인트 구현. 캐싱 전략 적용 24.0 NOT_STARTED 백엔드 개발자 100.0 1 TSK-003 FS 0, TSK-004 FS 0, TSK-005 FS 0 2026-10-08 2026-10-10 REST API 코드, API 명세서(Swagger/OpenAPI), 캐싱 설정 문서, TSK-007 UI/UX 디자인 - 해외 시장지수 위젯 해외 주요 시장지수 표시 위젯 UI/UX 디자인. 지수명, 현재가, 등락률, 미니 차트 등 정보 배치 설계. 다크/라이트 모드 대응, 반응형 레이아웃 포함 16.0 NOT_STARTED 디자이너 100.0 1 TSK-006 FS 0 2026-10-11 2026-10-12 위젯 디자인 시안, 디자인 가이드(컴포넌트 스펙), 인터랙션 정의서, TSK-008 UI/UX 디자인 - 귀금속 시세 화면 금/은 귀금속 시세 표시 화면 UI/UX 디자인. 국제 시세, 원화 환산가, 등락률, 추이 차트 등 정보 구성. 시각적 차별화(금색/은색 테마) 적용 12.0 NOT_STARTED 디자이너 100.0 1 TSK-007 FS 0 2026-10-13 2026-10-13 귀금속 시세 화면 디자인 시안, 디자인 가이드, TSK-009 UI/UX 디자인 - 암호화폐 시세 화면 비트코인, 이더리움 등 암호화폐 시세 표시 화면 UI/UX 디자인. 실시간 가격, 24시간 변동률, 거래량, 시가총액 등 핵심 정보 배치. 실시간 업데이트 애니메이션 정의 12.0 NOT_STARTED 디자이너 100.0 1 TSK-008 FS 0 2026-10-14 2026-10-14 암호화폐 시세 화면 디자인 시안, 디자인 가이드, 애니메이션 스펙, TSK-010 프론트엔드 개발 - 해외 시장지수 위젯 해외 시장지수 표시 위젯 프론트엔드 컴포넌트 개발. S&P500, 나스닥, 다우 등 주요 지수의 현재가, 등락률, 미니 차트 표시. 자동 갱신 및 로딩/에러 상태 처리 24.0 NOT_STARTED 프론트엔드 개발자 100.0 1 TSK-006 FS 0, TSK-007 FS 0 2026-10-15 2026-10-17 시장지수 위젯 컴포넌트 코드, 스토리북 컴포넌트, TSK-011 프론트엔드 개발 - 귀금속 시세 화면 금/은 귀금속 시세 표시 프론트엔드 화면 개발. 국제 시세, 원화 환산가, 일간/주간/월간 추이 차트 구현. API 연동 및 실시간 업데이트 처리 20.0 NOT_STARTED 프론트엔드 개발자 100.0 1 TSK-006 FS 0, TSK-008 FS 0 2026-10-18 2026-10-19 귀금속 시세 화면 코드, 차트 컴포넌트, TSK-012 프론트엔드 개발 - 암호화폐 시세 화면 암호화폐 시세 표시 프론트엔드 화면 개발. 비트코인, 이더리움 등 주요 코인 실시간 가격, 변동률, 거래량 표시. WebSocket 기반 실시간 업데이트 및 가격 변동 애니메이션 구현 24.0 NOT_STARTED 프론트엔드 개발자 100.0 1 TSK-006 FS 0, TSK-009 FS 0 2026-10-20 2026-10-22 암호화폐 시세 화면 코드, 실시간 업데이트 모듈, TSK-013 공통 차트 컴포넌트 개발 시장지수, 귀금속, 암호화폐 시세 화면에서 공통으로 사용할 차트 컴포넌트 개발. 라인 차트, 캔들스틱 차트, 기간 선택(1일/1주/1개월/3개월/1년) 기능 포함 20.0 NOT_STARTED 프론트엔드 개발자 100.0 1 TSK-007 FS 0, TSK-008 FS 0, TSK-009 FS 0 2026-10-23 2026-10-24 공통 차트 컴포넌트 코드, 차트 라이브러리 설정, 스토리북 컴포넌트, TSK-014 통합 테스트 - 백엔드 시세 데이터 수집 서비스와 API의 통합 테스트 수행. 외부 API 장애 시나리오, 대량 데이터 처리, 캐시 동작 검증, 동시 요청 처리 등 테스트 16.0 NOT_STARTED QA 100.0 1 TSK-006 FS 0 2026-10-25 2026-10-26 통합 테스트 케이스, 테스트 결과 보고서, 버그 리포트, TSK-015 통합 테스트 - 프론트엔드 해외 시장지수 위젯, 귀금속 시세, 암호화폐 시세 화면의 기능 및 UI 통합 테스트. 크로스 브라우저 테스트, 반응형 레이아웃 검증, 실시간 데이터 갱신 동작 확인 20.0 NOT_STARTED QA 100.0 1 TSK-010 FS 0, TSK-011 FS 0, TSK-012 FS 0, TSK-013 FS 0 2026-10-27 2026-10-28 UI 테스트 케이스, 크로스 브라우저 테스트 결과, 버그 리포트, TSK-016 성능 테스트 및 최적화 시세 데이터 API 응답 속도, 프론트엔드 렌더링 성능, 실시간 업데이트 지연시간 측정 및 최적화. 목표 성능 기준 설정 및 달성 여부 검증 16.0 NOT_STARTED QA 100.0 1 TSK-014 FS 0, TSK-015 FS 0 2026-10-29 2026-10-30 성능 테스트 결과 보고서, 최적화 권고사항, 개선 전후 비교 데이터, TSK-017 프로젝트 관리 및 일정 조율 해외 시장지수 및 대체자산 시세 모듈 개발 전반의 프로젝트 관리. 일정 수립, 리소스 배정, 진행 상황 모니터링, 이슈 관리, 이해관계자 커뮤니케이션 수행 40.0 NOT_STARTED PM 100.0 1 TSK-016 FS 0 2026-10-31 2026-11-04 프로젝트 일정표(WBS), 주간 진행 보고서, 리스크 관리 대장, TSK-018 배포 및 모니터링 설정 시세 모듈의 스테이징/운영 환경 배포 파이프라인 구성. 데이터 수집 서비스 헬스체크, API 응답시간, 외부 API 장애 감지 등 모니터링 알림 설정 16.0 NOT_STARTED 백엔드 개발자 100.0 1 TSK-014 FS 0, TSK-015 FS 0 2026-11-05 2026-11-06 배포 스크립트/설정, 모니터링 대시보드, 알림 설정 문서 2026-09-28 2026-11-06, WP-005 뉴스 피드 모듈 개발 주식 관련 뉴스 피드 표시 기능 구현, 뉴스 데이터 소스 연동, 종목별 뉴스 필터링 및 목록/상세 뷰 개발 TSK-001 뉴스 피드 요구사항 분석 및 기술 설계 뉴스 피드 모듈의 기능 요구사항 정의, 뉴스 데이터 소스 선정, 시스템 아키텍처 설계 및 기술 스택 확정 16.0 NOT_STARTED PM 100.0 1 TSK-018 FS 0 2026-11-07 2026-11-08 요구사항 정의서, 기술 설계 문서, 뉴스 데이터 소스 비교 분석서, TSK-002 뉴스 피드 UI/UX 디자인 뉴스 목록 화면, 뉴스 상세 화면, 종목별 필터링 UI, 빈 상태/로딩/에러 상태 디자인 작업 24.0 NOT_STARTED 디자이너 100.0 1 TSK-001 FS 0 2026-11-09 2026-11-11 뉴스 목록 화면 디자인, 뉴스 상세 화면 디자인, 필터링 UI 디자인, 디자인 가이드, TSK-003 뉴스 데이터 수집 테이블 설계 뉴스 기사, 뉴스 소스, 종목-뉴스 매핑, 카테고리 등 관련 DB 테이블 설계 및 인덱스 전략 수립 8.0 NOT_STARTED 개발자 100.0 1 TSK-001 FS 0 2026-11-12 2026-11-12 ERD, DDL 스크립트, 인덱스 설계서, TSK-004 외부 뉴스 데이터 소스 연동 모듈 개발 선정된 뉴스 데이터 소스(뉴스 API, RSS, 크롤링 등) 연동 어댑터 구현, 데이터 정규화 및 수집 스케줄러 개발 24.0 NOT_STARTED 개발자 100.0 1 TSK-003 FS 0 2026-11-13 2026-11-15 뉴스 수집 어댑터 코드, 스케줄러 코드, 데이터 정규화 로직, TSK-005 종목-뉴스 매핑 로직 개발 뉴스 본문 및 제목에서 종목 키워드를 추출하여 종목과 뉴스를 자동 매핑하는 로직 구현 16.0 NOT_STARTED 개발자 100.0 1 TSK-004 FS 0 2026-11-16 2026-11-17 종목 매핑 엔진 코드, 매핑 정확도 테스트 결과, TSK-006 뉴스 목록 조회 API 개발 뉴스 피드 목록 조회 REST API 구현 (페이지네이션, 정렬, 종목별 필터링, 카테고리 필터링 포함) 16.0 NOT_STARTED 개발자 100.0 1 TSK-003 FS 0, TSK-005 FS 0 2026-11-18 2026-11-19 API 코드, API 명세서(Swagger), TSK-007 뉴스 상세 조회 API 개발 개별 뉴스 상세 정보 조회 API 구현, 조회수 카운트, 관련 뉴스 추천 기능 포함 8.0 NOT_STARTED 개발자 100.0 1 TSK-003 FS 0 2026-11-20 2026-11-20 API 코드, API 명세서(Swagger), TSK-008 뉴스 목록 프론트엔드 개발 뉴스 피드 목록 화면 구현 (무한 스크롤/페이지네이션, 썸네일, 요약 표시, 종목 필터 칩 UI) 24.0 NOT_STARTED 개발자 100.0 1 TSK-002 FS 0, TSK-006 FS 0 2026-11-21 2026-11-23 뉴스 목록 컴포넌트 코드, 필터링 컴포넌트 코드, TSK-009 뉴스 상세 프론트엔드 개발 뉴스 상세 화면 구현 (본문 렌더링, 관련 종목 태그, 관련 뉴스 목록, 공유 기능) 16.0 NOT_STARTED 개발자 100.0 1 TSK-002 FS 0, TSK-007 FS 0 2026-11-24 2026-11-25 뉴스 상세 컴포넌트 코드, TSK-010 종목 상세 페이지 뉴스 탭 연동 기존 종목 상세 페이지에 해당 종목 관련 뉴스 탭을 추가하고, 종목별 필터링된 뉴스 목록을 표시 12.0 NOT_STARTED 개발자 100.0 1 TSK-008 FS 0, TSK-006 FS 0 2026-11-26 2026-11-26 종목 뉴스 탭 컴포넌트 코드, TSK-011 뉴스 피드 캐싱 및 성능 최적화 뉴스 목록 API 응답 캐싱 전략 구현, 이미지 레이지 로딩, 프론트엔드 렌더링 최적화 12.0 NOT_STARTED 개발자 100.0 1 TSK-008 FS 0, TSK-009 FS 0 2026-11-27 2026-11-27 캐싱 로직 코드, 성능 측정 리포트, TSK-012 뉴스 피드 백엔드 단위/통합 테스트 뉴스 수집, 매핑, 조회 API에 대한 단위 테스트 및 통합 테스트 작성 및 수행 16.0 NOT_STARTED QA 100.0 1 TSK-006 FS 0, TSK-007 FS 0, TSK-005 FS 0 2026-11-28 2026-11-29 테스트 케이스 문서, 테스트 코드, 테스트 결과 보고서, TSK-013 뉴스 피드 프론트엔드 E2E 테스트 뉴스 목록 조회, 필터링, 상세 진입, 종목별 뉴스 탭 등 사용자 시나리오 기반 E2E 테스트 수행 16.0 NOT_STARTED QA 100.0 1 TSK-008 FS 0, TSK-009 FS 0, TSK-010 FS 0 2026-11-30 2026-12-01 E2E 테스트 시나리오, 테스트 결과 보고서, 버그 리포트, TSK-014 뉴스 피드 QA 검증 및 버그 수정 전체 뉴스 피드 모듈에 대한 통합 QA 수행, 발견된 버그 수정 및 재검증 24.0 NOT_STARTED QA 100.0 1 TSK-011 FS 0, TSK-012 FS 0, TSK-013 FS 0 2026-12-02 2026-12-04 QA 체크리스트, 최종 테스트 결과 보고서, 릴리즈 승인서 2026-11-07 2026-12-04 | 2026-06-21 | 2026-12-04 | MVP 릴리스 | 대시보드 레이아웃 컴포넌트, 주식 차트 모듈, 국내주식 시세 표시 모듈, 종목 정보 표시 모듈, 종목 교체 가능 구조 (동적 종목 선택 기능), 단위 테스트 결과, MVP 배포본 |
| PH-003 | 기능 확장 - 시장지수 및 원자재 | 국내/해외 시장지수 표시, 금/은 시세 표시, 암호화폐 시세 표시 기능 개발 | 3 | WP-001 국내 시장지수 표시 모듈 개발 KOSPI, KOSDAQ 등 국내 주요 시장지수 실시간 데이터 수집 API 연동, 지수 현재값/등락률/차트 표시 UI 컴포넌트 개발, 대시보드 내 시장지수 위젯 배치 및 자동 갱신 기능 구현 TSK-001 시장지수 데이터 요구사항 분석 및 API 조사 KOSPI, KOSDAQ, KOSPI200 등 표시할 국내 시장지수 목록 확정 및 실시간 데이터 제공 외부 API(한국거래소, 금융데이터 제공업체 등) 비교 분석, API 선정 12.0 NOT_STARTED PM 100.0 1 TSK-014 FS 0 2026-12-05 2026-12-05 시장지수 목록 정의서, API 비교 분석서, 선정 API 기술 사양서, TSK-002 시장지수 위젯 UI/UX 설계 시장지수 현재값, 등락률, 미니 차트를 포함한 위젯 UI 디자인 및 대시보드 내 배치 레이아웃 설계, 반응형 대응 포함 16.0 NOT_STARTED 디자이너 100.0 1 TSK-001 FS 0 2026-12-06 2026-12-07 UI 와이어프레임, 시각 디자인 시안, 디자인 스펙 문서, TSK-003 시장지수 데이터 수집 백엔드 모듈 개발 선정된 외부 API와 연동하여 KOSPI, KOSDAQ 등 시장지수 실시간 데이터를 수집·파싱하는 백엔드 서비스 모듈 구현, 에러 핸들링 및 재시도 로직 포함 24.0 NOT_STARTED 개발자 100.0 1 TSK-001 FS 0 2026-12-08 2026-12-10 데이터 수집 서비스 코드, API 연동 설정 파일, 단위 테스트 코드, TSK-004 시장지수 데이터 캐싱 및 저장 구조 설계·구현 수집된 시장지수 데이터의 캐싱 전략 수립(Redis 등) 및 이력 데이터 저장을 위한 DB 스키마 설계·구현, 차트용 시계열 데이터 저장 포함 16.0 NOT_STARTED 개발자 100.0 1 TSK-003 FS 0 2026-12-11 2026-12-12 캐싱 모듈 코드, DB 스키마(DDL), 데이터 모델 문서, TSK-005 시장지수 조회 API 개발 프론트엔드에서 사용할 시장지수 현재값, 등락률, 차트 데이터 조회 REST API 엔드포인트 개발, 페이지네이션 및 필터링 지원 16.0 NOT_STARTED 개발자 100.0 1 TSK-004 FS 0 2026-12-13 2026-12-14 API 엔드포인트 코드, API 명세서(Swagger), 단위 테스트 코드, TSK-006 실시간 데이터 푸시 기능 구현 WebSocket 또는 SSE를 활용한 시장지수 실시간 데이터 푸시 기능 구현, 자동 갱신 주기 설정 및 연결 끊김 시 재연결 로직 포함 20.0 NOT_STARTED 개발자 100.0 1 TSK-005 FS 0 2026-12-15 2026-12-16 실시간 통신 모듈 코드, 연결 관리 로직 코드, 기술 문서, TSK-007 시장지수 현재값/등락률 표시 UI 컴포넌트 개발 시장지수명, 현재값, 전일 대비 등락폭/등락률을 표시하는 프론트엔드 UI 컴포넌트 개발, 상승/하락/보합 상태별 색상 표시 포함 16.0 NOT_STARTED 개발자 100.0 1 TSK-002 FS 0, TSK-005 FS 0 2026-12-17 2026-12-18 UI 컴포넌트 코드, 스토리북 등록, 단위 테스트 코드, TSK-008 시장지수 차트 컴포넌트 개발 시장지수 일중/일별/주별 추이를 표시하는 차트(라인 차트) UI 컴포넌트 개발, 차트 라이브러리 연동 및 인터랙션(툴팁, 줌) 구현 24.0 NOT_STARTED 개발자 100.0 1 TSK-002 FS 0, TSK-005 FS 0 2026-12-19 2026-12-21 차트 컴포넌트 코드, 차트 라이브러리 설정, 단위 테스트 코드, TSK-009 대시보드 시장지수 위젯 통합 및 배치 개발된 시장지수 표시 컴포넌트와 차트 컴포넌트를 대시보드 위젯으로 통합, 위젯 배치·크기 조절·드래그 기능 연동, 자동 갱신 연결 16.0 NOT_STARTED 개발자 100.0 1 TSK-006 FS 0, TSK-007 FS 0, TSK-008 FS 0 2026-12-22 2026-12-23 위젯 통합 코드, 대시보드 레이아웃 설정, 통합 테스트 코드, TSK-010 시장지수 모듈 통합 테스트 백엔드 데이터 수집부터 프론트엔드 위젯 표시까지 전체 플로우 통합 테스트, 실시간 갱신 동작 검증, 엣지 케이스(API 장애, 네트워크 끊김 등) 테스트 16.0 NOT_STARTED QA 100.0 1 TSK-009 FS 0 2026-12-24 2026-12-25 테스트 케이스 문서, 테스트 수행 결과서, 버그 리포트, TSK-011 성능 최적화 및 부하 테스트 다수 사용자 동시 접속 시 실시간 데이터 푸시 성능 검증, 프론트엔드 렌더링 성능 최적화(불필요 리렌더링 방지), 캐싱 효율 점검 12.0 NOT_STARTED 개발자 100.0 1 TSK-010 FS 0 2026-12-26 2026-12-26 성능 테스트 결과 보고서, 최적화 적용 코드, TSK-012 버그 수정 및 최종 검수 통합 테스트 및 성능 테스트에서 발견된 버그 수정, QA 최종 검수 수행 및 릴리스 승인 16.0 NOT_STARTED QA 100.0 1 TSK-011 FS 0 2026-12-27 2026-12-28 버그 수정 확인서, 최종 테스트 결과서, 릴리스 승인 문서 2026-12-05 2026-12-28, WP-002 해외 시장지수 표시 모듈 개발 S&P500, 나스닥, 다우존스, 니케이225 등 해외 주요 시장지수 데이터 수집 API 연동, 환율 정보 병행 표시, 해외 지수 현재값/등락률/차트 UI 컴포넌트 개발, 시차 및 개장/폐장 상태 표시 기능 구현 TSK-001 해외 시장지수 데이터 요구사항 분석 및 API 조사 S&P500, 나스닥, 다우존스, 니케이225 등 표시 대상 해외 지수 목록 확정, 외부 데이터 제공 API(Bloomberg, Reuters, Yahoo Finance 등) 비교 분석 및 선정, 환율 데이터 API 조사, 데이터 갱신 주기·과금 체계·Rate Limit 등 기술 제약사항 정리 12.0 NOT_STARTED PM 100.0 1 TSK-012 FS 0 2026-12-29 2026-12-29 대상 지수 목록 정의서, API 벤더 비교 분석서, 기술 제약사항 문서, TSK-002 해외 시장지수 모듈 UI/UX 설계 해외 지수 현재값, 등락률, 미니 차트, 환율 정보, 개장/폐장 상태 배지 등을 포함하는 화면 와이어프레임 및 시각 디자인 작성. 반응형 레이아웃, 색상(상승/하락) 가이드, 차트 인터랙션 정의 20.0 NOT_STARTED 디자이너 100.0 1 TSK-001 FS 0 2026-12-30 2026-12-31 와이어프레임, UI 시안(Figma), 디자인 가이드 문서, TSK-003 해외 시장지수 데이터 모델 및 DB 설계 해외 지수 시세 데이터(지수코드, 현재값, 전일대비, 등락률, 타임스탬프 등) 및 환율 데이터 저장을 위한 테이블 설계. 시계열 데이터 보관 정책, 인덱스 전략 수립 8.0 NOT_STARTED 백엔드 개발자 100.0 1 TSK-001 FS 0 2027-01-01 2027-01-01 ERD, DDL 스크립트, 데이터 보관 정책 문서, TSK-004 해외 시장지수 수집 배치 서비스 개발 선정된 외부 API와 연동하여 S&P500, 나스닥, 다우존스, 니케이225 등 해외 지수 시세를 주기적으로 수집하는 배치/스케줄러 서비스 구현. 재시도 로직, 에러 핸들링, 로깅 포함 24.0 NOT_STARTED 백엔드 개발자 100.0 1 TSK-003 FS 0 2027-01-02 2027-01-04 수집 배치 서비스 코드, 스케줄링 설정 파일, 에러 처리 명세, TSK-005 환율 정보 수집 서비스 개발 USD/KRW, JPY/KRW 등 주요 환율 데이터를 외부 API로부터 수집·저장하는 서비스 구현. 해외 지수 데이터와 동기화된 갱신 주기 적용 16.0 NOT_STARTED 백엔드 개발자 100.0 1 TSK-003 FS 0 2027-01-05 2027-01-06 환율 수집 서비스 코드, 환율 데이터 테이블 DDL, TSK-006 시차 및 개장/폐장 상태 판별 로직 개발 각 해외 거래소(NYSE, NASDAQ, JPX 등)의 거래 시간, 휴장일 캘린더를 관리하고, 현재 시각 기준 개장/폐장/프리마켓/애프터마켓 상태를 판별하는 유틸리티 모듈 개발. 서머타임 전환 처리 포함 16.0 NOT_STARTED 백엔드 개발자 100.0 1 TSK-001 FS 0 2027-01-07 2027-01-08 거래소 상태 판별 모듈 코드, 거래소 휴장일 캘린더 데이터, 단위 테스트 코드, TSK-007 해외 시장지수 조회 REST API 개발 프론트엔드에서 사용할 해외 지수 현재값, 등락률, 히스토리 차트 데이터, 환율 정보, 개장/폐장 상태를 제공하는 REST API 엔드포인트 개발. 페이지네이션, 캐싱 전략 적용 20.0 NOT_STARTED 백엔드 개발자 100.0 1 TSK-004 FS 0, TSK-005 FS 0, TSK-006 FS 0 2027-01-09 2027-01-10 API 코드, Swagger/OpenAPI 문서, 응답 캐싱 설정, TSK-008 해외 지수 현재값/등락률 UI 컴포넌트 개발 각 해외 지수의 현재값, 전일대비 변동, 등락률을 표시하는 카드형 UI 컴포넌트 개발. 상승/하락 색상 처리, 실시간 데이터 바인딩, 로딩/에러 상태 처리 포함 16.0 NOT_STARTED 프론트엔드 개발자 100.0 1 TSK-002 FS 0, TSK-007 FS 0 2027-01-11 2027-01-12 지수 카드 컴포넌트 코드, 스토리북 등록, TSK-009 해외 지수 차트 UI 컴포넌트 개발 해외 지수의 일간/주간/월간/연간 시세 추이를 보여주는 인터랙티브 차트 컴포넌트 개발. 기간 선택, 툴팁, 줌 기능 구현. 차트 라이브러리(Chart.js, D3 등) 활용 24.0 NOT_STARTED 프론트엔드 개발자 100.0 1 TSK-002 FS 0, TSK-007 FS 0 2027-01-13 2027-01-15 차트 컴포넌트 코드, 스토리북 등록, TSK-010 환율 정보 표시 UI 컴포넌트 개발 해외 지수와 병행 표시되는 환율 정보(USD/KRW, JPY/KRW 등) UI 컴포넌트 개발. 환율 변동률, 원화 환산 참고값 표시 12.0 NOT_STARTED 프론트엔드 개발자 100.0 1 TSK-002 FS 0, TSK-007 FS 0 2027-01-16 2027-01-16 환율 표시 컴포넌트 코드, 스토리북 등록, TSK-011 개장/폐장 상태 배지 및 시차 표시 UI 개발 각 해외 거래소의 현재 개장/폐장/프리마켓 상태를 시각적 배지로 표시하고, 현지 시간 및 한국 시간과의 시차를 표시하는 UI 컴포넌트 개발 10.0 NOT_STARTED 프론트엔드 개발자 100.0 1 TSK-002 FS 0, TSK-007 FS 0 2027-01-17 2027-01-17 상태 배지 컴포넌트 코드, 스토리북 등록, TSK-012 해외 시장지수 모듈 통합 및 화면 조립 개별 UI 컴포넌트(지수 카드, 차트, 환율, 상태 배지)를 하나의 해외 시장지수 페이지/섹션으로 통합. 레이아웃 배치, 반응형 처리, 데이터 흐름 연결, 자동 갱신(폴링/WebSocket) 적용 16.0 NOT_STARTED 프론트엔드 개발자 100.0 1 TSK-008 FS 0, TSK-009 FS 0, TSK-010 FS 0, TSK-011 FS 0 2027-01-18 2027-01-19 통합 페이지 코드, 라우팅 설정, TSK-013 해외 시장지수 모듈 통합 테스트 백엔드 API 및 프론트엔드 UI 전체 흐름에 대한 통합 테스트 수행. 데이터 정합성 검증, 개장/폐장 시간대별 시나리오 테스트, 환율 데이터 연동 검증, API 장애 시 폴백 동작 확인 20.0 NOT_STARTED QA 100.0 1 TSK-012 FS 0 2027-01-20 2027-01-21 테스트 케이스 문서, 테스트 결과 보고서, 버그 리포트, TSK-014 크로스 브라우저 및 성능 테스트 주요 브라우저(Chrome, Safari, Firefox, Edge) 및 모바일 환경에서의 UI 호환성 테스트. 차트 렌더링 성능, 데이터 갱신 주기 부하, 대량 데이터 로딩 시 성능 테스트 수행 12.0 NOT_STARTED QA 100.0 1 TSK-012 FS 0 2027-01-22 2027-01-22 호환성 테스트 결과서, 성능 테스트 보고서, TSK-015 버그 수정 및 최종 검수 통합 테스트 및 성능 테스트에서 발견된 버그 수정. PM 최종 검수 및 릴리스 승인 16.0 NOT_STARTED 개발자 100.0 1 TSK-013 FS 0, TSK-014 FS 0 2027-01-23 2027-01-24 버그 수정 코드, 최종 검수 완료 보고서 2026-12-29 2027-01-24, WP-003 금/은 시세 표시 모듈 개발 금/은 현물 및 선물 시세 데이터 수집 API 연동, 국내 금거래소 및 국제 시세 기준 가격 표시, 금/은 시세 차트 및 등락률 UI 컴포넌트 개발, 단위(g, oz) 전환 기능 구현 TSK-001 금/은 시세 데이터 소스 조사 및 API 선정 국내 금거래소(한국금거래소, KRX 금시장 등) 및 국제 시세(London Fix, COMEX 등) 데이터를 제공하는 API를 조사하고, 실시간성·비용·안정성 기준으로 최적 API를 선정한다. 현물/선물 데이터 제공 여부, 호출 제한, 라이선스를 확인한다. 12.0 NOT_STARTED PM 100.0 1 TSK-015 FS 0 2027-01-25 2027-01-25 API 비교 분석서, 선정 API 목록 및 계약/키 발급 계획, TSK-002 시세 표시 모듈 데이터 모델 설계 금/은 현물·선물 시세, 국내·국제 기준가, 단위(g, oz, 돈) 정보를 저장·캐싱하기 위한 DB 테이블 및 캐시 구조를 설계한다. 환율 정보 연동 구조도 포함한다. 8.0 NOT_STARTED 백엔드 개발자 100.0 1 TSK-001 FS 0 2027-01-26 2027-01-26 ERD, DDL 스크립트, 캐시 키 설계 문서, TSK-003 외부 시세 API 연동 어댑터 개발 선정된 외부 API(국제 시세, 국내 금거래소)와 연동하는 어댑터 모듈을 개발한다. API 호출, 응답 파싱, 오류 처리, 재시도 로직을 포함하며, 어댑터 패턴을 적용하여 API 교체가 용이하도록 구현한다. 24.0 NOT_STARTED 백엔드 개발자 100.0 1 TSK-001 FS 0, TSK-002 FS 0 2027-01-27 2027-01-29 API 어댑터 소스 코드, 단위 테스트 코드, TSK-004 시세 데이터 수집 스케줄러 개발 주기적으로 외부 API를 호출하여 금/은 현물·선물 시세를 수집하고 DB 및 캐시에 저장하는 스케줄러를 개발한다. 수집 주기 설정, 장 운영시간 고려, 수집 실패 알림 기능을 포함한다. 16.0 NOT_STARTED 백엔드 개발자 100.0 1 TSK-003 FS 0 2027-01-30 2027-01-31 스케줄러 소스 코드, 수집 로그 테이블, 모니터링 알림 설정, TSK-005 시세 조회 내부 API 개발 프론트엔드에서 사용할 금/은 시세 조회 REST API를 개발한다. 현재가, 등락률, 시가/고가/저가/종가, 현물/선물 구분, 국내/국제 기준가 조회, 단위(g, oz) 파라미터를 지원한다. 16.0 NOT_STARTED 백엔드 개발자 100.0 1 TSK-002 FS 0, TSK-004 FS 0 2027-02-01 2027-02-02 API 소스 코드, Swagger/OpenAPI 문서, TSK-006 시세 차트 데이터 API 개발 차트 렌더링에 필요한 기간별(일/주/월/연) 시세 이력 데이터를 제공하는 API를 개발한다. 기간 필터, 데이터 포인트 집계(OHLC), 단위 전환 적용 로직을 포함한다. 16.0 NOT_STARTED 백엔드 개발자 100.0 1 TSK-005 FS 0 2027-02-03 2027-02-04 차트 데이터 API 소스 코드, API 문서, TSK-007 단위 전환 로직 개발 금/은 시세의 단위 전환(g, oz, 돈, kg) 유틸리티 모듈을 개발한다. 국제 시세(USD/oz)를 국내 시세(KRW/g)로 환산하는 환율 연동 변환 로직도 포함한다. 8.0 NOT_STARTED 백엔드 개발자 100.0 1 TSK-002 FS 0 2027-02-05 2027-02-05 단위 전환 유틸리티 소스 코드, 단위 테스트 코드, TSK-008 시세 표시 UI/UX 디자인 금/은 시세 현재가 표시, 등락률 표시, 현물/선물 탭, 국내/국제 기준 전환, 단위 선택 드롭다운, 시세 차트 영역 등 전체 UI/UX를 디자인한다. 상승(빨강)/하락(파랑) 색상 규칙과 반응형 레이아웃을 포함한다. 24.0 NOT_STARTED 디자이너 100.0 1 TSK-001 FS 0 2027-02-06 2027-02-08 UI 디자인 시안(Figma), 디자인 가이드 문서, 컴포넌트 스펙, TSK-009 시세 현재가 표시 컴포넌트 개발 금/은 현재 시세, 전일 대비 등락률(%), 등락 금액을 표시하는 프론트엔드 컴포넌트를 개발한다. 실시간 갱신(폴링 또는 WebSocket), 상승/하락 색상 표시, 로딩/에러 상태 처리를 포함한다. 16.0 NOT_STARTED 프론트엔드 개발자 100.0 1 TSK-005 FS 0, TSK-008 FS 0 2027-02-09 2027-02-10 현재가 표시 컴포넌트 소스 코드, TSK-010 시세 차트 컴포넌트 개발 금/은 시세 이력을 라인차트/캔들차트로 표시하는 프론트엔드 컴포넌트를 개발한다. 기간 선택(1일/1주/1개월/3개월/1년), 줌/패닝, 툴팁, 반응형 대응을 포함한다. 24.0 NOT_STARTED 프론트엔드 개발자 100.0 1 TSK-006 FS 0, TSK-008 FS 0 2027-02-11 2027-02-13 차트 컴포넌트 소스 코드, TSK-011 단위 전환 UI 컴포넌트 개발 사용자가 시세 단위(g, oz, 돈)를 선택할 수 있는 드롭다운/토글 컴포넌트를 개발하고, 선택 시 시세 및 차트 데이터가 즉시 전환되도록 연동한다. 8.0 NOT_STARTED 프론트엔드 개발자 100.0 1 TSK-007 FS 0, TSK-008 FS 0, TSK-009 FS 0 2027-02-14 2027-02-14 단위 전환 컴포넌트 소스 코드, TSK-012 현물/선물 및 국내/국제 기준 전환 UI 개발 현물/선물 탭 전환, 국내 금거래소 기준가/국제 시세 기준가 전환 UI를 개발한다. 탭 또는 토글 방식으로 전환 시 시세 및 차트가 즉시 갱신되도록 구현한다. 12.0 NOT_STARTED 프론트엔드 개발자 100.0 1 TSK-009 FS 0, TSK-010 FS 0 2027-02-15 2027-02-15 전환 UI 컴포넌트 소스 코드, TSK-013 백엔드 통합 테스트 시세 수집 스케줄러, 외부 API 연동, 내부 시세 조회 API, 차트 데이터 API, 단위 전환 로직의 통합 테스트를 수행한다. 외부 API 목업을 활용한 안정성 테스트와 경계값 테스트를 포함한다. 16.0 NOT_STARTED QA 100.0 1 TSK-004 FS 0, TSK-005 FS 0, TSK-006 FS 0, TSK-007 FS 0 2027-02-16 2027-02-17 테스트 케이스 문서, 테스트 결과 보고서, 버그 리포트, TSK-014 프론트엔드 통합 테스트 및 크로스브라우저 테스트 시세 표시, 차트, 단위 전환, 현물/선물 전환 등 전체 UI 컴포넌트의 통합 테스트를 수행한다. 주요 브라우저(Chrome, Safari, Firefox) 및 모바일 반응형 테스트를 포함한다. 16.0 NOT_STARTED QA 100.0 1 TSK-009 FS 0, TSK-010 FS 0, TSK-011 FS 0, TSK-012 FS 0 2027-02-18 2027-02-19 UI 테스트 케이스 문서, 크로스브라우저 테스트 결과, 버그 리포트, TSK-015 성능 테스트 및 최적화 시세 데이터 API 응답 시간, 차트 렌더링 성능, 실시간 갱신 부하 테스트를 수행한다. 캐시 적중률 확인 및 병목 구간 최적화를 진행한다. 12.0 NOT_STARTED QA 100.0 1 TSK-013 FS 0, TSK-014 FS 0 2027-02-20 2027-02-20 성능 테스트 결과 보고서, 최적화 적용 내역, TSK-016 최종 검수 및 배포 준비 전체 기능 회귀 테스트, 버그 수정 확인, 운영 환경 설정(API 키, 스케줄러 크론 설정, 모니터링 대시보드)을 완료하고 배포 체크리스트를 작성한다. 8.0 NOT_STARTED PM 100.0 1 TSK-015 FS 0 2027-02-21 2027-02-21 배포 체크리스트, 운영 설정 문서, 릴리스 노트 2027-01-25 2027-02-21, WP-004 암호화폐 시세 표시 모듈 개발 비트코인, 이더리움 등 주요 암호화폐 실시간 시세 데이터 수집 API 연동, 암호화폐 가격/등락률/거래량 표시 UI 컴포넌트 개발, 암호화폐 차트 표시 및 원화/달러 기준 전환 기능 구현 TSK-001 암호화폐 시세 API 조사 및 선정 CoinGecko, Binance, Upbit 등 주요 암호화폐 시세 API를 비교 분석하고, 프로젝트 요구사항(실시간 시세, 원화/달러 지원, 거래량 데이터 등)에 적합한 API를 선정한다. API 호출 제한, 비용, 응답 속도, 데이터 정확성을 평가한다. 8.0 NOT_STARTED PM 100.0 1 TSK-016 FS 0 2027-02-22 2027-02-22 API 비교 분석 보고서, 선정 API 명세 정리 문서, TSK-002 암호화폐 시세 모듈 데이터 모델 설계 암호화폐 시세 데이터(코인 종류, 현재가, 등락률, 거래량, 타임스탬프 등)를 저장·캐싱하기 위한 데이터 모델 및 DB 스키마를 설계한다. 원화/달러 환율 정보 저장 구조도 포함한다. 8.0 NOT_STARTED 개발자 100.0 1 TSK-001 FS 0 2027-02-23 2027-02-23 ERD, DDL 스크립트, 데이터 모델 명세서, TSK-003 시세 데이터 수집 백엔드 서비스 개발 선정된 외부 API를 연동하여 비트코인, 이더리움 등 주요 암호화폐의 실시간 시세 데이터를 주기적으로 수집하는 백엔드 서비스를 구현한다. 스케줄러 기반 폴링 또는 WebSocket 연동 방식을 적용하고, 수집 데이터를 DB/캐시에 저장한다. 24.0 NOT_STARTED 개발자 100.0 1 TSK-001 FS 0, TSK-002 FS 0 2027-02-24 2027-02-26 데이터 수집 서비스 코드, 스케줄러 설정 파일, 에러 핸들링 및 재시도 로직, TSK-004 시세 조회 REST API 개발 프론트엔드에서 사용할 암호화폐 시세 조회 API를 개발한다. 코인별 현재가, 등락률, 거래량 조회 엔드포인트와 원화/달러 기준 전환 파라미터를 지원한다. 차트 데이터용 기간별 시세 이력 조회 API도 포함한다. 16.0 NOT_STARTED 개발자 100.0 1 TSK-003 FS 0 2027-02-27 2027-02-28 REST API 코드, API 명세서(Swagger/OpenAPI), 응답 DTO 정의, TSK-005 원화/달러 환율 연동 서비스 개발 실시간 원화/달러 환율 데이터를 외부 API로부터 수집하고 캐싱하는 서비스를 개발한다. 시세 데이터의 원화↔달러 기준 전환 시 해당 환율을 적용하는 로직을 구현한다. 12.0 NOT_STARTED 개발자 100.0 1 TSK-002 FS 0 2027-03-01 2027-03-01 환율 수집 서비스 코드, 통화 변환 유틸리티 모듈, TSK-006 시세 표시 UI 디자인 암호화폐 가격, 등락률, 거래량을 표시하는 UI 컴포넌트 및 차트 화면의 와이어프레임과 시각 디자인을 작성한다. 상승/하락 색상 구분, 원화/달러 전환 토글, 반응형 레이아웃을 포함한다. 16.0 NOT_STARTED 디자이너 100.0 1 TSK-001 FS 0 2027-03-02 2027-03-03 와이어프레임, UI 시안(Figma 등), 디자인 가이드(색상·폰트·아이콘 규격), TSK-007 시세 목록 UI 컴포넌트 개발 암호화폐별 현재가, 등락률(%), 거래량을 리스트 형태로 표시하는 프론트엔드 UI 컴포넌트를 개발한다. 실시간 데이터 갱신, 상승/하락 색상 표시, 로딩/에러 상태 처리를 포함한다. 16.0 NOT_STARTED 개발자 100.0 1 TSK-004 FS 0, TSK-006 FS 0 2027-03-04 2027-03-05 시세 목록 컴포넌트 코드, 컴포넌트 스토리(Storybook 등), TSK-008 암호화폐 차트 컴포넌트 개발 선택한 암호화폐의 시세 추이를 라인/캔들 차트로 표시하는 프론트엔드 컴포넌트를 개발한다. 기간 선택(1일/1주/1개월/3개월/1년), 줌·팬 인터랙션, 툴팁 표시 기능을 구현한다. 24.0 NOT_STARTED 개발자 100.0 1 TSK-004 FS 0, TSK-006 FS 0 2027-03-06 2027-03-08 차트 컴포넌트 코드, 차트 라이브러리 연동 설정, TSK-009 원화/달러 기준 전환 기능 개발 시세 목록 및 차트 UI에서 원화(KRW)↔달러(USD) 기준을 전환할 수 있는 토글 기능을 프론트엔드에 구현한다. 전환 시 가격, 거래량, 차트 Y축 등 모든 관련 데이터가 선택 통화 기준으로 재표시되도록 한다. 12.0 NOT_STARTED 개발자 100.0 1 TSK-005 FS 0, TSK-007 FS 0, TSK-008 FS 0 2027-03-09 2027-03-09 통화 전환 토글 컴포넌트 코드, 통화 상태 관리 로직, TSK-010 백엔드 단위·통합 테스트 작성 시세 수집 서비스, 시세 조회 API, 환율 연동 서비스에 대한 단위 테스트 및 통합 테스트를 작성한다. 외부 API 장애 시나리오, 데이터 정합성, 통화 변환 정확도를 검증한다. 16.0 NOT_STARTED 개발자 100.0 1 TSK-003 FS 0, TSK-004 FS 0, TSK-005 FS 0 2027-03-10 2027-03-11 테스트 코드, 테스트 커버리지 리포트, TSK-011 프론트엔드 컴포넌트 테스트 작성 시세 목록, 차트, 통화 전환 UI 컴포넌트에 대한 단위 테스트 및 스냅샷 테스트를 작성한다. 데이터 바인딩, 상태 변환, 사용자 인터랙션 시나리오를 검증한다. 12.0 NOT_STARTED 개발자 100.0 1 TSK-007 FS 0, TSK-008 FS 0, TSK-009 FS 0 2027-03-12 2027-03-12 프론트엔드 테스트 코드, 테스트 커버리지 리포트, TSK-012 QA 테스트 계획 수립 및 테스트 케이스 작성 암호화폐 시세 모듈 전체에 대한 QA 테스트 계획을 수립하고, 기능 테스트·경계값 테스트·비기능 테스트(성능, 실시간 갱신 정확도) 케이스를 작성한다. 12.0 NOT_STARTED QA 100.0 1 TSK-004 FS 0, TSK-006 FS 0 2027-03-13 2027-03-13 테스트 계획서, 테스트 케이스 문서, TSK-013 통합 QA 테스트 수행 및 버그 리포트 개발 완료된 암호화폐 시세 모듈 전체에 대해 통합 QA 테스트를 수행한다. 실시간 시세 정확성, 차트 표시 정합성, 원화/달러 전환 정확도, 크로스 브라우저 호환성, 반응형 레이아웃을 검증하고 발견된 결함을 리포트한다. 20.0 NOT_STARTED QA 100.0 1 TSK-009 FS 0, TSK-010 FS 0, TSK-011 FS 0, TSK-012 FS 0 2027-03-14 2027-03-15 QA 테스트 결과 보고서, 버그 리포트(이슈 트래커 등록), TSK-014 버그 수정 및 최종 검증 QA 테스트에서 발견된 버그를 수정하고, 수정 완료 후 재테스트를 수행하여 모든 결함이 해결되었는지 최종 검증한다. 16.0 NOT_STARTED 개발자 100.0 1 TSK-013 FS 0 2027-03-16 2027-03-17 버그 수정 코드, 재테스트 통과 확인서 2027-02-22 2027-03-17, WP-005 통합 대시보드 확장 및 종목 교체 구조 적용 시장지수, 원자재, 암호화폐 위젯을 기존 대시보드에 통합 배치, 각 모듈별 종목/지수 교체 가능 구조 설계 및 적용, 사용자 커스터마이징 설정 저장 기능, 기존 주식 시세/뉴스/종목정보 모듈과의 레이아웃 정합성 확보 TSK-001 대시보드 확장 요구사항 분석 및 설계 문서 작성 시장지수, 원자재, 암호화폐 위젯 통합과 종목 교체 구조에 대한 상세 요구사항을 분석하고, 기존 대시보드(주식 시세/뉴스/종목정보) 모듈과의 정합성을 고려한 전체 설계 문서를 작성한다. 16.0 NOT_STARTED PM 100.0 1 TSK-014 FS 0 2027-03-18 2027-03-19 요구사항 정의서, 기능 명세서, 위젯 통합 설계 문서, TSK-002 종목/지수 교체 구조 아키텍처 설계 각 모듈(시장지수, 원자재, 암호화폐, 주식)별로 종목 및 지수를 동적으로 교체할 수 있는 공통 구조를 설계한다. 데이터 바인딩, 이벤트 처리, 상태 관리 패턴을 포함한 아키텍처 문서를 작성한다. 16.0 NOT_STARTED 개발자 100.0 1 TSK-001 FS 0 2027-03-20 2027-03-21 아키텍처 설계서, 컴포넌트 다이어그램, 상태 관리 흐름도, TSK-003 통합 대시보드 UI/UX 설계 시장지수, 원자재, 암호화폐 위젯을 기존 대시보드에 통합 배치하는 레이아웃을 설계한다. 기존 주식 시세/뉴스/종목정보 모듈과의 시각적 정합성을 확보하고, 종목 교체 인터랙션 및 커스터마이징 설정 화면을 포함한다. 24.0 NOT_STARTED 디자이너 100.0 1 TSK-001 FS 0 2027-03-22 2027-03-24 와이어프레임, UI 디자인 시안, 인터랙션 정의서, 디자인 시스템 가이드 업데이트, TSK-004 종목/지수 교체 공통 모듈 백엔드 개발 종목 및 지수 목록 조회, 검색, 교체 요청을 처리하는 공통 백엔드 API를 개발한다. 시장지수, 원자재, 암호화폐, 주식 등 자산 유형별 종목 데이터 소스를 통합 관리하는 서비스 레이어를 구현한다. 24.0 NOT_STARTED 개발자 100.0 1 TSK-002 FS 0 2027-03-25 2027-03-27 종목 조회/검색 API, 종목 교체 API, API 문서, TSK-005 사용자 커스터마이징 설정 저장 백엔드 개발 사용자별 대시보드 위젯 배치, 선택된 종목/지수, 위젯 표시 설정 등을 저장하고 조회하는 API를 개발한다. DB 테이블 설계 및 CRUD 엔드포인트를 구현한다. 16.0 NOT_STARTED 개발자 100.0 1 TSK-002 FS 0 2027-03-28 2027-03-29 설정 저장 DB 스키마(DDL), 설정 CRUD API, API 문서, TSK-006 시장지수 위젯 프론트엔드 개발 시장지수 데이터를 표시하는 위젯 컴포넌트를 개발한다. 종목 교체 구조를 적용하여 사용자가 표시할 지수를 선택/교체할 수 있도록 구현한다. 20.0 NOT_STARTED 개발자 100.0 1 TSK-003 FS 0, TSK-004 FS 0 2027-03-30 2027-03-31 시장지수 위젯 컴포넌트, 종목 교체 UI 연동 코드, TSK-007 원자재 위젯 프론트엔드 개발 원자재(금, 은, 원유 등) 데이터를 표시하는 위젯 컴포넌트를 개발한다. 종목 교체 구조를 적용하여 사용자가 표시할 원자재 종목을 선택/교체할 수 있도록 구현한다. 20.0 NOT_STARTED 개발자 100.0 1 TSK-003 FS 0, TSK-004 FS 0 2027-04-01 2027-04-02 원자재 위젯 컴포넌트, 종목 교체 UI 연동 코드, TSK-008 암호화폐 위젯 프론트엔드 개발 암호화폐 데이터를 표시하는 위젯 컴포넌트를 개발한다. 종목 교체 구조를 적용하여 사용자가 표시할 암호화폐 종목을 선택/교체할 수 있도록 구현한다. 20.0 NOT_STARTED 개발자 100.0 1 TSK-003 FS 0, TSK-004 FS 0 2027-04-03 2027-04-04 암호화폐 위젯 컴포넌트, 종목 교체 UI 연동 코드, TSK-009 대시보드 레이아웃 통합 및 기존 모듈 정합성 작업 신규 위젯(시장지수, 원자재, 암호화폐)을 기존 대시보드의 주식 시세/뉴스/종목정보 모듈과 함께 통합 배치한다. 반응형 레이아웃, 위젯 순서 조정, 그리드 시스템 정합성을 확보한다. 16.0 NOT_STARTED 개발자 100.0 1 TSK-006 FS 0, TSK-007 FS 0, TSK-008 FS 0 2027-04-05 2027-04-06 통합 대시보드 레이아웃 코드, 반응형 대응 코드, TSK-010 사용자 커스터마이징 설정 프론트엔드 연동 사용자가 위젯 배치, 종목 선택 등을 커스터마이징한 설정을 프론트엔드에서 저장/불러오기할 수 있도록 구현한다. 설정 변경 시 실시간 반영 및 초기 로딩 시 저장된 설정 복원 기능을 포함한다. 16.0 NOT_STARTED 개발자 100.0 1 TSK-005 FS 0, TSK-009 FS 0 2027-04-07 2027-04-08 설정 저장/불러오기 UI, 설정 연동 프론트엔드 코드, TSK-011 통합 테스트 케이스 설계 및 작성 대시보드 확장, 종목 교체, 커스터마이징 설정 저장, 레이아웃 정합성에 대한 통합 테스트 케이스를 설계하고 작성한다. 기존 모듈과의 회귀 테스트 항목을 포함한다. 16.0 NOT_STARTED QA 100.0 1 TSK-001 FS 0, TSK-003 FS 0 2027-04-09 2027-04-10 테스트 케이스 문서, 테스트 시나리오 목록, TSK-012 통합 QA 테스트 수행 작성된 테스트 케이스를 기반으로 전체 통합 대시보드에 대한 기능 테스트, 종목 교체 테스트, 커스터마이징 설정 저장/복원 테스트, 레이아웃 정합성 테스트, 크로스 브라우저 테스트를 수행한다. 24.0 NOT_STARTED QA 100.0 1 TSK-010 FS 0, TSK-011 FS 0 2027-04-11 2027-04-13 테스트 결과 보고서, 버그 리포트, TSK-013 QA 결함 수정 및 안정화 QA 테스트에서 발견된 결함을 수정하고, 재테스트를 수행하여 안정화한다. 성능 이슈 및 엣지 케이스를 포함한 최종 보완 작업을 진행한다. 16.0 NOT_STARTED 개발자 100.0 1 TSK-012 FS 0 2027-04-14 2027-04-15 결함 수정 코드, 재테스트 통과 확인서, TSK-014 최종 검수 및 릴리스 승인 모든 기능이 정상 동작하는지 최종 검수하고, 기존 모듈과의 정합성을 확인한 후 릴리스 승인을 진행한다. 8.0 NOT_STARTED PM 100.0 1 TSK-013 FS 0 2027-04-16 2027-04-16 최종 검수 보고서, 릴리스 승인서 2027-03-18 2027-04-16 | 2026-12-05 | 2027-04-16 | 확장 기능 개발 완료 | 국내 시장지수 표시 모듈, 해외 시장지수 표시 모듈, 금/은 시세 표시 모듈, 암호화폐 시세 표시 모듈, 통합 테스트 결과 |
| PH-004 | 기능 확장 - 뉴스 및 통합 | 뉴스 표시 기능 개발, 전체 모듈 통합 및 대시보드 위젯 커스터마이징 기능 구현 | 4 | WP-001 뉴스 표시 모듈 개발 주식 관련 뉴스 피드 수집, 파싱 및 표시 기능 구현. 종목별 뉴스 필터링, 실시간 뉴스 업데이트, 뉴스 카드 UI 컴포넌트 개발 포함 TSK-001 뉴스 데이터 모델 및 DB 설계 뉴스 기사 저장을 위한 데이터베이스 테이블 설계. 뉴스 제목, 본문, 출처, 발행일시, 관련 종목코드, 카테고리, 썸네일 URL 등 필드 정의 및 종목-뉴스 매핑 테이블 설계 12.0 NOT_STARTED 백엔드 개발자 100.0 1 TSK-014 FS 0 2027-04-17 2027-04-17 ERD, DDL 스크립트, 데이터 딕셔너리, TSK-002 뉴스 피드 소스 조사 및 수집 전략 수립 주식 관련 뉴스를 제공하는 외부 피드 소스(RSS, 뉴스 API, 증권사 피드 등) 조사. 각 소스별 데이터 형식, 호출 제한, 비용, 갱신 주기 분석 후 수집 전략 문서화 16.0 NOT_STARTED 백엔드 개발자 100.0 1 TSK-001 FS 0 2027-04-18 2027-04-19 뉴스 소스 분석 보고서, 수집 전략 문서, API 키 발급 목록, TSK-003 뉴스 카드 UI 디자인 뉴스 목록 및 개별 뉴스 카드 UI/UX 디자인. 뉴스 리스트 뷰, 카드형 뷰, 뉴스 상세 뷰 디자인. 반응형 레이아웃, 로딩/에러 상태, 빈 상태 디자인 포함 20.0 NOT_STARTED 디자이너 100.0 1 TSK-002 FS 0 2027-04-20 2027-04-21 뉴스 카드 UI 시안, 뉴스 목록 화면 시안, 뉴스 상세 화면 시안, 디자인 시스템 컴포넌트 정의서, TSK-004 뉴스 수집 크롤러/수집기 개발 외부 뉴스 소스로부터 주식 관련 뉴스를 주기적으로 수집하는 크롤러 및 수집기 모듈 개발. 스케줄링 기반 배치 수집 및 실시간 피드 구독 로직 구현 24.0 NOT_STARTED 백엔드 개발자 100.0 1 TSK-001 FS 0, TSK-002 FS 0 2027-04-22 2027-04-24 뉴스 수집기 소스코드, 스케줄러 설정 파일, 수집 로그 모듈, TSK-005 뉴스 파싱 및 정제 모듈 개발 수집된 원시 뉴스 데이터를 파싱하여 정형화된 형태로 변환. HTML 태그 제거, 본문 추출, 메타데이터 파싱, 중복 기사 감지 및 제거 로직 구현 20.0 NOT_STARTED 백엔드 개발자 100.0 1 TSK-004 FS 0 2027-04-25 2027-04-26 파싱 모듈 소스코드, 중복 감지 로직, 단위 테스트 코드, TSK-006 종목별 뉴스 매핑 및 필터링 엔진 개발 뉴스 기사 내 종목명/종목코드를 자동 인식하여 종목-뉴스 매핑 수행. 종목코드, 카테고리, 날짜 범위 기반 필터링 로직 및 관련도 점수 산출 알고리즘 구현 24.0 NOT_STARTED 백엔드 개발자 100.0 1 TSK-005 FS 0 2027-04-27 2027-04-29 종목 매핑 엔진 소스코드, 필터링 모듈, 관련도 점수 알고리즘 문서, TSK-007 뉴스 조회 REST API 개발 뉴스 목록 조회, 종목별 뉴스 조회, 뉴스 상세 조회, 뉴스 검색 API 엔드포인트 개발. 페이지네이션, 정렬, 필터링 파라미터 지원 20.0 NOT_STARTED 백엔드 개발자 100.0 1 TSK-006 FS 0 2027-04-30 2027-05-01 API 소스코드, API 명세서(Swagger), 단위 테스트 코드, TSK-008 실시간 뉴스 업데이트 기능 개발 WebSocket 또는 SSE 기반 실시간 뉴스 푸시 기능 구현. 신규 뉴스 발생 시 클라이언트에 즉시 알림 전송. 구독 종목 기반 선별적 푸시 로직 포함 24.0 NOT_STARTED 백엔드 개발자 100.0 1 TSK-007 FS 0 2027-05-02 2027-05-04 실시간 푸시 서버 모듈, WebSocket/SSE 엔드포인트, 연결 관리 로직, TSK-009 뉴스 카드 UI 컴포넌트 개발 디자인 시안 기반 뉴스 카드 프론트엔드 컴포넌트 개발. 뉴스 카드(썸네일, 제목, 요약, 출처, 시간), 뉴스 리스트, 로딩 스켈레톤, 빈 상태 컴포넌트 구현 20.0 NOT_STARTED 프론트엔드 개발자 100.0 1 TSK-003 FS 0 2027-05-05 2027-05-06 뉴스 카드 컴포넌트, 뉴스 리스트 컴포넌트, 스토리북 등록, TSK-010 뉴스 목록 및 필터링 화면 개발 뉴스 목록 페이지 프론트엔드 개발. 종목별 필터, 카테고리 필터, 날짜 필터 UI 구현. 무한 스크롤 또는 페이지네이션 적용. API 연동 및 상태 관리 24.0 NOT_STARTED 프론트엔드 개발자 100.0 1 TSK-007 FS 0, TSK-009 FS 0 2027-05-07 2027-05-09 뉴스 목록 페이지, 필터링 UI 컴포넌트, API 연동 서비스 레이어, TSK-011 뉴스 상세 화면 개발 뉴스 상세 보기 페이지 프론트엔드 개발. 뉴스 본문 렌더링, 관련 종목 태그 표시, 관련 뉴스 추천 영역, 원문 링크 연결 기능 구현 12.0 NOT_STARTED 프론트엔드 개발자 100.0 1 TSK-010 FS 0 2027-05-10 2027-05-10 뉴스 상세 페이지, 관련 뉴스 컴포넌트, TSK-012 실시간 뉴스 알림 프론트엔드 연동 WebSocket/SSE 클라이언트 연동으로 실시간 뉴스 수신 처리. 신규 뉴스 토스트 알림, 뉴스 목록 자동 갱신, 뱃지 카운트 업데이트 기능 구현 16.0 NOT_STARTED 프론트엔드 개발자 100.0 1 TSK-008 FS 0, TSK-010 FS 0 2027-05-11 2027-05-12 실시간 알림 컴포넌트, WebSocket 클라이언트 모듈, 자동 갱신 로직, TSK-013 뉴스 모듈 통합 테스트 뉴스 수집-파싱-저장-조회-표시 전체 흐름에 대한 통합 테스트 수행. API 응답 검증, 필터링 정확성, 실시간 업데이트 동작, 에러 핸들링 시나리오 테스트 20.0 NOT_STARTED QA 100.0 1 TSK-011 FS 0, TSK-012 FS 0 2027-05-13 2027-05-14 통합 테스트 케이스, 테스트 결과 보고서, 버그 리포트, TSK-014 성능 테스트 및 최적화 뉴스 목록 로딩 속도, 대량 뉴스 데이터 조회 성능, 실시간 푸시 동시 접속 부하 테스트 수행. 병목 구간 식별 후 캐싱, 인덱싱, 쿼리 최적화 적용 16.0 NOT_STARTED 백엔드 개발자 100.0 1 TSK-013 FS 0 2027-05-15 2027-05-16 성능 테스트 결과 보고서, 최적화 적용 내역, 캐싱 전략 문서, TSK-015 UI/UX 검수 및 크로스브라우저 테스트 디자인 시안 대비 구현 결과 검수. 주요 브라우저(Chrome, Safari, Firefox, Edge) 및 모바일 반응형 레이아웃 테스트. 접근성 검증 포함 12.0 NOT_STARTED QA 100.0 1 TSK-013 FS 0 2027-05-17 2027-05-17 UI 검수 체크리스트, 크로스브라우저 테스트 결과, 수정 요청 목록, TSK-016 최종 버그 수정 및 릴리즈 준비 통합 테스트 및 UI 검수에서 발견된 버그 수정. 코드 리뷰 반영, 배포 스크립트 확인, 릴리즈 노트 작성 16.0 NOT_STARTED 백엔드 개발자 100.0 1 TSK-014 FS 0, TSK-015 FS 0 2027-05-18 2027-05-19 버그 수정 완료 보고, 릴리즈 노트, 배포 체크리스트 2027-04-17 2027-05-19, WP-002 대시보드 위젯 통합 프레임워크 구축 대시보드 내 각 모듈(차트, 뉴스, 시세, 종목정보)을 위젯 단위로 배치·관리할 수 있는 통합 프레임워크 개발. 위젯 레이아웃 엔진, 드래그앤드롭 배치, 위젯 크기 조절 기능 구현 TSK-001 위젯 프레임워크 요구사항 분석 및 설계 대시보드 위젯 통합 프레임워크의 전체 요구사항을 분석하고, 위젯 구조(차트, 뉴스, 시세, 종목정보)에 대한 아키텍처 설계 문서를 작성한다. 위젯 라이프사이클, 상태 관리 방식, 모듈 간 통신 규격을 정의한다. 16.0 NOT_STARTED PM 100.0 1 TSK-016 FS 0 2027-05-20 2027-05-21 요구사항 정의서, 위젯 프레임워크 아키텍처 설계서, 위젯 라이프사이클 명세서, TSK-002 위젯 UI/UX 디자인 위젯 컨테이너, 헤더, 리사이즈 핸들, 드래그 인디케이터 등 공통 위젯 UI 컴포넌트의 디자인 시안을 작성한다. 위젯 배치 그리드 시스템, 반응형 레이아웃 breakpoint, 드래그앤드롭 시 시각적 피드백을 포함한다. 24.0 NOT_STARTED 디자이너 100.0 1 TSK-001 FS 0 2027-05-22 2027-05-24 위젯 UI 디자인 시안, 디자인 시스템 컴포넌트 정의서, 인터랙션 프로토타입, TSK-003 위젯 데이터 모델 및 상태 관리 설계 위젯 인스턴스의 데이터 모델(위치, 크기, 타입, 설정값 등)을 정의하고, 위젯 상태를 저장·복원하기 위한 스토어 구조를 설계한다. 사용자별 레이아웃 저장을 위한 DB 스키마 또는 로컬 스토리지 구조를 포함한다. 12.0 NOT_STARTED 개발자 100.0 1 TSK-001 FS 0 2027-05-25 2027-05-25 위젯 데이터 모델 명세, 상태 관리 구조 설계서, 레이아웃 저장 스키마, TSK-004 그리드 레이아웃 엔진 개발 위젯을 배치할 수 있는 그리드 기반 레이아웃 엔진을 구현한다. 행·열 단위의 그리드 시스템, 위젯 간 충돌 감지 및 자동 재배치 로직, 반응형 그리드 리사이즈 처리를 포함한다. 32.0 NOT_STARTED 개발자 100.0 1 TSK-002 FS 0, TSK-003 FS 0 2027-05-26 2027-05-29 그리드 레이아웃 엔진 모듈, 그리드 설정 API, 단위 테스트 코드, TSK-005 드래그앤드롭 배치 기능 구현 위젯을 마우스 드래그로 이동하여 그리드 내 원하는 위치에 배치할 수 있는 기능을 구현한다. 드래그 시작·이동·종료 이벤트 처리, 드롭 위치 스냅 처리, 드래그 중 플레이스홀더 표시, 다른 위젯과의 자동 밀어내기 로직을 포함한다. 24.0 NOT_STARTED 개발자 100.0 1 TSK-004 FS 0 2027-05-30 2027-06-01 드래그앤드롭 모듈, 플레이스홀더 컴포넌트, 단위 테스트 코드, TSK-006 위젯 크기 조절(리사이즈) 기능 구현 위젯의 가장자리 또는 모서리를 드래그하여 크기를 조절할 수 있는 기능을 구현한다. 최소·최대 크기 제한, 리사이즈 중 실시간 미리보기, 인접 위젯과의 충돌 처리 및 재배치 로직을 포함한다. 20.0 NOT_STARTED 개발자 100.0 1 TSK-004 FS 0 2027-06-02 2027-06-03 리사이즈 핸들러 모듈, 크기 제약 설정 API, 단위 테스트 코드, TSK-007 위젯 컨테이너 공통 컴포넌트 개발 모든 위젯이 공유하는 공통 컨테이너 컴포넌트를 개발한다. 위젯 헤더(제목, 설정 버튼, 닫기 버튼), 로딩 상태 표시, 에러 상태 표시, 위젯 설정 패널 등의 공통 UI를 구현한다. 16.0 NOT_STARTED 개발자 100.0 1 TSK-002 FS 0, TSK-003 FS 0 2027-06-04 2027-06-05 위젯 컨테이너 컴포넌트, 위젯 공통 스타일시트, 컴포넌트 스토리북, TSK-008 위젯 등록 및 팩토리 시스템 개발 차트, 뉴스, 시세, 종목정보 등 다양한 위젯 타입을 등록하고 동적으로 생성할 수 있는 위젯 레지스트리 및 팩토리 패턴을 구현한다. 위젯 타입별 메타데이터 관리, 위젯 추가/제거 API를 포함한다. 16.0 NOT_STARTED 개발자 100.0 1 TSK-003 FS 0 2027-06-06 2027-06-07 위젯 레지스트리 모듈, 위젯 팩토리 모듈, 위젯 타입 인터페이스 정의, 단위 테스트 코드, TSK-009 레이아웃 저장 및 복원 기능 개발 사용자가 구성한 위젯 레이아웃(위치, 크기, 설정)을 저장하고, 페이지 재방문 시 복원하는 기능을 구현한다. 기본 레이아웃 프리셋 제공, 레이아웃 초기화 기능, 저장 API 연동을 포함한다. 16.0 NOT_STARTED 개발자 100.0 1 TSK-004 FS 0, TSK-008 FS 0 2027-06-08 2027-06-09 레이아웃 직렬화/역직렬화 모듈, 레이아웃 저장 API 연동 코드, 기본 프리셋 설정 파일, TSK-010 차트 위젯 어댑터 개발 기존 차트 모듈을 위젯 프레임워크에 통합하기 위한 어댑터를 개발한다. 차트 위젯의 리사이즈 대응, 차트 타입·종목 설정 패널, 데이터 갱신 주기 관리를 포함한다. 16.0 NOT_STARTED 개발자 100.0 1 TSK-007 FS 0, TSK-008 FS 0 2027-06-10 2027-06-11 차트 위젯 어댑터 모듈, 차트 위젯 설정 컴포넌트, TSK-011 뉴스 위젯 어댑터 개발 기존 뉴스 모듈을 위젯 프레임워크에 통합하기 위한 어댑터를 개발한다. 뉴스 목록 표시, 카테고리 필터 설정, 자동 갱신 처리를 포함한다. 12.0 NOT_STARTED 개발자 100.0 1 TSK-007 FS 0, TSK-008 FS 0 2027-06-12 2027-06-12 뉴스 위젯 어댑터 모듈, 뉴스 위젯 설정 컴포넌트, TSK-012 시세 위젯 어댑터 개발 기존 시세 모듈을 위젯 프레임워크에 통합하기 위한 어댑터를 개발한다. 실시간 시세 데이터 바인딩, 시세 표시 형식 설정, 위젯 크기에 따른 표시 항목 조정을 포함한다. 12.0 NOT_STARTED 개발자 100.0 1 TSK-007 FS 0, TSK-008 FS 0 2027-06-13 2027-06-13 시세 위젯 어댑터 모듈, 시세 위젯 설정 컴포넌트, TSK-013 종목정보 위젯 어댑터 개발 기존 종목정보 모듈을 위젯 프레임워크에 통합하기 위한 어댑터를 개발한다. 종목 검색·선택 기능, 종목 상세 정보 표시, 위젯 간 종목 연동(예: 차트 위젯과 동기화)을 포함한다. 16.0 NOT_STARTED 개발자 100.0 1 TSK-007 FS 0, TSK-008 FS 0 2027-06-14 2027-06-15 종목정보 위젯 어댑터 모듈, 종목정보 위젯 설정 컴포넌트, TSK-014 위젯 간 통신 및 이벤트 버스 구현 위젯 간 데이터 연동을 위한 이벤트 버스 시스템을 구현한다. 예를 들어, 종목정보 위젯에서 종목을 선택하면 차트·시세 위젯이 연동되어 해당 종목 데이터로 갱신되는 기능을 지원한다. 16.0 NOT_STARTED 개발자 100.0 1 TSK-008 FS 0 2027-06-16 2027-06-17 이벤트 버스 모듈, 위젯 간 통신 프로토콜 명세, 단위 테스트 코드, TSK-015 위젯 프레임워크 통합 테스트 그리드 레이아웃, 드래그앤드롭, 리사이즈, 위젯 추가/삭제, 레이아웃 저장/복원, 위젯 간 통신 등 전체 프레임워크 기능에 대한 통합 테스트를 수행한다. 크로스 브라우저 호환성 검증을 포함한다. 24.0 NOT_STARTED QA 100.0 1 TSK-005 FS 0, TSK-006 FS 0, TSK-009 FS 0, TSK-010 FS 0, TSK-011 FS 0, TSK-012 FS 0, TSK-013 FS 0, TSK-014 FS 0 2027-06-18 2027-06-20 통합 테스트 시나리오, 테스트 결과 보고서, 버그 리포트, TSK-016 성능 최적화 및 메모리 관리 다수의 위젯이 동시에 렌더링될 때의 성능을 측정하고 최적화한다. 뷰포트 밖 위젯의 지연 렌더링(가상화), 위젯 제거 시 메모리 누수 방지, 드래그/리사이즈 시 프레임 드롭 최소화를 포함한다. 20.0 NOT_STARTED 개발자 100.0 1 TSK-015 FS 0 2027-06-21 2027-06-22 성능 프로파일링 결과, 최적화 적용 코드, 성능 벤치마크 보고서, TSK-017 위젯 프레임워크 문서화 및 개발 가이드 작성 위젯 프레임워크 사용법, 신규 위젯 개발 가이드, API 레퍼런스 문서를 작성한다. 향후 다른 개발자가 새로운 위젯을 추가할 수 있도록 위젯 인터페이스 규격과 예제 코드를 제공한다. 12.0 NOT_STARTED 개발자 100.0 1 TSK-015 FS 0 2027-06-23 2027-06-23 위젯 프레임워크 개발 가이드, API 레퍼런스 문서, 샘플 위젯 예제 코드 2027-05-20 2027-06-23, WP-003 위젯 커스터마이징 기능 개발 사용자별 대시보드 위젯 구성 저장·복원 기능, 위젯 추가/삭제/순서변경 UI, 사용자 설정 프리셋 관리 기능 구현 TSK-001 위젯 커스터마이징 요구사항 분석 및 화면 설계 사용자 대시보드 위젯 커스터마이징 기능에 대한 상세 요구사항 정의, 사용자 시나리오 작성, 화면 흐름도(wireframe) 설계 16.0 NOT_STARTED PM 100.0 1 TSK-017 FS 0 2027-06-24 2027-06-25 상세 요구사항 명세서, 사용자 시나리오 문서, 화면 흐름도, TSK-002 위젯 커스터마이징 UI/UX 디자인 위젯 추가/삭제/순서변경 인터랙션 디자인, 프리셋 관리 UI 디자인, 드래그앤드롭 등 인터랙션 패턴 정의, 디자인 시스템 컴포넌트 정의 24.0 NOT_STARTED 디자이너 100.0 1 TSK-001 FS 0 2027-06-26 2027-06-28 UI 디자인 시안, 인터랙션 가이드, 디자인 토큰 및 컴포넌트 명세, TSK-003 위젯 구성 데이터 모델 및 DB 설계 사용자별 위젯 구성 정보(위젯 종류, 순서, 크기, 설정값), 프리셋 정보를 저장하기 위한 데이터 모델 설계 및 DB 테이블(스키마) 정의 12.0 NOT_STARTED 개발자 100.0 1 TSK-001 FS 0 2027-06-29 2027-06-29 ERD, DDL 스크립트, 데이터 모델 문서, TSK-004 위젯 구성 저장·복원 API 개발 사용자별 대시보드 위젯 구성(레이아웃, 위젯 목록, 순서, 개별 설정값)을 저장하고 복원하는 REST API 엔드포인트 구현. 생성/조회/수정 기능 포함 20.0 NOT_STARTED 개발자 100.0 1 TSK-003 FS 0 2027-06-30 2027-07-01 API 소스 코드, API 명세서(Swagger/OpenAPI), 단위 테스트 코드, TSK-005 위젯 추가/삭제 API 개발 대시보드에 위젯을 추가하거나 삭제하는 API 구현. 사용 가능한 위젯 목록 조회, 위젯 추가, 위젯 삭제 엔드포인트 개발 16.0 NOT_STARTED 개발자 100.0 1 TSK-003 FS 0 2027-07-02 2027-07-03 API 소스 코드, API 명세서, 단위 테스트 코드, TSK-006 위젯 순서변경 API 개발 사용자가 위젯 순서를 변경(드래그앤드롭 등)한 결과를 반영하는 API 구현. 벌크 순서 업데이트 및 부분 순서 변경 지원 12.0 NOT_STARTED 개발자 100.0 1 TSK-003 FS 0 2027-07-04 2027-07-04 API 소스 코드, API 명세서, 단위 테스트 코드, TSK-007 프리셋 관리 API 개발 사용자 설정 프리셋 CRUD API 구현. 프리셋 생성, 조회, 수정, 삭제, 프리셋 적용(현재 대시보드에 프리셋 로드) 기능 포함 20.0 NOT_STARTED 개발자 100.0 1 TSK-004 FS 0 2027-07-05 2027-07-06 API 소스 코드, API 명세서, 단위 테스트 코드, TSK-008 위젯 추가/삭제 프론트엔드 UI 개발 위젯 추가 다이얼로그(사용 가능한 위젯 목록, 검색/필터, 미리보기), 위젯 삭제 확인 UI 구현. 디자인 시안 기반 컴포넌트 개발 20.0 NOT_STARTED 개발자 100.0 1 TSK-002 FS 0, TSK-005 FS 0 2027-07-07 2027-07-08 프론트엔드 소스 코드, 컴포넌트 스토리북, TSK-009 위젯 드래그앤드롭 순서변경 프론트엔드 개발 대시보드 내 위젯의 드래그앤드롭 순서 변경 기능 구현. 드래그 핸들, 드롭 영역 표시, 애니메이션, 순서 변경 후 서버 동기화 처리 24.0 NOT_STARTED 개발자 100.0 1 TSK-002 FS 0, TSK-006 FS 0 2027-07-09 2027-07-11 프론트엔드 소스 코드, 컴포넌트 스토리북, TSK-010 위젯 구성 저장·복원 프론트엔드 연동 페이지 진입 시 저장된 위젯 구성 자동 복원, 변경 사항 자동/수동 저장 로직, 저장 상태 표시(저장 중/완료/실패) UI 구현 16.0 NOT_STARTED 개발자 100.0 1 TSK-004 FS 0, TSK-008 FS 0, TSK-009 FS 0 2027-07-12 2027-07-13 프론트엔드 소스 코드, 상태 관리 로직, TSK-011 프리셋 관리 프론트엔드 UI 개발 프리셋 목록 조회, 프리셋 저장(현재 구성을 프리셋으로), 프리셋 적용, 프리셋 삭제, 프리셋 이름 편집 UI 구현 20.0 NOT_STARTED 개발자 100.0 1 TSK-002 FS 0, TSK-007 FS 0, TSK-010 FS 0 2027-07-14 2027-07-15 프론트엔드 소스 코드, 컴포넌트 스토리북, TSK-012 통합 테스트 케이스 작성 위젯 커스터마이징 전체 기능에 대한 통합 테스트 케이스 작성. 위젯 추가/삭제/순서변경, 저장/복원, 프리셋 관리 시나리오 포함. 경계값, 예외 상황 테스트 포함 16.0 NOT_STARTED QA 100.0 1 TSK-001 FS 0 2027-07-16 2027-07-17 통합 테스트 케이스 문서, 테스트 체크리스트, TSK-013 통합 테스트 수행 및 버그 리포팅 작성된 테스트 케이스 기반 통합 테스트 수행. 기능 테스트, 크로스 브라우저 테스트, 반응형 테스트 진행. 발견된 결함 등록 및 추적 24.0 NOT_STARTED QA 100.0 1 TSK-010 FS 0, TSK-011 FS 0, TSK-012 FS 0 2027-07-18 2027-07-20 테스트 수행 결과 보고서, 버그 리포트, TSK-014 버그 수정 및 안정화 QA 테스트에서 발견된 결함 수정. 프론트엔드/백엔드 버그픽스, 엣지케이스 처리, 성능 최적화 등 안정화 작업 수행 24.0 NOT_STARTED 개발자 100.0 1 TSK-013 FS 0 2027-07-21 2027-07-23 수정된 소스 코드, 버그 수정 확인 결과, TSK-015 최종 검증 및 릴리스 승인 버그 수정 후 재테스트(리그레션 테스트) 수행, 전체 기능 최종 검증, 릴리스 체크리스트 확인 및 승인 12.0 NOT_STARTED QA 100.0 1 TSK-014 FS 0 2027-07-24 2027-07-24 최종 테스트 보고서, 릴리스 승인 문서 2027-06-24 2027-07-24, WP-004 시세 모듈 통합 및 위젯화 국내주식 시세, 금/은 시세, 암호화폐 시세 모듈을 대시보드 위젯으로 통합. 각 시세 위젯의 실시간 데이터 스트리밍 연동 및 통일된 UI 패턴 적용 TSK-001 시세 위젯 통합 요구사항 분석 및 설계 국내주식, 금/은, 암호화폐 시세 모듈의 현행 구조 분석 및 위젯 통합 아키텍처 설계. 공통 인터페이스 정의, 데이터 흐름 설계, 실시간 스트리밍 프로토콜 선정 16.0 NOT_STARTED PM 100.0 1 TSK-015 FS 0 2027-07-25 2027-07-26 요구사항 정의서, 위젯 통합 아키텍처 설계서, 데이터 흐름도, TSK-002 통일된 위젯 UI/UX 디자인 국내주식, 금/은, 암호화폐 시세 위젯의 통일된 UI 패턴 설계. 대시보드 레이아웃, 위젯 크기 조절, 실시간 데이터 표시 방식, 로딩/에러 상태 등 공통 디자인 시스템 수립 24.0 NOT_STARTED 디자이너 100.0 1 TSK-001 FS 0 2027-07-27 2027-07-29 위젯 디자인 시안, UI 컴포넌트 가이드, 인터랙션 명세서, TSK-003 공통 위젯 프레임워크 개발 시세 위젯들의 공통 기반 프레임워크 개발. 위젯 컨테이너, 공통 상태 관리, 실시간 데이터 스트리밍 추상화 레이어, 위젯 라이프사이클 관리 구현 32.0 NOT_STARTED 개발자 100.0 1 TSK-001 FS 0, TSK-002 FS 0 2027-07-30 2027-08-02 공통 위젯 베이스 컴포넌트, 스트리밍 추상화 모듈, 상태 관리 모듈, TSK-004 국내주식 시세 데이터 스트리밍 연동 국내주식 시세 데이터 소스와 실시간 스트리밍 연동 구현. WebSocket 또는 SSE 기반 실시간 호가/체결 데이터 수신, 데이터 정규화 처리 24.0 NOT_STARTED 개발자 100.0 1 TSK-003 FS 0 2027-08-03 2027-08-05 국내주식 스트리밍 어댑터, 데이터 정규화 모듈, 연동 테스트 코드, TSK-005 국내주식 시세 위젯 개발 국내주식 시세 표시 위젯 UI 구현. 종목 검색, 현재가, 등락률, 거래량, 차트 미니뷰 등 표시. 통일된 UI 패턴 적용 24.0 NOT_STARTED 개발자 100.0 1 TSK-004 FS 0, TSK-002 FS 0 2027-08-06 2027-08-08 국내주식 위젯 컴포넌트, 위젯 설정 패널, TSK-006 금/은 시세 데이터 스트리밍 연동 금/은 시세 데이터 소스와 실시간 스트리밍 연동 구현. 국제 금/은 시세 API 연동, 원화 환산 처리, 데이터 정규화 16.0 NOT_STARTED 개발자 100.0 1 TSK-003 FS 0 2027-08-09 2027-08-10 금/은 스트리밍 어댑터, 환율 환산 모듈, 연동 테스트 코드, TSK-007 금/은 시세 위젯 개발 금/은 시세 표시 위젯 UI 구현. 금/은 현재가, 등락률, 국제 시세, 원화 환산가, 추이 차트 등 표시. 통일된 UI 패턴 적용 20.0 NOT_STARTED 개발자 100.0 1 TSK-006 FS 0, TSK-002 FS 0 2027-08-11 2027-08-12 금/은 위젯 컴포넌트, 위젯 설정 패널, TSK-008 암호화폐 시세 데이터 스트리밍 연동 암호화폐 시세 데이터 소스와 실시간 스트리밍 연동 구현. 주요 거래소 API 연동, 다중 코인 실시간 시세 수신, 데이터 정규화 20.0 NOT_STARTED 개발자 100.0 1 TSK-003 FS 0 2027-08-13 2027-08-14 암호화폐 스트리밍 어댑터, 다중 거래소 통합 모듈, 연동 테스트 코드, TSK-009 암호화폐 시세 위젯 개발 암호화폐 시세 표시 위젯 UI 구현. 코인 목록, 현재가, 등락률, 거래량, 미니 차트 등 표시. 통일된 UI 패턴 적용 24.0 NOT_STARTED 개발자 100.0 1 TSK-008 FS 0, TSK-002 FS 0 2027-08-15 2027-08-17 암호화폐 위젯 컴포넌트, 위젯 설정 패널, TSK-010 대시보드 위젯 배치 및 관리 기능 개발 대시보드에서 시세 위젯 추가/삭제/배치/크기 조절 기능 구현. 드래그 앤 드롭 레이아웃, 위젯 설정 저장/복원, 반응형 그리드 시스템 24.0 NOT_STARTED 개발자 100.0 1 TSK-003 FS 0 2027-08-18 2027-08-20 대시보드 레이아웃 관리자, 위젯 설정 저장 모듈, 반응형 그리드 컴포넌트, TSK-011 위젯 간 연동 및 크로스 기능 개발 시세 위젯 간 상호 연동 기능 구현. 포트폴리오 종합 뷰, 위젯 간 데이터 연계, 알림 설정 등 크로스 위젯 기능 개발 16.0 NOT_STARTED 개발자 100.0 1 TSK-005 FS 0, TSK-007 FS 0, TSK-009 FS 0, TSK-010 FS 0 2027-08-21 2027-08-22 위젯 간 이벤트 버스, 종합 포트폴리오 뷰, 알림 설정 모듈, TSK-012 실시간 스트리밍 성능 최적화 다수의 시세 위젯 동시 운영 시 성능 최적화. 데이터 스트리밍 연결 풀링, 렌더링 최적화, 메모리 관리, 배터리/네트워크 효율화 20.0 NOT_STARTED 개발자 100.0 1 TSK-005 FS 0, TSK-007 FS 0, TSK-009 FS 0 2027-08-23 2027-08-24 성능 최적화 코드, 성능 벤치마크 보고서, TSK-013 통합 테스트 및 QA 전체 시세 위젯 통합 테스트 수행. 실시간 데이터 정합성 검증, 위젯 간 상호작용 테스트, 대시보드 레이아웃 테스트, 크로스 브라우저 호환성, 부하 테스트 32.0 NOT_STARTED QA 100.0 1 TSK-011 FS 0, TSK-012 FS 0 2027-08-25 2027-08-28 테스트 케이스 문서, 테스트 결과 보고서, 버그 리포트, TSK-014 버그 수정 및 안정화 QA 단계에서 발견된 버그 수정 및 안정화 작업. 실시간 데이터 유실 처리, 예외 상황 대응, UI 깨짐 수정 등 24.0 NOT_STARTED 개발자 100.0 1 TSK-013 FS 0 2027-08-29 2027-08-31 버그 수정 코드, 수정 확인 보고서, TSK-015 최종 검수 및 배포 준비 최종 기능 검수, 배포 가이드 작성, 운영 모니터링 설정. 위젯 사용 가이드 문서화 포함 12.0 NOT_STARTED PM 100.0 1 TSK-014 FS 0 2027-09-01 2027-09-01 최종 검수 보고서, 배포 가이드, 운영 모니터링 설정서, 사용자 가이드 2027-07-25 2027-09-01, WP-005 시장지수 모듈 통합 및 위젯화 국내 시장지수 및 해외 시장지수 모듈을 대시보드 위젯으로 통합. 지수 차트 미니뷰, 등락률 표시, 글로벌 마켓 오버뷰 위젯 구현 TSK-001 시장지수 위젯 요구사항 분석 및 설계 국내/해외 시장지수 모듈의 현행 기능 분석, 위젯 통합 요구사항 정의, 데이터 흐름 설계 및 위젯 컴포넌트 구조 설계 16.0 NOT_STARTED PM 100.0 1 TSK-015 FS 0 2027-09-02 2027-09-03 요구사항 정의서, 위젯 컴포넌트 구조도, 데이터 흐름도, TSK-002 시장지수 위젯 UI/UX 디자인 지수 차트 미니뷰, 등락률 표시, 글로벌 마켓 오버뷰 위젯의 UI/UX 디자인. 대시보드 내 위젯 배치 레이아웃, 반응형 디자인, 색상 체계(상승/하락) 정의 24.0 NOT_STARTED 디자이너 100.0 1 TSK-001 FS 0 2027-09-04 2027-09-06 위젯 디자인 시안, 디자인 가이드, 인터랙션 명세서, TSK-003 시장지수 데이터 API 통합 설계 및 개발 국내 시장지수(KOSPI, KOSDAQ 등) 및 해외 시장지수(S&P500, NASDAQ, 니케이 등) 데이터를 통합 조회하는 백엔드 API 설계 및 개발. 실시간/지연 데이터 처리, 캐싱 전략 수립 24.0 NOT_STARTED 백엔드 개발자 100.0 1 TSK-001 FS 0 2027-09-07 2027-09-09 통합 API 엔드포인트, API 명세서, 캐싱 로직, TSK-004 지수 차트 미니뷰 위젯 프론트엔드 개발 대시보드 내 시장지수 차트를 미니 사이즈로 표시하는 위젯 컴포넌트 개발. 일간/주간/월간 차트 전환, 실시간 데이터 업데이트, 차트 라이브러리 연동 32.0 NOT_STARTED 프론트엔드 개발자 100.0 1 TSK-002 FS 0, TSK-003 FS 0 2027-09-10 2027-09-13 차트 미니뷰 위젯 컴포넌트, 차트 렌더링 모듈, TSK-005 등락률 표시 위젯 프론트엔드 개발 국내/해외 주요 지수의 현재가, 전일대비 등락률, 등락 방향을 실시간으로 표시하는 위젯 개발. 색상 코딩(상승 빨강, 하락 파랑), 애니메이션 효과 적용 20.0 NOT_STARTED 프론트엔드 개발자 100.0 1 TSK-002 FS 0, TSK-003 FS 0 2027-09-14 2027-09-15 등락률 위젯 컴포넌트, 실시간 업데이트 로직, TSK-006 글로벌 마켓 오버뷰 위젯 프론트엔드 개발 전 세계 주요 시장지수를 한눈에 파악할 수 있는 오버뷰 위젯 개발. 지역별(아시아, 유럽, 미주) 그룹핑, 장 운영 상태(개장/폐장) 표시, 타임존 처리 28.0 NOT_STARTED 프론트엔드 개발자 100.0 1 TSK-002 FS 0, TSK-003 FS 0 2027-09-16 2027-09-18 글로벌 마켓 오버뷰 위젯 컴포넌트, 타임존 처리 유틸리티, TSK-007 대시보드 위젯 프레임워크 통합 개발된 3개 위젯(차트 미니뷰, 등락률, 글로벌 오버뷰)을 대시보드 위젯 프레임워크에 통합. 위젯 드래그앤드롭 배치, 크기 조절, 사용자별 레이아웃 저장 기능 연동 20.0 NOT_STARTED 프론트엔드 개발자 100.0 1 TSK-004 FS 0, TSK-005 FS 0, TSK-006 FS 0 2027-09-19 2027-09-20 대시보드 통합 코드, 위젯 설정 저장 API 연동, TSK-008 실시간 데이터 스트리밍 연동 WebSocket 또는 SSE를 활용한 시장지수 실시간 데이터 스트리밍 구현. 연결 끊김 복구, 재연결 로직, 데이터 정합성 보장 20.0 NOT_STARTED 백엔드 개발자 100.0 1 TSK-003 FS 0 2027-09-21 2027-09-22 실시간 스트리밍 서버 모듈, 클라이언트 연동 모듈, TSK-009 위젯 단위 테스트 및 통합 테스트 각 위젯 컴포넌트의 단위 테스트 작성 및 실행. API 연동 통합 테스트, 실시간 데이터 업데이트 테스트, 엣지 케이스(데이터 없음, 네트워크 오류 등) 검증 24.0 NOT_STARTED QA 100.0 1 TSK-007 FS 0, TSK-008 FS 0 2027-09-23 2027-09-25 테스트 케이스 문서, 테스트 결과 보고서, 버그 리포트, TSK-010 크로스 브라우저 및 반응형 테스트 주요 브라우저(Chrome, Safari, Edge, Firefox) 및 다양한 해상도에서의 위젯 렌더링 테스트. 모바일 환경 위젯 표시 검증, 성능 테스트(렌더링 속도, 메모리 사용량) 16.0 NOT_STARTED QA 100.0 1 TSK-009 FS 0 2027-09-26 2027-09-27 크로스 브라우저 테스트 결과, 성능 테스트 보고서, TSK-011 디자인 QA 및 UI 보정 구현된 위젯의 디자인 시안 대비 픽셀 퍼펙트 검수. 색상, 폰트, 간격, 애니메이션 등 디자인 가이드 준수 여부 확인 및 보정 12.0 NOT_STARTED 디자이너 100.0 1 TSK-007 FS 0 2027-09-28 2027-09-28 디자인 QA 체크리스트, 보정 요청 목록, TSK-012 최종 통합 검증 및 릴리즈 준비 전체 위젯 통합 상태 최종 검증, 스테이징 환경 배포 및 검증, 릴리즈 노트 작성, 운영 모니터링 대시보드 설정 12.0 NOT_STARTED PM 100.0 1 TSK-009 FS 0, TSK-010 FS 0, TSK-011 FS 0 2027-09-29 2027-09-29 릴리즈 노트, 배포 체크리스트, 모니터링 설정 문서 2027-09-02 2027-09-29, WP-006 차트 및 종목정보 모듈 통합 주식 차트 모듈과 종목 상세정보 모듈을 대시보드 위젯으로 통합. 종목 교체 시 차트·종목정보·뉴스 위젯 간 연동 데이터 동기화 구현 TSK-001 통합 요구사항 분석 및 설계 주식 차트 모듈, 종목 상세정보 모듈, 뉴스 위젯 간 데이터 연동 요구사항을 분석하고 통합 아키텍처를 설계. 위젯 간 데이터 흐름, 이벤트 버스 구조, 상태 관리 전략 수립 16.0 NOT_STARTED PM 100.0 1 TSK-012 FS 0 2027-09-30 2027-10-01 요구사항 정의서, 통합 아키텍처 설계서, 데이터 흐름도, 위젯 간 이벤트 명세서, TSK-002 위젯 통합 UI/UX 설계 대시보드 내 차트·종목정보·뉴스 위젯 레이아웃 설계. 종목 교체 시 위젯 간 전환 인터랙션, 로딩 상태, 에러 상태 UI 디자인 24.0 NOT_STARTED 디자이너 100.0 1 TSK-001 FS 0 2027-10-02 2027-10-04 위젯 레이아웃 디자인, 인터랙션 프로토타입, UI 컴포넌트 스타일 가이드, TSK-003 위젯 간 공유 상태 관리 모듈 개발 종목 코드를 중심으로 차트·종목정보·뉴스 위젯이 공유하는 글로벌 상태 관리 모듈 구현. 종목 변경 이벤트 발행/구독 패턴(이벤트 버스 또는 상태 스토어) 개발 24.0 NOT_STARTED 개발자 100.0 1 TSK-001 FS 0 2027-10-05 2027-10-07 상태 관리 모듈 코드, 이벤트 버스 모듈 코드, 모듈 API 문서, TSK-004 차트 모듈 위젯화 및 연동 인터페이스 구현 기존 주식 차트 모듈을 대시보드 위젯 규격에 맞게 래핑. 공유 상태 모듈과 연동하여 종목 변경 이벤트 수신 시 차트 데이터 자동 갱신 기능 구현 32.0 NOT_STARTED 개발자 100.0 1 TSK-002 FS 0, TSK-003 FS 0 2027-10-08 2027-10-11 차트 위젯 컴포넌트 코드, 차트 데이터 동기화 로직, TSK-005 종목 상세정보 모듈 위젯화 및 연동 인터페이스 구현 기존 종목 상세정보 모듈을 대시보드 위젯 규격에 맞게 래핑. 종목 변경 이벤트 수신 시 종목 기본정보, 재무정보, 투자지표 등 자동 갱신 기능 구현 24.0 NOT_STARTED 개발자 100.0 1 TSK-002 FS 0, TSK-003 FS 0 2027-10-12 2027-10-14 종목정보 위젯 컴포넌트 코드, 종목정보 데이터 동기화 로직, TSK-006 뉴스 위젯 연동 인터페이스 구현 뉴스 위젯이 종목 변경 이벤트를 수신하여 해당 종목 관련 뉴스를 자동 필터링/갱신하도록 연동 인터페이스 구현 16.0 NOT_STARTED 개발자 100.0 1 TSK-002 FS 0, TSK-003 FS 0 2027-10-15 2027-10-16 뉴스 위젯 연동 코드, 종목별 뉴스 필터링 로직, TSK-007 종목 교체 UI 및 검색 기능 통합 대시보드 상단 또는 위젯 헤더에 종목 교체(검색/선택) UI 구현. 종목 선택 시 공유 상태 업데이트를 트리거하여 전체 위젯 동기화 시작 20.0 NOT_STARTED 개발자 100.0 1 TSK-002 FS 0, TSK-003 FS 0 2027-10-17 2027-10-18 종목 검색/선택 컴포넌트 코드, 종목 교체 트리거 로직, TSK-008 위젯 간 데이터 동기화 및 로딩 상태 처리 종목 교체 시 모든 위젯의 데이터 로딩 동기화 처리. 개별 위젯 로딩/에러/빈 상태 관리, 데이터 패칭 실패 시 재시도 로직, 위젯 간 로딩 순서 제어 24.0 NOT_STARTED 개발자 100.0 1 TSK-004 FS 0, TSK-005 FS 0, TSK-006 FS 0, TSK-007 FS 0 2027-10-19 2027-10-21 동기화 제어 로직 코드, 에러 핸들링 모듈 코드, TSK-009 단위 테스트 및 통합 테스트 작성 상태 관리 모듈, 이벤트 버스, 각 위젯 연동 인터페이스에 대한 단위 테스트 작성. 종목 교체 시나리오 기반 위젯 간 통합 테스트 작성 24.0 NOT_STARTED 개발자 100.0 1 TSK-008 FS 0 2027-10-22 2027-10-24 단위 테스트 코드, 통합 테스트 코드, 테스트 커버리지 리포트, TSK-010 QA 테스트 계획 수립 및 테스트 케이스 작성 위젯 통합 기능에 대한 QA 테스트 계획 수립. 종목 교체 동기화, 위젯 간 데이터 정합성, 엣지 케이스(빠른 연속 종목 교체, 네트워크 오류 등) 테스트 케이스 작성 16.0 NOT_STARTED QA 100.0 1 TSK-001 FS 0, TSK-002 FS 0 2027-10-25 2027-10-26 테스트 계획서, 테스트 케이스 문서, TSK-011 QA 기능 테스트 수행 작성된 테스트 케이스 기반으로 위젯 통합 기능 전체 QA 수행. 종목 교체 시 차트·종목정보·뉴스 위젯 간 데이터 동기화 정합성 검증, 크로스 브라우저 테스트, 성능 테스트 24.0 NOT_STARTED QA 100.0 1 TSK-009 FS 0, TSK-010 FS 0 2027-10-27 2027-10-29 테스트 실행 결과 보고서, 버그 리포트, TSK-012 버그 수정 및 최종 검증 QA에서 발견된 버그 수정. 수정 후 리그레션 테스트 수행 및 최종 기능 검증 완료 24.0 NOT_STARTED 개발자 100.0 1 TSK-011 FS 0 2027-10-30 2027-11-01 버그 수정 코드, 리그레션 테스트 결과, TSK-013 최종 QA 리그레션 확인 및 릴리스 승인 버그 수정 완료 후 최종 리그레션 테스트 수행. 모든 테스트 케이스 통과 확인 및 릴리스 승인 처리 8.0 NOT_STARTED QA 100.0 1 TSK-012 FS 0 2027-11-02 2027-11-02 최종 테스트 결과 보고서, 릴리스 승인서 2027-09-30 2027-11-02, WP-007 전체 모듈 통합 테스트 및 최적화 모든 위젯 모듈 간 데이터 흐름 검증, 종목 교체 시 전체 위젯 연동 테스트, 대시보드 렌더링 성능 최적화, 크로스브라우저 호환성 검증 TSK-001 통합 테스트 계획 수립 전체 위젯 모듈 간 통합 테스트 범위, 시나리오, 일정, 담당자를 정의하는 테스트 계획서 작성 12.0 NOT_STARTED QA 100.0 1 TSK-013 FS 0 2027-11-03 2027-11-03 통합 테스트 계획서, 테스트 시나리오 목록, 테스트 환경 구성 명세서, TSK-002 위젯 간 데이터 흐름 매핑 및 검증 기준 정의 모든 위젯 모듈 간 데이터 흐름(이벤트, 상태, Props 등)을 다이어그램으로 매핑하고 각 흐름별 검증 기준을 정의 16.0 NOT_STARTED 개발자 100.0 1 TSK-001 FS 0 2027-11-04 2027-11-05 데이터 흐름 다이어그램, 모듈 간 인터페이스 명세서, 검증 기준 체크리스트, TSK-003 위젯 모듈 간 데이터 흐름 통합 테스트 수행 각 위젯 모듈 간 데이터 전달, 상태 동기화, 이벤트 전파가 정상적으로 동작하는지 테스트 시나리오에 따라 검증 24.0 NOT_STARTED QA 100.0 1 TSK-001 FS 0, TSK-002 FS 0 2027-11-06 2027-11-08 테스트 실행 결과 보고서, 결함 목록(Defect Log), TSK-004 종목 교체 시 전체 위젯 연동 테스트 시나리오 작성 종목 변경 이벤트 발생 시 차트, 호가창, 뉴스, 재무정보 등 전체 위젯이 올바르게 갱신되는지 검증하기 위한 상세 테스트 케이스 작성 8.0 NOT_STARTED QA 100.0 1 TSK-001 FS 0 2027-11-09 2027-11-09 종목 교체 연동 테스트 케이스 문서, TSK-005 종목 교체 연동 테스트 수행 다양한 종목(국내주식, 해외주식, ETF 등) 교체 시 전체 위젯의 데이터 갱신, 로딩 상태, 에러 처리를 검증 20.0 NOT_STARTED QA 100.0 1 TSK-003 FS 0, TSK-004 FS 0 2027-11-10 2027-11-11 연동 테스트 실행 결과 보고서, 결함 목록, TSK-006 데이터 흐름 및 연동 결함 수정 통합 테스트 및 종목 교체 연동 테스트에서 발견된 데이터 흐름 결함, 상태 동기화 오류, 이벤트 누락 등을 수정 24.0 NOT_STARTED 개발자 100.0 1 TSK-003 FS 0, TSK-005 FS 0 2027-11-12 2027-11-14 수정 완료된 소스코드, 결함 수정 확인서, TSK-007 대시보드 렌더링 성능 프로파일링 Chrome DevTools, Lighthouse, React Profiler 등을 활용하여 대시보드 초기 로딩, 위젯 렌더링, 리렌더링 성능을 측정하고 병목 지점을 식별 16.0 NOT_STARTED 개발자 100.0 1 TSK-006 FS 0 2027-11-15 2027-11-16 성능 프로파일링 보고서, 병목 지점 분석 문서, 성능 기준선(Baseline) 측정 데이터, TSK-008 렌더링 성능 최적화 구현 불필요한 리렌더링 제거(React.memo, useMemo 등), 가상 스크롤링 적용, 코드 스플리팅, 이미지/리소스 최적화, 번들 사이즈 축소 등 성능 개선 작업 수행 32.0 NOT_STARTED 개발자 100.0 1 TSK-007 FS 0 2027-11-17 2027-11-20 최적화 적용 소스코드, 최적화 항목별 적용 내역서, TSK-009 성능 최적화 효과 검증 최적화 전후 성능 지표(FCP, LCP, TTI, CLS 등)를 비교 측정하여 목표 성능 기준 달성 여부를 검증 8.0 NOT_STARTED 개발자 100.0 1 TSK-008 FS 0 2027-11-21 2027-11-21 성능 비교 측정 보고서, 최적화 결과 요약서, TSK-010 크로스브라우저 테스트 환경 구성 Chrome, Firefox, Safari, Edge 등 주요 브라우저 및 버전별 테스트 환경을 구성하고 BrowserStack 등 클라우드 테스트 도구 세팅 8.0 NOT_STARTED QA 100.0 1 TSK-001 FS 0 2027-11-22 2027-11-22 테스트 환경 구성 완료 보고서, 지원 브라우저 매트릭스, TSK-011 크로스브라우저 기능 호환성 테스트 수행 각 브라우저에서 대시보드 전체 기능(위젯 렌더링, 인터랙션, 데이터 로딩, 레이아웃)이 정상 동작하는지 검증 24.0 NOT_STARTED QA 100.0 1 TSK-006 FS 0, TSK-010 FS 0 2027-11-23 2027-11-25 브라우저별 테스트 결과 보고서, 호환성 결함 목록, TSK-012 크로스브라우저 UI/UX 일관성 검증 각 브라우저에서 대시보드 레이아웃, 폰트, 간격, 색상, 애니메이션 등 시각적 요소의 일관성을 검증하고 디자인 시안과 비교 16.0 NOT_STARTED 디자이너 100.0 1 TSK-011 FS 0 2027-11-26 2027-11-27 UI 일관성 검증 보고서, 브라우저별 스크린샷 비교 문서, TSK-013 크로스브라우저 호환성 결함 수정 브라우저별 렌더링 차이, CSS 호환성 이슈, JavaScript API 호환성 문제 등 발견된 결함을 수정 20.0 NOT_STARTED 개발자 100.0 1 TSK-011 FS 0, TSK-012 FS 0 2027-11-28 2027-11-29 수정 완료된 소스코드, 호환성 결함 수정 확인서, TSK-014 결함 수정 후 회귀 테스트 수행 데이터 흐름 결함, 성능 최적화, 크로스브라우저 결함 수정 후 기존 기능에 영향이 없는지 전체 회귀 테스트 수행 16.0 NOT_STARTED QA 100.0 1 TSK-006 FS 0, TSK-009 FS 0, TSK-013 FS 0 2027-11-30 2027-12-01 회귀 테스트 결과 보고서, 최종 결함 현황 보고서, TSK-015 통합 테스트 및 최적화 최종 보고서 작성 전체 통합 테스트 결과, 성능 최적화 결과, 크로스브라우저 호환성 검증 결과를 종합하여 최종 보고서 작성 및 PM 리뷰 12.0 NOT_STARTED PM 100.0 1 TSK-009 FS 0, TSK-014 FS 0 2027-12-02 2027-12-02 통합 테스트 최종 보고서, 잔여 결함 및 리스크 목록, 릴리즈 준비 상태 체크리스트 2027-11-03 2027-12-02 | 2027-04-17 | 2027-12-02 | Phase 2 기능 확장 완료 | 뉴스 표시 모듈, 대시보드 위젯 배치 커스터마이징 기능, 전체 모듈 통합본, 통합 테스트 결과 |
| PH-005 | QA 및 최적화 | 전체 시스템 품질 검증, 성능 최적화, 반응형 UI 점검, 크로스 브라우저 테스트 | 5 | WP-001 대시보드 통합 테스트 및 UI 품질 검증 주식 웹 포털 대시보드의 전체 레이아웃, 위젯 배치, 종목 교체 기능에 대한 통합 테스트 수행. 대시보드 내 각 구성 요소 간 데이터 연동 및 상태 관리 정합성 검증 TSK-001 통합 테스트 계획서 작성 대시보드 통합 테스트 범위, 테스트 시나리오, 일정, 역할 분담을 포함한 테스트 계획서 수립. 레이아웃, 위젯 배치, 종목 교체, 데이터 연동, 상태 관리 등 검증 항목 정의 12.0 NOT_STARTED PM 100.0 1 TSK-015 FS 0 2027-12-03 2027-12-03 통합 테스트 계획서, 테스트 범위 정의서, 일정표, TSK-002 테스트 케이스 설계 - 레이아웃 및 위젯 배치 대시보드 전체 레이아웃 구조, 위젯 배치 정확성, 반응형 레이아웃 동작, 위젯 리사이즈 및 드래그앤드롭 기능에 대한 상세 테스트 케이스 작성 16.0 NOT_STARTED QA 100.0 1 TSK-001 FS 0 2027-12-04 2027-12-05 레이아웃 테스트 케이스 문서, 위젯 배치 검증 체크리스트, TSK-003 테스트 케이스 설계 - 종목 교체 기능 대시보드 내 종목 교체 시 차트, 호가창, 뉴스, 재무정보 등 연관 위젯의 데이터 갱신 및 상태 전이에 대한 테스트 케이스 작성. 정상/비정상 종목코드, 빈번한 교체, 동시 교체 시나리오 포함 16.0 NOT_STARTED QA 100.0 1 TSK-001 FS 0 2027-12-06 2027-12-07 종목 교체 테스트 케이스 문서, 경계값 테스트 시나리오, TSK-004 테스트 케이스 설계 - 데이터 연동 및 상태 관리 위젯 간 데이터 바인딩 정합성, 실시간 데이터 스트림 동기화, 글로벌 상태와 로컬 상태 간 일관성, 캐시 무효화 시나리오에 대한 테스트 케이스 작성 16.0 NOT_STARTED QA 100.0 1 TSK-001 FS 0 2027-12-08 2027-12-09 데이터 연동 테스트 케이스 문서, 상태 관리 검증 매트릭스, TSK-005 테스트 환경 구축 및 테스트 데이터 준비 통합 테스트 수행을 위한 스테이징 환경 구성, 목업 API 및 테스트용 종목 데이터 셋 준비, 자동화 테스트 프레임워크 설정(Selenium/Cypress 등) 20.0 NOT_STARTED 개발자 100.0 1 TSK-001 FS 0 2027-12-10 2027-12-11 테스트 환경 구성 문서, 테스트 데이터 셋, 자동화 프레임워크 초기 설정, TSK-006 UI 디자인 가이드 기반 검증 기준 수립 디자인 시스템 기준으로 대시보드 UI 품질 검증 항목 정의. 컬러, 타이포그래피, 간격, 정렬, 아이콘 일관성 등 시각적 품질 기준 및 크로스브라우저 렌더링 기준 수립 12.0 NOT_STARTED 디자이너 100.0 1 TSK-001 FS 0 2027-12-12 2027-12-12 UI 품질 검증 체크리스트, 디자인 스펙 대비 비교 기준서, TSK-007 레이아웃 및 위젯 배치 통합 테스트 수행 작성된 테스트 케이스에 따라 대시보드 레이아웃 렌더링, 위젯 초기 배치, 위젯 추가/삭제/이동, 레이아웃 저장/복원 기능 테스트 실행. 다양한 해상도 및 브라우저 환경에서 수행 24.0 NOT_STARTED QA 100.0 1 TSK-002 FS 0, TSK-005 FS 0 2027-12-13 2027-12-15 테스트 실행 결과서, 스크린샷 증적, 결함 보고서, TSK-008 종목 교체 기능 통합 테스트 수행 종목 교체 시 전체 위젯의 데이터 갱신 정합성 테스트 실행. 교체 후 차트/호가/뉴스/재무 위젯 데이터 동기화, 로딩 상태 처리, 에러 핸들링, 연속 교체 시 메모리 누수 여부 확인 24.0 NOT_STARTED QA 100.0 1 TSK-003 FS 0, TSK-005 FS 0 2027-12-16 2027-12-18 테스트 실행 결과서, 데이터 정합성 검증 보고서, 결함 보고서, TSK-009 데이터 연동 및 상태 관리 통합 테스트 수행 위젯 간 데이터 연동 테스트 실행. 실시간 시세 데이터 수신 시 복수 위젯 동시 갱신, 네트워크 단절/복구 시 상태 복원, 페이지 새로고침 후 상태 유지 등 검증 24.0 NOT_STARTED QA 100.0 1 TSK-004 FS 0, TSK-005 FS 0 2027-12-19 2027-12-21 테스트 실행 결과서, 상태 관리 검증 보고서, 결함 보고서, TSK-010 UI 비주얼 품질 검증 수행 디자인 가이드 기준 대비 실제 구현 화면의 시각적 품질 검증. 픽셀 단위 비교, 컴포넌트 스타일 일관성, 다크모드/라이트모드 전환, 애니메이션 및 트랜지션 품질 확인 16.0 NOT_STARTED 디자이너 100.0 1 TSK-006 FS 0, TSK-005 FS 0 2027-12-22 2027-12-23 UI 품질 검증 결과서, 디자인 디펙 목록, Before/After 비교 스크린샷, TSK-011 크로스브라우저 및 반응형 호환성 테스트 Chrome, Safari, Firefox, Edge 주요 브라우저에서 대시보드 동작 검증. 데스크톱/태블릿 해상도별 레이아웃 깨짐, 위젯 오버플로우, 스크롤 동작 이상 여부 확인 16.0 NOT_STARTED QA 100.0 1 TSK-007 FS 0, TSK-008 FS 0 2027-12-24 2027-12-25 크로스브라우저 테스트 결과서, 호환성 이슈 목록, TSK-012 결함 수정 및 재테스트 통합 테스트 및 UI 품질 검증에서 발견된 결함에 대한 수정 작업 수행. 결함 우선순위에 따라 Critical/High 결함 우선 수정 후 재테스트 진행 32.0 NOT_STARTED 개발자 100.0 1 TSK-007 FS 0, TSK-008 FS 0, TSK-009 FS 0, TSK-010 FS 0, TSK-011 FS 0 2027-12-26 2027-12-29 수정 완료 코드, 수정 내역서, 재테스트 확인서, TSK-013 회귀 테스트 수행 결함 수정 후 기존 정상 기능에 대한 회귀 테스트 수행. 자동화 테스트 스위트 실행 및 주요 시나리오 수동 회귀 테스트 병행 16.0 NOT_STARTED QA 100.0 1 TSK-012 FS 0 2027-12-30 2027-12-31 회귀 테스트 결과서, 자동화 테스트 실행 로그, TSK-014 테스트 완료 보고서 작성 및 품질 승인 전체 통합 테스트 결과 종합, 잔여 결함 현황, 테스트 커버리지, 품질 지표 분석을 포함한 최종 보고서 작성. 릴리즈 가능 여부에 대한 품질 승인 판단 12.0 NOT_STARTED PM 100.0 1 TSK-013 FS 0 2028-01-01 2028-01-01 통합 테스트 완료 보고서, 품질 승인 문서, 잔여 결함 목록 및 대응 계획 2027-12-03 2028-01-01, WP-002 차트 및 데이터 시각화 품질 검증 주식 차트 렌더링 정확성, 실시간 데이터 반영 속도, 차트 인터랙션(줌, 패닝, 툴팁) 기능 테스트. 대용량 데이터 로딩 시 차트 성능 최적화 및 메모리 누수 점검 TSK-001 차트 렌더링 테스트 계획 수립 주식 차트 시각화 품질 검증을 위한 전체 테스트 전략, 범위, 일정, 도구 선정 및 테스트 케이스 설계. 캔들스틱, 라인, 바 차트 등 차트 유형별 검증 항목 정의 12.0 NOT_STARTED QA 100.0 1 TSK-014 FS 0 2028-01-02 2028-01-02 테스트 계획서, 테스트 케이스 명세서, 차트 유형별 검증 체크리스트, TSK-002 차트 렌더링 정확성 테스트 환경 구축 차트 렌더링 검증을 위한 테스트 환경 세팅. 테스트용 목(mock) 데이터셋 생성, 비주얼 리그레션 테스트 도구(예: Percy, Chromatic) 설정, 스크린샷 비교 파이프라인 구성 16.0 NOT_STARTED 개발자 100.0 1 TSK-001 FS 0 2028-01-03 2028-01-04 테스트 환경 구성 문서, 목 데이터셋, 비주얼 리그레션 테스트 파이프라인, TSK-003 캔들스틱 차트 렌더링 정확성 검증 OHLC(시가·고가·저가·종가) 데이터가 캔들스틱 차트에 정확히 매핑되는지 검증. 양봉/음봉 색상, 꼬리선 길이, 봉 너비, 갭 표현, 보조지표(이동평균선, 볼린저밴드 등) 오버레이 정확성 확인 16.0 NOT_STARTED QA 100.0 1 TSK-002 FS 0 2028-01-05 2028-01-06 캔들스틱 차트 렌더링 테스트 결과 보고서, 스크린샷 비교 결과, 결함 목록, TSK-004 라인/바/영역 차트 렌더링 정확성 검증 라인 차트, 바 차트, 영역(Area) 차트 등 보조 차트 유형의 데이터 매핑 정확성 검증. 축 스케일링, 레이블, 범례, 그리드라인 정확성 및 반응형 레이아웃 확인 12.0 NOT_STARTED QA 100.0 1 TSK-002 FS 0 2028-01-07 2028-01-07 보조 차트 렌더링 테스트 결과 보고서, 결함 목록, TSK-005 차트 축 및 스케일 정확성 검증 X축(시간축) 및 Y축(가격축)의 스케일링 정확성 검증. 로그 스케일/선형 스케일 전환, 자동 스케일 조정, 가격 소수점 표시, 시간대(timezone) 처리, 거래량 축 동기화 테스트 12.0 NOT_STARTED QA 100.0 1 TSK-002 FS 0 2028-01-08 2028-01-08 축/스케일 검증 결과 보고서, 결함 목록, TSK-006 실시간 데이터 반영 속도 측정 환경 구축 웹소켓 기반 실시간 시세 데이터의 차트 반영 지연시간(latency) 측정 환경 구축. 타임스탬프 삽입 포인트 설정, 데이터 수신~렌더링 완료까지 구간별 측정 스크립트 개발 16.0 NOT_STARTED 개발자 100.0 1 TSK-001 FS 0 2028-01-09 2028-01-10 성능 측정 스크립트, 측정 포인트 정의 문서, TSK-007 실시간 데이터 반영 속도 테스트 수행 실시간 시세 데이터 수신 후 차트 업데이트까지의 지연시간 측정. 목표 기준(예: 100ms 이내) 대비 결과 분석, 네트워크 지연/파싱/렌더링 각 구간별 병목 식별. 다양한 네트워크 환경(3G, 4G, WiFi)에서 테스트 16.0 NOT_STARTED QA 100.0 1 TSK-006 FS 0 2028-01-11 2028-01-12 실시간 데이터 반영 속도 측정 보고서, 구간별 지연시간 분석표, 병목 구간 식별 보고서, TSK-008 차트 줌(Zoom) 기능 테스트 차트 줌인/줌아웃 기능 검증. 마우스 휠 줌, 핀치 줌(모바일), 줌 버튼, 범위 선택 줌 등 다양한 줌 방식 테스트. 줌 시 데이터 정확성 유지, 축 재계산, 애니메이션 부드러움, 줌 한계값 확인 12.0 NOT_STARTED QA 100.0 1 TSK-002 FS 0 2028-01-13 2028-01-13 줌 기능 테스트 결과 보고서, 결함 목록, TSK-009 차트 패닝(Panning) 기능 테스트 차트 좌우 패닝(드래그 스크롤) 기능 검증. 마우스 드래그, 터치 스와이프, 키보드 방향키 패닝 테스트. 과거 데이터 로딩(무한 스크롤), 경계값 처리, 패닝 속도 및 관성 스크롤 동작 확인 12.0 NOT_STARTED QA 100.0 1 TSK-002 FS 0 2028-01-14 2028-01-14 패닝 기능 테스트 결과 보고서, 결함 목록, TSK-010 툴팁 및 크로스헤어 기능 테스트 차트 위 마우스 호버 시 툴팁 표시 정확성 검증. OHLCV 데이터 표시값 정확성, 크로스헤어 위치 동기화, 다중 차트 패널 간 크로스헤어 연동, 툴팁 위치 자동조정(화면 경계), 터치 디바이스에서의 롱프레스 툴팁 동작 확인 12.0 NOT_STARTED QA 100.0 1 TSK-002 FS 0 2028-01-15 2028-01-15 툴팁/크로스헤어 테스트 결과 보고서, 결함 목록, TSK-011 차트 인터랙션 UI/UX 디자인 검증 줌, 패닝, 툴팁 등 차트 인터랙션 요소의 디자인 가이드라인 준수 여부 검증. 애니메이션 일관성, 색상/폰트 규격, 반응형 디자인 적합성, 접근성(색맹 대응 등) 검토 8.0 NOT_STARTED 디자이너 100.0 1 TSK-008 FS 0, TSK-009 FS 0, TSK-010 FS 0 2028-01-16 2028-01-16 UI/UX 디자인 검증 보고서, 디자인 개선 권고사항, TSK-012 대용량 데이터 로딩 성능 테스트 시나리오 설계 대용량 데이터(1년, 5년, 10년치 분봉/일봉 데이터) 로딩 시 차트 성능 테스트 시나리오 설계. 데이터 포인트 수별(1만, 10만, 100만건) 테스트 케이스 정의, 성능 기준(FPS, 초기 로딩 시간, 인터랙션 응답시간) 설정 8.0 NOT_STARTED QA 100.0 1 TSK-001 FS 0 2028-01-17 2028-01-17 대용량 데이터 성능 테스트 시나리오, 성능 기준 정의서, TSK-013 대용량 데이터 차트 성능 프로파일링 Chrome DevTools, React Profiler 등을 활용한 대용량 데이터 렌더링 성능 프로파일링. CPU/GPU 사용률, 프레임 드랍, 메인 스레드 블로킹 시간, 리플로우/리페인트 빈도 측정. 데이터 포인트 증가에 따른 성능 저하 곡선 도출 16.0 NOT_STARTED 개발자 100.0 1 TSK-012 FS 0 2028-01-18 2028-01-19 성능 프로파일링 결과 보고서, 성능 저하 곡선 그래프, 병목 구간 분석, TSK-014 차트 성능 최적화 방안 도출 및 적용 프로파일링 결과 기반 성능 최적화 방안 도출. 데이터 다운샘플링, 가상화(virtualization), 웹 워커 활용, Canvas/WebGL 렌더링 최적화, 레이지 로딩 등 최적화 기법 적용 및 효과 검증 32.0 NOT_STARTED 개발자 100.0 1 TSK-013 FS 0 2028-01-20 2028-01-23 최적화 적용 코드, 최적화 전/후 성능 비교 보고서, TSK-015 메모리 누수 탐지 테스트 환경 구축 차트 컴포넌트의 메모리 누수 탐지를 위한 자동화 테스트 환경 구축. Chrome DevTools Memory 프로파일러, Heap Snapshot 비교 스크립트, 장시간 실행 시뮬레이션 환경 설정 12.0 NOT_STARTED 개발자 100.0 1 TSK-001 FS 0 2028-01-24 2028-01-24 메모리 누수 탐지 자동화 스크립트, 테스트 환경 구성 문서, TSK-016 차트 컴포넌트 메모리 누수 테스트 수행 차트 마운트/언마운트 반복, 실시간 데이터 장시간 수신, 차트 타입 전환, 줌/패닝 반복 등 시나리오에서 메모리 누수 점검. Heap Snapshot 비교, Detached DOM 노드 탐지, 이벤트 리스너 누적 확인, 웹소켓 연결 해제 확인 16.0 NOT_STARTED QA 100.0 1 TSK-015 FS 0 2028-01-25 2028-01-26 메모리 누수 테스트 결과 보고서, Heap Snapshot 분석 결과, 메모리 누수 결함 목록, TSK-017 메모리 누수 결함 수정 탐지된 메모리 누수 결함 수정. 이벤트 리스너 정리, 타이머/인터벌 해제, 웹소켓 연결 정리, 차트 인스턴스 dispose 처리 등 누수 원인별 수정 및 재검증 24.0 NOT_STARTED 개발자 100.0 1 TSK-016 FS 0 2028-01-27 2028-01-29 수정된 코드, 메모리 누수 재검증 결과, TSK-018 크로스 브라우저/디바이스 차트 호환성 테스트 Chrome, Safari, Firefox, Edge 및 iOS/Android 모바일 환경에서 차트 렌더링, 인터랙션, 성능의 일관성 검증. 브라우저별 Canvas/SVG 렌더링 차이, 터치 이벤트 호환성, 해상도별 표시 확인 16.0 NOT_STARTED QA 100.0 1 TSK-003 FS 0, TSK-004 FS 0, TSK-008 FS 0, TSK-009 FS 0, TSK-010 FS 0 2028-01-30 2028-01-31 크로스 브라우저 호환성 테스트 결과 보고서, 브라우저별 결함 목록, TSK-019 최적화 후 통합 회귀 테스트 성능 최적화 및 메모리 누수 수정 후 전체 차트 기능에 대한 회귀 테스트 수행. 렌더링 정확성, 실시간 반영, 인터랙션 기능이 최적화 후에도 정상 동작하는지 검증 16.0 NOT_STARTED QA 100.0 1 TSK-014 FS 0, TSK-017 FS 0 2028-02-01 2028-02-02 회귀 테스트 결과 보고서, 잔여 결함 목록, TSK-020 최종 품질 검증 보고서 작성 및 리뷰 전체 차트 및 데이터 시각화 품질 검증 결과 종합. 테스트 커버리지, 발견 결함 통계, 성능 벤치마크 결과, 잔여 리스크, 개선 권고사항을 포함한 최종 보고서 작성 및 이해관계자 리뷰 12.0 NOT_STARTED PM 100.0 1 TSK-011 FS 0, TSK-018 FS 0, TSK-019 FS 0 2028-02-03 2028-02-03 최종 품질 검증 보고서, 잔여 리스크 목록, 개선 권고사항 2028-01-02 2028-02-03, WP-003 시세 데이터 정합성 및 성능 테스트 국내주식 시세, 금/은 시세, 암호화폐 시세, 국내·해외 시장지수 데이터의 정확성 및 갱신 주기 검증. API 응답 속도 측정, 캐싱 전략 최적화, 동시 다중 시세 요청 시 부하 테스트 수행 TSK-001 테스트 계획서 및 시나리오 수립 시세 데이터 정합성 및 성능 테스트를 위한 전체 테스트 계획서 작성. 국내주식, 금/은, 암호화폐, 국내·해외 시장지수 각 영역별 테스트 범위, 검증 항목, 합격 기준(Pass/Fail Criteria), 테스트 환경 요구사항 정의 16.0 NOT_STARTED QA 100.0 1 TSK-020 FS 0 2028-02-04 2028-02-05 테스트 계획서, 테스트 시나리오 문서, 합격 기준 정의서, TSK-002 테스트 환경 구축 및 모니터링 도구 셋업 성능 테스트 및 부하 테스트를 위한 테스트 환경 구축. JMeter/k6/Locust 등 부하 테스트 도구 설치, APM 모니터링 도구 연동, 테스트 데이터베이스 및 캐시 서버 환경 분리 구성 16.0 NOT_STARTED 개발자 100.0 1 TSK-001 FS 0 2028-02-06 2028-02-07 테스트 환경 구성 문서, 모니터링 대시보드, 테스트 도구 설정 파일, TSK-003 국내주식 시세 데이터 정합성 검증 국내주식 시세 API 응답 데이터와 원천 데이터(거래소/증권사 제공 데이터) 간 일치 여부 검증. 현재가, 시가, 고가, 저가, 거래량 등 주요 필드 정확성 확인. 장중/장외 시간대별 데이터 갱신 주기 검증(실시간, 15초, 1분 등) 16.0 NOT_STARTED QA 100.0 1 TSK-002 FS 0 2028-02-08 2028-02-09 국내주식 시세 정합성 테스트 결과 보고서, 데이터 불일치 목록, TSK-004 금/은 시세 데이터 정합성 검증 금/은 시세 API 응답 데이터와 원천 데이터(London Fix, COMEX 등) 간 일치 여부 검증. 국제 금/은 시세, 국내 금/은 시세 환산 정확성 확인. 데이터 갱신 주기 및 시차 검증 12.0 NOT_STARTED QA 100.0 1 TSK-002 FS 0 2028-02-10 2028-02-10 금/은 시세 정합성 테스트 결과 보고서, 데이터 불일치 목록, TSK-005 암호화폐 시세 데이터 정합성 검증 암호화폐 시세 API 응답 데이터와 원천 거래소(업비트, 바이낸스 등) 데이터 간 일치 여부 검증. BTC, ETH 등 주요 코인 현재가, 24시간 변동률, 거래량 정확성 확인. 24시간 운영 환경에서의 데이터 갱신 주기 및 지연 시간 측정 12.0 NOT_STARTED QA 100.0 1 TSK-002 FS 0 2028-02-11 2028-02-11 암호화폐 시세 정합성 테스트 결과 보고서, 데이터 불일치 목록, TSK-006 국내·해외 시장지수 데이터 정합성 검증 KOSPI, KOSDAQ, S&P500, NASDAQ, 다우존스, 닛케이 등 주요 시장지수 API 응답 데이터와 원천 데이터 간 일치 여부 검증. 지수 현재값, 전일 대비 변동, 등락률 정확성 확인. 각 시장 개장/폐장 시간대별 갱신 주기 검증 16.0 NOT_STARTED QA 100.0 1 TSK-002 FS 0 2028-02-12 2028-02-13 시장지수 정합성 테스트 결과 보고서, 데이터 불일치 목록, TSK-007 개별 API 응답 속도 측정 각 시세 유형(국내주식, 금/은, 암호화폐, 시장지수)별 API 엔드포인트의 응답 시간 측정. P50, P95, P99 응답 시간 산출. 단일 종목 조회, 다중 종목 조회, 목록 조회 등 시나리오별 응답 속도 비교 분석 16.0 NOT_STARTED 개발자 100.0 1 TSK-002 FS 0 2028-02-14 2028-02-15 API 응답 속도 측정 결과 보고서, 엔드포인트별 성능 메트릭, TSK-008 캐싱 전략 분석 및 최적화 테스트 현행 캐싱 전략(Redis, CDN, 인메모리 등) 분석 및 캐시 적중률(Hit Rate) 측정. 시세 유형별 적정 TTL 검증(실시간성 vs 성능 트레이드오프). 캐시 갱신 전략(TTL, 이벤트 기반, 주기적 갱신) 비교 테스트 및 최적 설정값 도출 24.0 NOT_STARTED 개발자 100.0 1 TSK-007 FS 0 2028-02-16 2028-02-18 캐싱 전략 분석 보고서, 캐시 최적화 설정 권고안, 캐시 적중률 측정 결과, TSK-009 동시 다중 시세 요청 부하 테스트 시나리오 작성 동시 다중 시세 요청 시나리오 설계. 점진적 부하 증가(Ramp-up) 시나리오, 피크 시간대 시뮬레이션(장 개시 시점 등), 복합 시세 유형 동시 요청 시나리오 작성. 목표 TPS, 동시 사용자 수, 테스트 지속 시간 설정 12.0 NOT_STARTED QA 100.0 1 TSK-007 FS 0 2028-02-19 2028-02-19 부하 테스트 시나리오 문서, 부하 테스트 스크립트, TSK-010 부하 테스트 실행 및 병목 구간 분석 작성된 시나리오 기반 부하 테스트 실행. 동시 100/500/1000 사용자 단계별 부하 적용. API 서버 CPU/메모리 사용률, DB 커넥션 풀, 캐시 서버 부하, 네트워크 대역폭 모니터링. 병목 구간 식별 및 임계점(Breaking Point) 도출 24.0 NOT_STARTED 개발자 100.0 1 TSK-009 FS 0 2028-02-20 2028-02-22 부하 테스트 실행 결과 보고서, 병목 구간 분석 보고서, 서버 리소스 모니터링 데이터, TSK-011 성능 개선 조치 및 재테스트 부하 테스트에서 식별된 병목 구간에 대한 성능 개선 조치 적용. DB 쿼리 최적화, 커넥션 풀 튜닝, 캐시 전략 반영, API 응답 직렬화 최적화 등. 개선 후 동일 시나리오 재테스트를 통한 성능 향상 검증 24.0 NOT_STARTED 개발자 100.0 1 TSK-008 FS 0, TSK-010 FS 0 2028-02-23 2028-02-25 성능 개선 적용 내역서, 재테스트 결과 비교 보고서, TSK-012 테스트 결과 대시보드 구성 테스트 결과를 시각적으로 확인할 수 있는 대시보드 구성. 시세 유형별 정합성 현황, API 응답 시간 추이, 캐시 적중률, 부하 테스트 결과 그래프 등을 포함한 리포트 대시보드 설계 및 구현 12.0 NOT_STARTED 디자이너 100.0 1 TSK-003 FS 0, TSK-004 FS 0, TSK-005 FS 0, TSK-006 FS 0, TSK-007 FS 0 2028-02-26 2028-02-26 테스트 결과 대시보드, 대시보드 레이아웃 설계서, TSK-013 최종 테스트 결과 보고서 작성 및 리뷰 전체 테스트 결과 종합 보고서 작성. 시세 유형별 정합성 검증 결과 요약, 성능 테스트 결과 요약, 캐싱 최적화 결과, 부하 테스트 결과 및 권고사항 포함. PM 및 이해관계자 리뷰 진행 16.0 NOT_STARTED PM 100.0 1 TSK-011 FS 0, TSK-012 FS 0 2028-02-27 2028-02-28 최종 테스트 결과 종합 보고서, 이슈 및 권고사항 목록, 리뷰 회의록 2028-02-04 2028-02-28, WP-004 종목 정보 및 뉴스 표시 기능 테스트 종목 상세 정보 표시의 정확성, 뉴스 피드 로딩 및 정렬 기능 검증. 뉴스 콘텐츠 렌더링 품질, 링크 유효성, 종목과 뉴스 간 연관성 매핑 정확도 테스트 TSK-001 테스트 계획서 작성 종목 정보 표시 및 뉴스 피드 기능에 대한 전체 테스트 계획서 작성. 테스트 범위, 테스트 환경, 진입/종료 기준, 리스크 분석 포함 8.0 NOT_STARTED QA 100.0 1 TSK-013 FS 0 2028-02-29 2028-02-29 테스트 계획서, 테스트 범위 정의서, TSK-002 종목 상세 정보 표시 테스트 케이스 설계 종목 코드, 종목명, 현재가, 전일 대비, 등락률, 거래량, 시가총액 등 종목 상세 정보 항목별 표시 정확성 검증을 위한 테스트 케이스 설계. 정상/비정상 데이터, 경계값, 소수점 처리, 통화 포맷 등 포함 12.0 NOT_STARTED QA 100.0 1 TSK-001 FS 0 2028-03-01 2028-03-01 종목 정보 테스트 케이스 문서, 테스트 데이터 셋, TSK-003 뉴스 피드 기능 테스트 케이스 설계 뉴스 피드 로딩, 페이지네이션/무한스크롤, 정렬(최신순/관련순), 필터링 기능에 대한 테스트 케이스 설계. 로딩 속도, 빈 상태 처리, 에러 상태 처리 포함 12.0 NOT_STARTED QA 100.0 1 TSK-001 FS 0 2028-03-02 2028-03-02 뉴스 피드 테스트 케이스 문서, 테스트 데이터 셋, TSK-004 테스트 환경 및 테스트 데이터 준비 테스트 수행을 위한 스테이징 환경 구성, 목업 종목 데이터 및 뉴스 데이터 세팅. 다양한 시나리오 커버를 위한 정상/비정상/경계값 데이터 준비 16.0 NOT_STARTED 개발자 100.0 1 TSK-001 FS 0 2028-03-03 2028-03-04 테스트 환경 구성 완료 보고, 테스트 데이터 스크립트, TSK-005 종목 상세 정보 데이터 정확성 테스트 수행 실제 데이터 소스(API/DB)와 화면 표시 값 간 일치 여부 검증. 실시간 시세 반영 정확도, 데이터 갱신 주기, 숫자 포맷팅(천 단위 구분, 소수점, +/- 부호), 단위 표시 정확성 테스트 16.0 NOT_STARTED QA 100.0 1 TSK-002 FS 0, TSK-004 FS 0 2028-03-05 2028-03-06 데이터 정확성 테스트 결과 보고서, 결함 리포트, TSK-006 종목 정보 UI 렌더링 품질 테스트 수행 종목 상세 화면의 UI 렌더링 품질 검증. 레이아웃 깨짐, 텍스트 오버플로우, 반응형 대응, 다크모드/라이트모드 표시, 로딩 스켈레톤 등 시각적 품질 확인. 디자인 시안 대비 일치도 검수 12.0 NOT_STARTED 디자이너 100.0 1 TSK-002 FS 0, TSK-004 FS 0 2028-03-07 2028-03-07 UI 품질 검수 보고서, 디자인 QA 결함 리포트, TSK-007 뉴스 피드 로딩 및 정렬 기능 테스트 수행 뉴스 피드 초기 로딩, 추가 로딩(페이지네이션/무한스크롤), 정렬 옵션 변경 시 동작 검증. 최신순/관련순 정렬 정확성, 정렬 전환 시 데이터 무결성, 로딩 상태 표시, 네트워크 지연/실패 시 처리 테스트 16.0 NOT_STARTED QA 100.0 1 TSK-003 FS 0, TSK-004 FS 0 2028-03-08 2028-03-09 뉴스 피드 기능 테스트 결과 보고서, 결함 리포트, TSK-008 뉴스 콘텐츠 렌더링 품질 테스트 수행 뉴스 기사 제목, 요약, 썸네일 이미지, 발행일시, 출처 등의 렌더링 품질 검증. 긴 제목 말줄임 처리, 이미지 미존재 시 대체 표시, 특수문자/이모지 렌더링, HTML 태그 이스케이프 처리 확인 12.0 NOT_STARTED QA 100.0 1 TSK-003 FS 0, TSK-004 FS 0 2028-03-10 2028-03-10 뉴스 렌더링 품질 테스트 결과 보고서, 결함 리포트, TSK-009 뉴스 링크 유효성 테스트 수행 뉴스 기사 클릭 시 원본 링크 연결 정확성 검증. 모든 뉴스 링크 HTTP 상태 코드 확인(200/301/404 등), 외부 링크 새 탭 오픈 동작, 딥링크 처리, 만료된 기사 링크 처리, 리다이렉트 체인 검증 12.0 NOT_STARTED QA 100.0 1 TSK-003 FS 0, TSK-004 FS 0 2028-03-11 2028-03-11 링크 유효성 테스트 결과 보고서, 무효 링크 목록, TSK-010 종목-뉴스 연관성 매핑 정확도 테스트 수행 특정 종목 상세 페이지에서 표시되는 뉴스가 해당 종목과 실제 관련이 있는지 검증. 종목코드/종목명 기반 매핑 정확도, 관련 없는 뉴스 노출 비율 측정, 유사 종목명 오매핑 여부, 복수 종목 언급 뉴스 처리 로직 검증 16.0 NOT_STARTED QA 100.0 1 TSK-005 FS 0, TSK-007 FS 0 2028-03-12 2028-03-13 연관성 매핑 정확도 분석 보고서, 오매핑 사례 리포트, TSK-011 크로스 브라우저 및 디바이스 호환성 테스트 수행 종목 정보 및 뉴스 표시 기능에 대한 크로스 브라우저(Chrome, Safari, Firefox, Edge) 및 모바일/태블릿 디바이스 호환성 테스트. 반응형 레이아웃 동작, 터치 인터랙션, 화면 회전 대응 검증 16.0 NOT_STARTED QA 100.0 1 TSK-005 FS 0, TSK-007 FS 0, TSK-008 FS 0 2028-03-14 2028-03-15 호환성 테스트 결과 매트릭스, 결함 리포트, TSK-012 결함 수정 및 재테스트 테스트 수행 중 발견된 결함에 대한 개발팀 수정 후 재테스트 수행. 결함 수정 확인, 회귀 테스트, 사이드 이펙트 확인 24.0 NOT_STARTED 개발자 100.0 1 TSK-005 FS 0, TSK-006 FS 0, TSK-007 FS 0, TSK-008 FS 0, TSK-009 FS 0, TSK-010 FS 0 2028-03-16 2028-03-18 결함 수정 코드, 수정 확인 보고, TSK-013 재테스트 및 회귀 테스트 수행 결함 수정 완료 후 수정 사항에 대한 재테스트 및 기존 기능 회귀 테스트 수행. 수정된 결함 재현 불가 확인, 관련 기능 영향도 검증 12.0 NOT_STARTED QA 100.0 1 TSK-012 FS 0 2028-03-19 2028-03-19 재테스트 결과 보고서, 회귀 테스트 결과 보고서, TSK-014 최종 테스트 결과 보고서 작성 및 종료 판정 전체 테스트 결과 종합 및 최종 보고서 작성. 테스트 커버리지, 결함 통계(심각도별/상태별), 잔여 리스크, 종료 기준 충족 여부 판정, 릴리즈 가부 의견 포함 8.0 NOT_STARTED PM 100.0 1 TSK-011 FS 0, TSK-013 FS 0 2028-03-20 2028-03-20 최종 테스트 결과 보고서, 릴리즈 판정 의견서 2028-02-29 2028-03-20, WP-005 반응형 UI 및 크로스 브라우저 테스트 모바일, 태블릿, 데스크톱 등 다양한 해상도에서 대시보드 레이아웃 및 모든 위젯의 반응형 동작 검증. Chrome, Safari, Firefox, Edge 주요 브라우저 호환성 테스트 및 CSS 렌더링 이슈 수정 TSK-001 반응형 UI 테스트 계획 수립 테스트 대상 브라우저, 디바이스, 해상도 매트릭스 정의 및 테스트 시나리오 작성. 테스트 환경 구성 계획과 일정 수립 12.0 NOT_STARTED QA 100.0 1 TSK-014 FS 0 2028-03-21 2028-03-21 테스트 계획서, 브라우저/디바이스 매트릭스, 테스트 케이스 문서, TSK-002 반응형 디자인 가이드라인 검토 및 브레이크포인트 정의 모바일(~767px), 태블릿(768px~1023px), 데스크톱(1024px~) 브레이크포인트 기준 확인. 각 해상도별 대시보드 레이아웃 및 위젯 배치 기준을 디자인 시안과 대조하여 검증 기준 확정 8.0 NOT_STARTED 디자이너 100.0 1 TSK-001 FS 0 2028-03-22 2028-03-22 브레이크포인트 정의서, 해상도별 레이아웃 스펙 문서, TSK-003 테스트 환경 및 도구 구성 BrowserStack, Sauce Labs 등 크로스 브라우저 테스트 도구 세팅. 실물 디바이스 및 에뮬레이터 환경 준비. Chrome, Safari, Firefox, Edge 최신 및 직전 버전 테스트 환경 구축 12.0 NOT_STARTED QA 100.0 1 TSK-001 FS 0 2028-03-23 2028-03-23 테스트 환경 구성 완료 보고서, 접속 계정 및 환경 정보 문서, TSK-004 모바일 해상도 반응형 테스트 수행 320px, 375px, 414px 등 주요 모바일 해상도에서 대시보드 레이아웃, 네비게이션, 위젯 축소/재배치, 터치 인터랙션, 스크롤 동작 검증. 세로/가로 모드 전환 테스트 포함 16.0 NOT_STARTED QA 100.0 1 TSK-002 FS 0, TSK-003 FS 0 2028-03-24 2028-03-25 모바일 테스트 결과 보고서, 스크린샷 증적, 버그 리포트, TSK-005 태블릿 해상도 반응형 테스트 수행 768px, 820px, 1024px 등 주요 태블릿 해상도에서 대시보드 그리드 레이아웃, 사이드바, 위젯 배치 및 크기 조정 동작 검증. iPad Safari 및 Android 태블릿 Chrome 중점 테스트 14.0 NOT_STARTED QA 100.0 1 TSK-002 FS 0, TSK-003 FS 0 2028-03-26 2028-03-26 태블릿 테스트 결과 보고서, 스크린샷 증적, 버그 리포트, TSK-006 데스크톱 해상도 반응형 테스트 수행 1280px, 1440px, 1920px, 2560px 등 주요 데스크톱 해상도에서 대시보드 풀 레이아웃, 위젯 정렬, 여백, 폰트 스케일링 검증. 브라우저 창 리사이즈 시 실시간 반응형 전환 동작 테스트 12.0 NOT_STARTED QA 100.0 1 TSK-002 FS 0, TSK-003 FS 0 2028-03-27 2028-03-27 데스크톱 테스트 결과 보고서, 스크린샷 증적, 버그 리포트, TSK-007 Chrome 브라우저 호환성 테스트 Chrome 최신 버전 및 직전 2개 버전에서 대시보드 전체 기능 및 CSS 렌더링 테스트. Flexbox, Grid, CSS 변수, 애니메이션 등 주요 CSS 기능 렌더링 검증 10.0 NOT_STARTED QA 100.0 1 TSK-003 FS 0 2028-03-28 2028-03-28 Chrome 호환성 테스트 결과 보고서, 버그 리포트, TSK-008 Safari 브라우저 호환성 테스트 macOS Safari 및 iOS Safari에서 대시보드 CSS 렌더링, WebKit 고유 이슈(backdrop-filter, sticky positioning, flexbox gap 등) 검증. Safari 특유의 스크롤 바운스, 뷰포트 처리 확인 12.0 NOT_STARTED QA 100.0 1 TSK-003 FS 0 2028-03-29 2028-03-29 Safari 호환성 테스트 결과 보고서, 버그 리포트, TSK-009 Firefox 브라우저 호환성 테스트 Firefox 최신 및 ESR 버전에서 대시보드 렌더링 테스트. Gecko 엔진 고유 CSS 렌더링 차이, 폰트 렌더링, scrollbar 스타일링 검증 10.0 NOT_STARTED QA 100.0 1 TSK-003 FS 0 2028-03-30 2028-03-30 Firefox 호환성 테스트 결과 보고서, 버그 리포트, TSK-010 Edge 브라우저 호환성 테스트 Microsoft Edge 최신 버전에서 대시보드 렌더링 및 기능 테스트. Chromium 기반이나 Edge 고유 동작 차이 검증. Windows 환경에서의 고해상도(HiDPI) 스케일링 테스트 포함 8.0 NOT_STARTED QA 100.0 1 TSK-003 FS 0 2028-03-31 2028-03-31 Edge 호환성 테스트 결과 보고서, 버그 리포트, TSK-011 크로스 브라우저 CSS 렌더링 이슈 분석 및 분류 전체 테스트에서 발견된 CSS 렌더링 버그를 심각도(Critical/Major/Minor/Cosmetic)별로 분류. 브라우저별 공통 이슈 및 고유 이슈 분석. 수정 우선순위 결정 8.0 NOT_STARTED QA 100.0 1 TSK-004 FS 0, TSK-005 FS 0, TSK-006 FS 0, TSK-007 FS 0, TSK-008 FS 0, TSK-009 FS 0, TSK-010 FS 0 2028-04-01 2028-04-01 이슈 분류 및 우선순위 문서, 통합 버그 트래커 등록 완료, TSK-012 반응형 레이아웃 CSS 이슈 수정 미디어쿼리, Flexbox, Grid 관련 반응형 레이아웃 깨짐 이슈 수정. 브레이크포인트 전환 시 레이아웃 붕괴, 위젯 오버플로우, 잘림 현상 등 해결 24.0 NOT_STARTED 개발자 100.0 1 TSK-011 FS 0 2028-04-02 2028-04-04 수정된 CSS/SCSS 코드, 수정 내역 문서, TSK-013 크로스 브라우저 CSS 호환성 이슈 수정 벤더 프리픽스 누락, 브라우저별 CSS 속성 미지원 이슈 수정. PostCSS/Autoprefixer 설정 검토 및 보완. polyfill 필요 시 적용. Safari WebKit, Firefox Gecko 엔진 고유 이슈 대응 코드 작성 20.0 NOT_STARTED 개발자 100.0 1 TSK-011 FS 0 2028-04-05 2028-04-06 수정된 CSS/SCSS 코드, 브라우저 호환성 패치 문서, TSK-014 위젯 컴포넌트별 반응형 동작 수정 차트, 테이블, 카드 등 개별 위젯 컴포넌트의 반응형 리사이즈, 텍스트 트렁케이션, 이미지 스케일링 이슈 수정. 터치 디바이스에서의 호버 상태 대체 처리 20.0 NOT_STARTED 개발자 100.0 1 TSK-011 FS 0 2028-04-07 2028-04-08 수정된 컴포넌트 코드, 컴포넌트별 수정 내역, TSK-015 디자인 QA 및 픽셀 퍼펙트 검수 수정 완료된 UI를 디자인 시안과 비교하여 픽셀 단위 검수. 각 해상도별 여백, 폰트 크기, 색상, 정렬 등 디자인 일관성 확인 12.0 NOT_STARTED 디자이너 100.0 1 TSK-012 FS 0, TSK-013 FS 0, TSK-014 FS 0 2028-04-09 2028-04-09 디자인 QA 체크리스트, 추가 수정 요청 목록, TSK-016 수정 사항 회귀 테스트 수행 CSS 수정 후 전체 브라우저 및 해상도에서 회귀 테스트 수행. 수정된 이슈의 재현 테스트 및 사이드 이펙트 확인. 자동화 가능한 비주얼 리그레션 테스트 실행 16.0 NOT_STARTED QA 100.0 1 TSK-012 FS 0, TSK-013 FS 0, TSK-014 FS 0 2028-04-10 2028-04-11 회귀 테스트 결과 보고서, 비주얼 리그레션 테스트 결과, TSK-017 디자인 QA 피드백 반영 및 최종 수정 디자인 QA 및 회귀 테스트에서 발견된 잔여 이슈 수정. 미세 조정 및 최종 폴리싱 작업 12.0 NOT_STARTED 개발자 100.0 1 TSK-015 FS 0, TSK-016 FS 0 2028-04-12 2028-04-12 최종 수정 코드, 수정 완료 확인서, TSK-018 최종 검증 및 테스트 완료 보고서 작성 전체 브라우저/디바이스 매트릭스 기준 최종 합격 여부 판정. 잔여 이슈 목록 및 대응 방안 정리. 테스트 커버리지 및 결과 종합 보고서 작성 10.0 NOT_STARTED QA 100.0 1 TSK-017 FS 0 2028-04-13 2028-04-13 최종 테스트 완료 보고서, 잔여 이슈 목록, 브라우저 호환성 매트릭스 결과표, TSK-019 프로젝트 리뷰 및 산출물 최종 승인 전체 산출물 검토 및 이해관계자 승인. 잔여 이슈에 대한 후속 조치 계획 수립. 반응형 UI 및 크로스 브라우저 테스트 작업 패키지 종료 확인 6.0 NOT_STARTED PM 100.0 1 TSK-018 FS 0 2028-04-14 2028-04-14 최종 승인 문서, 후속 조치 계획서, 작업 패키지 종료 보고서 2028-03-21 2028-04-14, WP-006 프론트엔드 성능 최적화 초기 로딩 속도(LCP, FCP, TTI) 개선, 번들 사이즈 최적화, 코드 스플리팅 적용. 불필요한 리렌더링 제거, 이미지 및 리소스 최적화, Lighthouse 성능 점수 목표치 달성 검증 TSK-001 현재 성능 지표 측정 및 분석 Lighthouse, WebPageTest, Chrome DevTools를 활용하여 현재 LCP, FCP, TTI, CLS 등 Core Web Vitals 지표를 측정하고 성능 병목 지점을 식별. 번들 분석 도구(webpack-bundle-analyzer 등)로 현재 번들 사이즈 및 구성 분석 12.0 NOT_STARTED 개발자 100.0 1 TSK-019 FS 0 2028-04-15 2028-04-15 성능 측정 보고서, 번들 분석 보고서, 병목 지점 목록, 개선 우선순위 매트릭스, TSK-002 성능 최적화 목표 및 전략 수립 측정 결과를 기반으로 Lighthouse 성능 점수 목표치, LCP/FCP/TTI 목표 수치 설정. 최적화 범위, 접근 전략, 우선순위를 정의하고 작업 일정 수립 8.0 NOT_STARTED PM 100.0 1 TSK-001 FS 0 2028-04-16 2028-04-16 성능 최적화 전략 문서, 목표 KPI 정의서, 작업 일정표, TSK-003 코드 스플리팅 적용 라우트 기반 코드 스플리팅(React.lazy, dynamic import) 적용. 주요 페이지별 청크 분리, 공통 모듈 청크 최적화, prefetch/preload 전략 적용 24.0 NOT_STARTED 개발자 100.0 1 TSK-002 FS 0 2028-04-17 2028-04-19 코드 스플리팅 적용 코드, 청크 분리 구성 문서, 라우트별 번들 사이즈 비교표, TSK-004 번들 사이즈 최적화 불필요한 의존성 제거, tree-shaking 최적화, 대형 라이브러리 경량 대안 교체(moment→dayjs, lodash→lodash-es 등). 중복 폴리필 제거, 빌드 설정 최적화(minification, compression) 20.0 NOT_STARTED 개발자 100.0 1 TSK-002 FS 0 2028-04-20 2028-04-21 최적화된 빌드 설정, 의존성 정리 목록, 번들 사이즈 전후 비교 보고서, TSK-005 불필요한 리렌더링 제거 React Profiler로 불필요한 리렌더링 발생 컴포넌트 식별. React.memo, useMemo, useCallback 적용, 상태 관리 구조 개선, 컨텍스트 분리를 통한 렌더링 최적화 24.0 NOT_STARTED 개발자 100.0 1 TSK-002 FS 0 2028-04-22 2028-04-24 리렌더링 분석 보고서, 최적화 적용 코드, 렌더링 횟수 전후 비교 데이터, TSK-006 이미지 최적화 이미지 포맷 최적화(WebP/AVIF 변환), 반응형 이미지(srcset) 적용, lazy loading 구현, 적절한 이미지 사이즈 제공. CDN 캐싱 전략 수립 및 적용 16.0 NOT_STARTED 개발자 100.0 1 TSK-002 FS 0 2028-04-25 2028-04-26 이미지 최적화 파이프라인, 최적화된 이미지 에셋, 이미지 로딩 전략 문서, TSK-007 이미지 에셋 리소스 정리 및 제공 디자인 시스템 내 이미지, 아이콘, 일러스트 등 에셋의 적정 해상도 및 포맷 재정의. SVG 아이콘 정리 및 불필요한 에셋 식별 12.0 NOT_STARTED 디자이너 100.0 1 TSK-002 FS 0 2028-04-27 2028-04-27 최적화된 디자인 에셋, 에셋 가이드라인 문서, TSK-008 정적 리소스 최적화 폰트 최적화(font-display:swap, 서브셋 적용), CSS 최적화(critical CSS 추출, 미사용 CSS 제거), 리소스 힌트(preconnect, dns-prefetch) 적용, 서비스워커 캐싱 전략 구현 16.0 NOT_STARTED 개발자 100.0 1 TSK-006 FS 0, TSK-007 FS 0 2028-04-28 2028-04-29 리소스 최적화 코드, 캐싱 전략 문서, 리소스 로딩 워터폴 전후 비교, TSK-009 초기 로딩 속도 최적화 (SSR/SSG 검토 및 크리티컬 패스 개선) 서버 사이드 렌더링 또는 정적 생성 적용 검토, 크리티컬 렌더링 패스 최적화, 렌더 블로킹 리소스 제거, Above-the-fold 콘텐츠 우선 로딩 구현 24.0 NOT_STARTED 개발자 100.0 1 TSK-003 FS 0, TSK-004 FS 0 2028-04-30 2028-05-02 크리티컬 패스 최적화 코드, SSR/SSG 적용 결과(해당 시), LCP 개선 전후 비교 데이터, TSK-010 성능 최적화 통합 QA 테스트 최적화 적용 후 전체 기능 회귀 테스트 수행. 다양한 디바이스(모바일/데스크톱), 네트워크 환경(3G/4G/WiFi)에서 성능 테스트. 크로스 브라우저 호환성 검증 20.0 NOT_STARTED QA 100.0 1 TSK-003 FS 0, TSK-004 FS 0, TSK-005 FS 0, TSK-008 FS 0, TSK-009 FS 0 2028-05-03 2028-05-04 회귀 테스트 결과 보고서, 디바이스별 성능 테스트 결과, 크로스 브라우저 테스트 결과, 버그 리포트, TSK-011 Lighthouse 성능 점수 목표 달성 검증 Lighthouse CI를 활용한 최종 성능 측정 수행. LCP, FCP, TTI, CLS 등 Core Web Vitals 목표치 달성 여부 확인. 미달 항목에 대한 추가 개선 사항 도출 8.0 NOT_STARTED 개발자 100.0 1 TSK-010 FS 0 2028-05-05 2028-05-05 최종 Lighthouse 측정 보고서, Core Web Vitals 전후 비교표, 미달 항목 개선 권고사항, TSK-012 성능 모니터링 체계 구축 및 최종 보고 지속적 성능 모니터링을 위한 Lighthouse CI/성능 대시보드 구축. 성능 버짓 설정, CI/CD 파이프라인 내 성능 검증 게이트 추가. 최종 성과 보고서 작성 16.0 NOT_STARTED 개발자 100.0 1 TSK-011 FS 0 2028-05-06 2028-05-07 성능 모니터링 대시보드, 성능 버짓 설정 파일, CI/CD 성능 게이트 설정, 최종 성과 보고서 2028-04-15 2028-05-07, WP-007 E2E 테스트 및 회귀 테스트 자동화 주요 사용자 시나리오(대시보드 조회, 종목 교체, 차트 조작, 시세 확인)에 대한 E2E 테스트 시나리오 작성 및 자동화. 회귀 테스트 스위트 구성 및 CI/CD 파이프라인 연동 TSK-001 E2E 테스트 전략 및 시나리오 설계 주요 사용자 시나리오(대시보드 조회, 종목 교체, 차트 조작, 시세 확인)를 분석하고, 테스트 범위·우선순위·도구 선정(Playwright/Cypress 등)을 포함한 E2E 테스트 전략 문서를 작성한다. 각 시나리오별 테스트 케이스를 정의하고 예상 결과를 명세한다. 16.0 NOT_STARTED QA 100.0 1 TSK-012 FS 0 2028-05-08 2028-05-09 E2E 테스트 전략 문서, 테스트 시나리오 명세서, 테스트 도구 선정 보고서, TSK-002 테스트 환경 및 프레임워크 셋업 선정된 E2E 테스트 도구(Playwright/Cypress 등)를 프로젝트에 설치·설정하고, 테스트 실행을 위한 기본 프로젝트 구조(디렉토리, 설정 파일, 헬퍼 유틸리티)를 구성한다. 테스트용 환경 변수 및 테스트 전용 데이터 시드 스크립트를 준비한다. 16.0 NOT_STARTED 개발자 100.0 1 TSK-001 FS 0 2028-05-10 2028-05-11 테스트 프레임워크 설정 코드, 테스트 프로젝트 구조, 테스트 환경 설정 가이드, TSK-003 공통 테스트 유틸리티 및 Page Object 모델 구현 반복 사용되는 로그인, 네비게이션, 데이터 대기 등의 공통 헬퍼 함수를 구현하고, 주요 페이지(대시보드, 종목 상세, 차트, 시세 페이지)에 대한 Page Object 모델을 작성하여 테스트 코드의 재사용성과 유지보수성을 확보한다. 20.0 NOT_STARTED 개발자 100.0 1 TSK-002 FS 0 2028-05-12 2028-05-13 Page Object 클래스 코드, 공통 헬퍼/유틸리티 모듈, 사용 가이드 문서, TSK-004 대시보드 조회 E2E 테스트 자동화 대시보드 페이지 접근, 위젯 로딩, 데이터 정합성 확인, 필터링/정렬 동작, 빈 상태 처리 등 대시보드 조회 관련 시나리오를 자동화 테스트로 구현한다. 16.0 NOT_STARTED QA 100.0 1 TSK-003 FS 0 2028-05-14 2028-05-15 대시보드 조회 테스트 코드, 테스트 실행 결과 리포트, TSK-005 종목 교체 E2E 테스트 자동화 종목 검색, 종목 선택/교체, 교체 후 데이터 갱신 확인, 유효하지 않은 종목 입력 시 에러 처리 등 종목 교체 플로우에 대한 E2E 테스트를 자동화한다. 16.0 NOT_STARTED QA 100.0 1 TSK-003 FS 0 2028-05-16 2028-05-17 종목 교체 테스트 코드, 테스트 실행 결과 리포트, TSK-006 차트 조작 E2E 테스트 자동화 차트 렌더링 확인, 줌인/줌아웃, 기간 변경, 차트 타입 전환, 툴팁 표시, 드래그 동작 등 차트 인터랙션 시나리오에 대한 E2E 테스트를 자동화한다. 캔버스/SVG 기반 차트의 시각적 검증 전략을 포함한다. 24.0 NOT_STARTED QA 100.0 1 TSK-003 FS 0 2028-05-18 2028-05-20 차트 조작 테스트 코드, 비주얼 스냅샷 베이스라인, 테스트 실행 결과 리포트, TSK-007 시세 확인 E2E 테스트 자동화 실시간 시세 데이터 로딩, 시세 갱신 주기 확인, 호가창 동작, 시세 정렬/필터링, 네트워크 지연 시 폴백 동작 등 시세 확인 관련 시나리오에 대한 E2E 테스트를 자동화한다. 20.0 NOT_STARTED QA 100.0 1 TSK-003 FS 0 2028-05-21 2028-05-22 시세 확인 테스트 코드, 테스트 실행 결과 리포트, TSK-008 회귀 테스트 스위트 구성 작성된 E2E 테스트를 기반으로 회귀 테스트 스위트를 구성한다. 테스트를 우선순위(P0/P1/P2)별로 태깅하고, 스모크 테스트 세트와 전체 회귀 테스트 세트를 분리 구성한다. 테스트 실행 순서 및 병렬 실행 전략을 정의한다. 12.0 NOT_STARTED QA 100.0 1 TSK-004 FS 0, TSK-005 FS 0, TSK-006 FS 0, TSK-007 FS 0 2028-05-23 2028-05-23 회귀 테스트 스위트 구성 파일, 테스트 태깅 체계 문서, 스모크/전체 회귀 테스트 세트 정의서, TSK-009 CI/CD 파이프라인 연동 CI/CD 파이프라인(GitHub Actions/Jenkins/GitLab CI 등)에 E2E 테스트 및 회귀 테스트 실행 단계를 추가한다. PR 생성 시 스모크 테스트, 머지 시 전체 회귀 테스트가 자동 실행되도록 워크플로우를 구성하고, 테스트 실패 시 배포 차단 정책을 설정한다. 16.0 NOT_STARTED 개발자 100.0 1 TSK-008 FS 0 2028-05-24 2028-05-25 CI/CD 파이프라인 설정 파일, 워크플로우 구성 코드, 파이프라인 연동 가이드, TSK-010 테스트 리포팅 및 알림 시스템 구축 테스트 실행 결과를 HTML/JSON 리포트로 자동 생성하고, 실패 시 Slack/이메일 등으로 알림을 전송하는 시스템을 구축한다. 테스트 이력 추적 및 실패 트렌드 분석이 가능하도록 리포트 저장소를 구성한다. 12.0 NOT_STARTED 개발자 100.0 1 TSK-009 FS 0 2028-05-26 2028-05-26 리포트 생성 설정 코드, 알림 연동 설정, 리포트 저장소 구성, TSK-011 테스트 데이터 관리 체계 수립 E2E 테스트에 필요한 테스트 데이터(목 데이터, 시드 데이터)의 생성·관리·초기화 체계를 수립한다. 테스트 간 데이터 격리 전략을 정의하고, 외부 API 의존성에 대한 목(mock)/스텁(stub) 서버 설정을 구현한다. 16.0 NOT_STARTED 개발자 100.0 1 TSK-002 FS 0 2028-05-27 2028-05-28 테스트 데이터 시드 스크립트, 목 서버 설정 코드, 테스트 데이터 관리 가이드, TSK-012 크로스 브라우저 및 반응형 테스트 설정 Chrome, Firefox, Safari 등 주요 브라우저와 모바일/태블릿 뷰포트에서의 E2E 테스트 실행 환경을 설정한다. 브라우저별 테스트 매트릭스를 정의하고 CI 파이프라인에서 병렬 실행되도록 구성한다. 12.0 NOT_STARTED QA 100.0 1 TSK-008 FS 0, TSK-009 FS 0 2028-05-29 2028-05-29 브라우저 테스트 매트릭스 문서, 크로스 브라우저 설정 파일, 반응형 뷰포트 설정 코드, TSK-013 테스트 유지보수 가이드 및 팀 교육 테스트 코드 작성 컨벤션, 새로운 테스트 추가 절차, 실패 테스트 디버깅 방법, Page Object 확장 가이드 등을 포함한 유지보수 가이드를 작성한다. QA 및 개발팀 대상으로 테스트 프레임워크 사용법 교육을 실시한다. 12.0 NOT_STARTED QA 100.0 1 TSK-008 FS 0, TSK-010 FS 0 2028-05-30 2028-05-30 테스트 유지보수 가이드 문서, 테스트 작성 컨벤션 문서, 교육 자료, TSK-014 통합 검증 및 안정화 전체 E2E 테스트 및 회귀 테스트 스위트를 CI/CD 파이프라인에서 종합 실행하여 안정성을 검증한다. 불안정(flaky) 테스트를 식별·수정하고, 테스트 실행 시간을 최적화한다. 최종 테스트 커버리지 리포트를 생성하고 PM에게 완료 보고한다. 16.0 NOT_STARTED QA 100.0 1 TSK-010 FS 0, TSK-011 FS 0, TSK-012 FS 0, TSK-013 FS 0 2028-05-31 2028-06-01 통합 검증 결과 리포트, Flaky 테스트 수정 내역, 최종 테스트 커버리지 리포트, 완료 보고서 2028-05-08 2028-06-01 | 2027-12-03 | 2028-06-01 | QA 완료 | E2E 테스트 결과, 성능 테스트 보고서, 크로스 브라우저 호환성 테스트 결과, 버그 수정 완료 보고서 |
| PH-006 | 배포 및 안정화 | 프로덕션 환경 배포, 모니터링 설정, 운영 안정화 및 사용자 피드백 반영 | 6 | WP-001 프로덕션 인프라 구성 및 배포 프로덕션 환경 서버 인프라 구성, CI/CD 파이프라인 최종 설정, SSL 인증서 적용, 도메인 연결 및 전체 서비스(대시보드, 차트, 뉴스, 종목정보, 시세 모듈) 프로덕션 배포 수행 TSK-001 프로덕션 인프라 아키텍처 설계 프로덕션 환경의 서버 구성, 네트워크 토폴로지, 로드밸런서, 오토스케일링 정책 등 전체 인프라 아키텍처를 설계하고 문서화 16.0 NOT_STARTED 개발자 100.0 1 TSK-014 FS 0 2028-06-02 2028-06-03 인프라 아키텍처 다이어그램, 서버 스펙 명세서, 네트워크 구성도, TSK-002 프로덕션 서버 프로비저닝 클라우드 환경(AWS/GCP/Azure 등)에 프로덕션용 서버 인스턴스 생성, VPC/서브넷 구성, 보안 그룹 설정, 스토리지 할당 수행 16.0 NOT_STARTED 개발자 100.0 1 TSK-001 FS 0 2028-06-04 2028-06-05 프로비저닝된 서버 인스턴스, 보안 그룹 설정 문서, IaC 스크립트(Terraform/CloudFormation), TSK-003 프로덕션 데이터베이스 구성 프로덕션용 DB 인스턴스 생성, 리플리케이션 설정, 백업 정책 구성, 접속 보안 설정 및 성능 파라미터 튜닝 12.0 NOT_STARTED 개발자 100.0 1 TSK-002 FS 0 2028-06-06 2028-06-06 DB 인스턴스 구성 완료, 백업/복구 정책 문서, DB 접속 정보 시크릿 등록, TSK-004 도메인 등록 및 DNS 설정 프로덕션 서비스용 도메인 등록(또는 기존 도메인 활용), DNS 레코드(A, CNAME, MX 등) 설정, 서브도메인 구성 4.0 NOT_STARTED 개발자 100.0 1 TSK-002 FS 0 2028-06-07 2028-06-07 도메인 등록 완료, DNS 레코드 설정 문서, TSK-005 SSL/TLS 인증서 발급 및 적용 프로덕션 도메인에 대한 SSL/TLS 인증서 발급(Let's Encrypt 또는 상용 인증서), 웹서버/로드밸런서에 인증서 적용, HTTPS 리다이렉트 설정, 인증서 자동 갱신 구성 8.0 NOT_STARTED 개발자 100.0 1 TSK-004 FS 0 2028-06-08 2028-06-08 SSL 인증서 적용 완료, HTTPS 동작 확인 결과, 인증서 자동 갱신 스크립트, TSK-006 로드밸런서 및 리버스 프록시 구성 프로덕션 트래픽 분산을 위한 로드밸런서(ALB/NLB) 설정, Nginx/Traefik 리버스 프록시 구성, 헬스체크 엔드포인트 설정 12.0 NOT_STARTED 개발자 100.0 1 TSK-002 FS 0, TSK-005 FS 0 2028-06-09 2028-06-09 로드밸런서 구성 완료, 리버스 프록시 설정 파일, 헬스체크 동작 확인, TSK-007 CI/CD 파이프라인 프로덕션 설정 GitHub Actions/Jenkins/GitLab CI 등 CI/CD 파이프라인의 프로덕션 배포 스테이지 구성, 빌드-테스트-배포 자동화 워크플로우 설정, 환경변수 및 시크릿 관리 20.0 NOT_STARTED 개발자 100.0 1 TSK-002 FS 0 2028-06-10 2028-06-11 CI/CD 파이프라인 설정 파일, 배포 워크플로우 문서, 시크릿 관리 체계, TSK-008 컨테이너 오케스트레이션 환경 구성 Docker 이미지 프로덕션 빌드 최적화, Docker Compose 또는 Kubernetes 클러스터 프로덕션 설정, 컨테이너 리소스 제한 및 오토스케일링 정책 적용 16.0 NOT_STARTED 개발자 100.0 1 TSK-002 FS 0, TSK-007 FS 0 2028-06-12 2028-06-13 프로덕션 Dockerfile, 오케스트레이션 설정 파일(docker-compose/k8s manifests), 오토스케일링 정책 문서, TSK-009 프로덕션 환경변수 및 설정 관리 프로덕션 환경의 모든 서비스 환경변수 정리, 시크릿 매니저(Vault/AWS Secrets Manager 등) 연동, 설정 파일 분리 및 관리 체계 수립 8.0 NOT_STARTED 개발자 100.0 1 TSK-002 FS 0, TSK-003 FS 0 2028-06-14 2028-06-14 환경변수 목록 문서, 시크릿 매니저 연동 완료, 환경별 설정 분리 완료, TSK-010 대시보드 모듈 프로덕션 배포 대시보드 서비스의 프로덕션 빌드 생성, 프로덕션 환경 배포, 배포 후 정상 동작 확인 8.0 NOT_STARTED 개발자 100.0 1 TSK-006 FS 0, TSK-008 FS 0, TSK-009 FS 0 2028-06-15 2028-06-15 대시보드 프로덕션 배포 완료, 배포 확인 체크리스트, TSK-011 차트 모듈 프로덕션 배포 차트 서비스의 프로덕션 빌드 생성, 실시간 데이터 연동 확인, 프로덕션 환경 배포 수행 8.0 NOT_STARTED 개발자 100.0 1 TSK-006 FS 0, TSK-008 FS 0, TSK-009 FS 0 2028-06-16 2028-06-16 차트 모듈 프로덕션 배포 완료, 실시간 데이터 연동 확인 결과, TSK-012 뉴스 모듈 프로덕션 배포 뉴스 서비스의 프로덕션 빌드 생성, 외부 뉴스 API 연동 확인, 프로덕션 환경 배포 수행 8.0 NOT_STARTED 개발자 100.0 1 TSK-006 FS 0, TSK-008 FS 0, TSK-009 FS 0 2028-06-17 2028-06-17 뉴스 모듈 프로덕션 배포 완료, 외부 API 연동 확인 결과, TSK-013 종목정보 모듈 프로덕션 배포 종목정보 서비스의 프로덕션 빌드 생성, 데이터 소스 연동 확인, 프로덕션 환경 배포 수행 8.0 NOT_STARTED 개발자 100.0 1 TSK-006 FS 0, TSK-008 FS 0, TSK-009 FS 0 2028-06-18 2028-06-18 종목정보 모듈 프로덕션 배포 완료, 데이터 정합성 확인 결과, TSK-014 시세 모듈 프로덕션 배포 실시간 시세 서비스의 프로덕션 빌드 생성, WebSocket/스트리밍 연결 확인, 프로덕션 환경 배포 수행 12.0 NOT_STARTED 개발자 100.0 1 TSK-006 FS 0, TSK-008 FS 0, TSK-009 FS 0 2028-06-19 2028-06-19 시세 모듈 프로덕션 배포 완료, 실시간 스트리밍 동작 확인 결과, TSK-015 모니터링 및 로깅 시스템 구축 프로덕션 환경 모니터링 도구(Prometheus/Grafana/CloudWatch 등) 설치 및 구성, 중앙 집중식 로깅(ELK/CloudWatch Logs) 설정, 알림 규칙 구성 16.0 NOT_STARTED 개발자 100.0 1 TSK-002 FS 0 2028-06-20 2028-06-21 모니터링 대시보드, 로그 수집 파이프라인, 알림 규칙 설정 문서, TSK-016 프로덕션 통합 테스트 수행 전체 서비스(대시보드, 차트, 뉴스, 종목정보, 시세) 간 통합 동작 검증, API 간 연동 테스트, 크로스 브라우저 테스트 수행 16.0 NOT_STARTED QA 100.0 1 TSK-010 FS 0, TSK-011 FS 0, TSK-012 FS 0, TSK-013 FS 0, TSK-014 FS 0 2028-06-22 2028-06-23 통합 테스트 결과 보고서, 크로스 브라우저 테스트 결과, 버그 리포트, TSK-017 성능 및 부하 테스트 프로덕션 환경 대상 부하 테스트(JMeter/K6/Locust 등) 수행, 동시 접속자 시나리오 테스트, 병목 구간 식별 및 성능 기준 충족 여부 확인 16.0 NOT_STARTED QA 100.0 1 TSK-016 FS 0 2028-06-24 2028-06-25 부하 테스트 결과 보고서, 성능 지표 측정 결과, 병목 구간 분석 문서, TSK-018 보안 점검 및 취약점 스캔 프로덕션 환경 보안 점검 수행, OWASP 기준 취약점 스캔, 방화벽 규칙 검증, 접근 제어 정책 확인 12.0 NOT_STARTED QA 100.0 1 TSK-016 FS 0 2028-06-26 2028-06-26 보안 점검 결과 보고서, 취약점 스캔 리포트, 보안 조치 권고 사항, TSK-019 프로덕션 UI/UX 최종 검수 프로덕션 환경에서 전체 서비스의 UI/UX 최종 검수, 디자인 시안 대비 구현 일치 여부 확인, 반응형 레이아웃 점검 12.0 NOT_STARTED 디자이너 100.0 1 TSK-010 FS 0, TSK-011 FS 0, TSK-012 FS 0, TSK-013 FS 0, TSK-014 FS 0 2028-06-27 2028-06-27 UI/UX 검수 결과 보고서, 수정 요청 목록, TSK-020 배포 롤백 전략 수립 및 테스트 프로덕션 배포 실패 시 롤백 절차 수립, Blue-Green 또는 카나리 배포 전략 구성, 롤백 시나리오 테스트 수행 12.0 NOT_STARTED 개발자 100.0 1 TSK-007 FS 0, TSK-008 FS 0 2028-06-28 2028-06-28 롤백 절차 문서, 배포 전략 설정 완료, 롤백 테스트 결과, TSK-021 재해 복구(DR) 계획 수립 프로덕션 환경 장애 대응 시나리오 수립, 데이터 백업/복구 절차 문서화, RTO/RPO 기준 설정 및 DR 테스트 수행 12.0 NOT_STARTED 개발자 100.0 1 TSK-003 FS 0, TSK-015 FS 0 2028-06-29 2028-06-29 재해 복구 계획서, 백업/복구 절차 문서, DR 테스트 결과, TSK-022 운영 매뉴얼 및 인수인계 문서 작성 프로덕션 인프라 운영 매뉴얼 작성, 배포 절차서, 장애 대응 가이드, 모니터링 가이드 등 운영팀 인수인계 문서 작성 16.0 NOT_STARTED PM 100.0 1 TSK-015 FS 0, TSK-020 FS 0, TSK-021 FS 0 2028-06-30 2028-07-01 운영 매뉴얼, 배포 절차서, 장애 대응 가이드, 모니터링 가이드, TSK-023 최종 Go-Live 승인 및 프로덕션 오픈 모든 테스트 통과 확인, 이해관계자 최종 승인, 프로덕션 트래픽 전환, DNS 전파 확인 및 서비스 오픈 선언 8.0 NOT_STARTED PM 100.0 1 TSK-016 FS 0, TSK-017 FS 0, TSK-018 FS 0, TSK-019 FS 0, TSK-022 FS 0 2028-07-02 2028-07-02 Go-Live 체크리스트 완료, 최종 승인 문서, 서비스 오픈 공지 2028-06-02 2028-07-02, WP-002 모니터링 및 알림 시스템 구축 서비스 가용성 모니터링, 외부 API(주식 시세, 금/은 시세, 암호화폐, 시장지수) 연동 상태 모니터링, 에러 추적 시스템 설정, 성능 메트릭 수집 대시보드 구성 및 장애 알림 체계 수립 TSK-001 모니터링 요구사항 분석 및 아키텍처 설계 모니터링 대상 서비스 목록 정의, 외부 API(주식 시세, 금/은 시세, 암호화폐, 시장지수) 연동 포인트 파악, 모니터링 도구 선정(Prometheus, Grafana, Datadog 등), 전체 모니터링 아키텍처 설계 16.0 NOT_STARTED PM 100.0 1 TSK-023 FS 0 2028-07-03 2028-07-04 모니터링 요구사항 정의서, 모니터링 아키텍처 설계서, 도구 선정 보고서, TSK-002 모니터링 인프라 환경 구축 Prometheus, Grafana 등 모니터링 스택 서버 프로비저닝 및 설치, 네트워크 설정, 보안 그룹 구성, 기본 연동 테스트 16.0 NOT_STARTED 개발자 100.0 1 TSK-001 FS 0 2028-07-05 2028-07-06 모니터링 서버 구성 완료, 인프라 구성도, 접속 정보 문서, TSK-003 서비스 가용성 모니터링 에이전트 개발 핵심 서비스(웹 서버, API 서버, DB 등)의 헬스체크 엔드포인트 구현, 가용성 메트릭 수집 에이전트 개발, 업타임/다운타임 기록 로직 구현 24.0 NOT_STARTED 개발자 100.0 1 TSK-002 FS 0 2028-07-07 2028-07-09 헬스체크 에이전트 코드, 가용성 메트릭 수집 모듈, 단위 테스트 코드, TSK-004 주식 시세 API 연동 상태 모니터링 개발 주식 시세 외부 API 호출 상태 모니터링 구현, 응답 시간·성공률·에러율 메트릭 수집, API 키 만료 및 Rate Limit 감지 로직 개발 16.0 NOT_STARTED 개발자 100.0 1 TSK-002 FS 0 2028-07-10 2028-07-11 주식 API 모니터링 모듈, 메트릭 정의서, 단위 테스트 코드, TSK-005 금/은 시세 API 연동 상태 모니터링 개발 금/은 시세 외부 API 호출 상태 모니터링 구현, 응답 시간·성공률·에러율 메트릭 수집, 데이터 정합성 검증 로직 개발 12.0 NOT_STARTED 개발자 100.0 1 TSK-002 FS 0 2028-07-12 2028-07-12 금/은 시세 API 모니터링 모듈, 메트릭 정의서, 단위 테스트 코드, TSK-006 암호화폐 API 연동 상태 모니터링 개발 암호화폐 시세 외부 API 호출 상태 모니터링 구현, WebSocket 연결 상태 감시, 응답 시간·성공률·에러율 메트릭 수집 16.0 NOT_STARTED 개발자 100.0 1 TSK-002 FS 0 2028-07-13 2028-07-14 암호화폐 API 모니터링 모듈, 메트릭 정의서, 단위 테스트 코드, TSK-007 시장지수 API 연동 상태 모니터링 개발 시장지수(코스피, S&P500 등) 외부 API 호출 상태 모니터링 구현, 응답 시간·성공률·에러율 메트릭 수집, 장 운영시간 기반 스케줄링 적용 12.0 NOT_STARTED 개발자 100.0 1 TSK-002 FS 0 2028-07-15 2028-07-15 시장지수 API 모니터링 모듈, 메트릭 정의서, 단위 테스트 코드, TSK-008 에러 추적 시스템 설정 Sentry 등 에러 추적 도구 설치 및 설정, 서비스별 프로젝트 생성, SDK 연동, 에러 분류 규칙 정의, 소스맵 업로드 파이프라인 구성 20.0 NOT_STARTED 개발자 100.0 1 TSK-002 FS 0 2028-07-16 2028-07-17 에러 추적 시스템 설정 완료, SDK 연동 가이드, 에러 분류 규칙 문서, TSK-009 성능 메트릭 수집 체계 구축 CPU, 메모리, 디스크, 네트워크 등 시스템 메트릭 수집 설정, 애플리케이션 레벨 메트릭(요청 처리 시간, 동시 접속자 수, 큐 대기열 등) 수집 구현, 메트릭 보존 정책 설정 20.0 NOT_STARTED 개발자 100.0 1 TSK-002 FS 0 2028-07-18 2028-07-19 메트릭 수집 모듈, 메트릭 카탈로그 문서, 보존 정책 설정 파일, TSK-010 모니터링 대시보드 UI/UX 설계 모니터링 대시보드 화면 구성 설계, 핵심 지표 시각화 방식 정의, 서비스 가용성·외부 API 상태·성능 메트릭 별 패널 레이아웃 설계 16.0 NOT_STARTED 디자이너 100.0 1 TSK-001 FS 0 2028-07-20 2028-07-21 대시보드 와이어프레임, 시각화 가이드, 컬러 코드 및 임계값 표시 규칙, TSK-011 Grafana 대시보드 구성 - 서비스 가용성 서비스 가용성 현황 대시보드 구성, 업타임 비율·응답 시간·서비스 상태 패널 생성, 시계열 그래프 및 상태 맵 구현 12.0 NOT_STARTED 개발자 100.0 1 TSK-003 FS 0, TSK-009 FS 0, TSK-010 FS 0 2028-07-22 2028-07-22 서비스 가용성 대시보드 JSON, 대시보드 스크린샷, TSK-012 Grafana 대시보드 구성 - 외부 API 연동 상태 외부 API(주식, 금/은, 암호화폐, 시장지수) 연동 상태 통합 대시보드 구성, API별 성공률·응답 시간·에러율 패널 생성 16.0 NOT_STARTED 개발자 100.0 1 TSK-004 FS 0, TSK-005 FS 0, TSK-006 FS 0, TSK-007 FS 0, TSK-010 FS 0 2028-07-23 2028-07-24 외부 API 모니터링 대시보드 JSON, 대시보드 스크린샷, TSK-013 Grafana 대시보드 구성 - 성능 메트릭 시스템 및 애플리케이션 성능 메트릭 대시보드 구성, CPU·메모리·디스크·네트워크 사용률, 요청 처리량·지연시간 패널 생성 12.0 NOT_STARTED 개발자 100.0 1 TSK-009 FS 0, TSK-010 FS 0 2028-07-25 2028-07-25 성능 메트릭 대시보드 JSON, 대시보드 스크린샷, TSK-014 알림 규칙 정의 및 임계값 설정 서비스 다운, API 연동 실패, 에러율 급증, 성능 저하 등 장애 상황별 알림 규칙 정의, 임계값(Warning/Critical) 설정, 에스컬레이션 정책 수립 12.0 NOT_STARTED PM 100.0 1 TSK-001 FS 0, TSK-003 FS 0 2028-07-26 2028-07-26 알림 규칙 정의서, 임계값 매트릭스, 에스컬레이션 정책 문서, TSK-015 알림 채널 연동 개발 Slack, 이메일, SMS, PagerDuty 등 알림 채널 연동 구현, 알림 채널별 메시지 템플릿 개발, 알림 발송 로직 및 중복 방지 처리 20.0 NOT_STARTED 개발자 100.0 1 TSK-002 FS 0, TSK-014 FS 0 2028-07-27 2028-07-28 알림 채널 연동 모듈, 메시지 템플릿, 알림 발송 로그 테이블, TSK-016 알림 엔진 개발 알림 규칙 평가 엔진 구현, Prometheus Alertmanager 또는 커스텀 알림 엔진 설정, 알림 그룹핑·억제·음소거 기능 구현 24.0 NOT_STARTED 개발자 100.0 1 TSK-014 FS 0, TSK-015 FS 0 2028-07-29 2028-07-31 알림 엔진 코드, 알림 규칙 설정 파일, 단위 테스트 코드, TSK-017 장애 대응 런북 작성 주요 장애 시나리오별 대응 절차 문서 작성, 외부 API 장애 시 폴백 처리 가이드, 서비스 복구 절차 정의 16.0 NOT_STARTED PM 100.0 1 TSK-014 FS 0 2028-08-01 2028-08-02 장애 대응 런북, 폴백 처리 가이드, 복구 절차서, TSK-018 통합 테스트 - 모니터링 시스템 모니터링 메트릭 수집 정확성 검증, 대시보드 데이터 표시 정합성 테스트, 에러 추적 시스템 동작 검증, 장애 시뮬레이션을 통한 알림 발송 테스트 24.0 NOT_STARTED QA 100.0 1 TSK-008 FS 0, TSK-011 FS 0, TSK-012 FS 0, TSK-013 FS 0, TSK-016 FS 0 2028-08-03 2028-08-05 테스트 시나리오 문서, 테스트 결과 보고서, 결함 목록, TSK-019 부하 테스트 및 모니터링 성능 검증 대량 메트릭 유입 시 모니터링 시스템 성능 검증, 대시보드 렌더링 성능 테스트, 알림 지연시간 측정, 스토리지 용량 산정 16.0 NOT_STARTED QA 100.0 1 TSK-018 FS 0 2028-08-06 2028-08-07 부하 테스트 결과 보고서, 성능 기준선 문서, 용량 산정 보고서, TSK-020 운영 가이드 작성 및 인수인계 모니터링 시스템 운영 매뉴얼 작성, 대시보드 사용 가이드, 알림 관리 가이드, 운영팀 교육 및 인수인계 16.0 NOT_STARTED PM 100.0 1 TSK-018 FS 0, TSK-017 FS 0 2028-08-08 2028-08-09 운영 매뉴얼, 대시보드 사용 가이드, 교육 자료, 인수인계 체크리스트 2028-07-03 2028-08-09, WP-003 성능 최적화 및 안정화 프로덕션 환경에서의 차트 렌더링 성능 최적화, 실시간 시세 데이터 갱신 안정화, 캐싱 전략 적용, 종목 교체 시 데이터 로딩 최적화, 부하 테스트 수행 및 병목 구간 개선 TSK-001 차트 렌더링 성능 프로파일링 프로덕션 환경 기준 차트 렌더링 성능 측정 및 병목 구간 식별. Chrome DevTools, Lighthouse, React Profiler 등을 활용하여 FPS, 렌더링 시간, 메모리 사용량 등 기초 지표 수집 16.0 NOT_STARTED 개발자 100.0 1 TSK-020 FS 0 2028-08-10 2028-08-11 성능 프로파일링 보고서, 병목 구간 목록, 기초 성능 지표 베이스라인 문서, TSK-002 성능 최적화 전략 수립 및 계획 프로파일링 결과를 기반으로 차트 렌더링, 실시간 데이터 갱신, 캐싱, 종목 교체 시나리오별 최적화 전략 수립. 우선순위 결정 및 구현 로드맵 작성 12.0 NOT_STARTED PM 100.0 1 TSK-001 FS 0 2028-08-12 2028-08-12 성능 최적화 전략 문서, 우선순위 매트릭스, 구현 로드맵, TSK-003 차트 렌더링 최적화 - 가상화 및 데이터 샘플링 대량 데이터 포인트 렌더링 시 가상화(Virtualization) 적용, 줌 레벨에 따른 데이터 다운샘플링(LTTB 알고리즘 등) 구현, 불필요한 리렌더링 방지를 위한 메모이제이션 적용 32.0 NOT_STARTED 개발자 100.0 1 TSK-002 FS 0 2028-08-13 2028-08-16 가상화 적용 코드, 다운샘플링 모듈, 리렌더링 최적화 코드, TSK-004 차트 렌더링 최적화 - Canvas/WebGL 렌더링 개선 Canvas 또는 WebGL 기반 차트 렌더링 파이프라인 최적화. 오프스크린 캔버스 활용, 배치 렌더링, requestAnimationFrame 기반 프레임 스케줄링 적용 24.0 NOT_STARTED 개발자 100.0 1 TSK-003 FS 0 2028-08-17 2028-08-19 렌더링 파이프라인 최적화 코드, 프레임 스케줄링 모듈, TSK-005 실시간 시세 데이터 WebSocket 연결 안정화 WebSocket 연결 끊김 시 자동 재연결 로직 구현, 지수 백오프(Exponential Backoff) 적용, 연결 상태 모니터링 및 헬스체크 메커니즘 구현, 중복 구독 방지 로직 추가 24.0 NOT_STARTED 개발자 100.0 1 TSK-002 FS 0 2028-08-20 2028-08-22 WebSocket 재연결 모듈, 연결 상태 모니터링 코드, 헬스체크 로직, TSK-006 실시간 데이터 갱신 쓰로틀링 및 배치 업데이트 고빈도 시세 데이터 수신 시 쓰로틀링(Throttling) 적용, 다수의 데이터 업데이트를 배치로 묶어 단일 렌더 사이클에서 처리, Web Worker를 활용한 데이터 파싱 오프로딩 24.0 NOT_STARTED 개발자 100.0 1 TSK-005 FS 0 2028-08-23 2028-08-25 쓰로틀링 모듈, 배치 업데이트 로직, Web Worker 데이터 처리 코드, TSK-007 API 응답 캐싱 레이어 구현 시세 데이터 및 차트 데이터 API 응답에 대한 클라이언트 사이드 캐싱 전략 구현. HTTP 캐시 헤더 최적화, 인메모리 캐시(LRU), IndexedDB 기반 영구 캐시 계층 설계 및 적용 24.0 NOT_STARTED 개발자 100.0 1 TSK-002 FS 0 2028-08-26 2028-08-28 캐시 레이어 모듈, 캐시 정책 설정 코드, 캐시 무효화 로직, TSK-008 서버 사이드 캐싱 및 CDN 최적화 서버 레벨 Redis 캐싱 적용, 정적 차트 리소스 CDN 배포 최적화, API Gateway 레벨 캐싱 설정, 캐시 TTL 정책 수립 및 캐시 워밍 전략 적용 20.0 NOT_STARTED 개발자 100.0 1 TSK-007 FS 0 2028-08-29 2028-08-30 Redis 캐시 설정 코드, CDN 배포 설정, 캐시 TTL 정책 문서, TSK-009 종목 교체 시 데이터 프리페칭 구현 사용자 행동 패턴 기반 관련 종목 데이터 프리페칭(Prefetching) 구현. 관심종목 목록, 최근 조회 종목 기반 예측 로딩, 이전 종목 데이터 메모리 해제 및 새 종목 데이터 점진적 로딩 20.0 NOT_STARTED 개발자 100.0 1 TSK-007 FS 0 2028-08-31 2028-09-01 프리페칭 모듈, 예측 로딩 로직, 메모리 관리 코드, TSK-010 종목 교체 시 UI 전환 최적화 종목 교체 시 스켈레톤 UI 적용, 이전 차트 데이터 유지 상태에서 부드러운 전환 애니메이션 구현, 로딩 상태 관리 및 사용자 피드백 UX 개선 16.0 NOT_STARTED 개발자 100.0 1 TSK-009 FS 0 2028-09-02 2028-09-03 스켈레톤 UI 컴포넌트, 전환 애니메이션 코드, 로딩 상태 관리 로직, TSK-011 종목 교체 전환 UI/UX 디자인 종목 교체 시 스켈레톤 UI, 로딩 인디케이터, 전환 애니메이션 등 시각적 피드백 디자인. 성능 최적화 상태에서의 사용자 경험 일관성 보장 12.0 NOT_STARTED 디자이너 100.0 1 TSK-002 FS 0 2028-09-04 2028-09-04 전환 UI 디자인 시안, 스켈레톤 UI 디자인, 인터랙션 가이드, TSK-012 부하 테스트 환경 구축 k6, Artillery 또는 JMeter 기반 부하 테스트 환경 구축. 프로덕션 유사 환경 설정, 테스트 시나리오 작성(동시 접속자 수, 종목 교체 빈도, 실시간 데이터 수신 등) 16.0 NOT_STARTED QA 100.0 1 TSK-002 FS 0 2028-09-05 2028-09-06 부하 테스트 환경, 테스트 시나리오 문서, 테스트 스크립트, TSK-013 부하 테스트 1차 수행 및 병목 분석 최적화 적용 후 1차 부하 테스트 수행. 동시 접속 500/1000/2000명 기준 응답 시간, 처리량, 에러율 측정. APM 도구를 활용한 서버/클라이언트 병목 구간 상세 분석 16.0 NOT_STARTED QA 100.0 1 TSK-012 FS 0, TSK-004 FS 0, TSK-006 FS 0, TSK-008 FS 0, TSK-010 FS 0 2028-09-07 2028-09-08 1차 부하 테스트 결과 보고서, 병목 구간 분석 보고서, 개선 권고사항, TSK-014 병목 구간 개선 조치 1차 부하 테스트 결과 식별된 병목 구간에 대한 개선 조치 수행. 쿼리 최적화, 커넥션 풀 조정, GC 튜닝, 메모리 릭 수정 등 구체적 개선 작업 32.0 NOT_STARTED 개발자 100.0 1 TSK-013 FS 0 2028-09-09 2028-09-12 병목 개선 코드, 튜닝 설정 변경사항, 개선 전후 비교 데이터, TSK-015 부하 테스트 2차 수행 및 회귀 검증 병목 개선 후 2차 부하 테스트 수행. 1차 대비 성능 개선율 측정, 목표 KPI 달성 여부 확인, 회귀 결함 발생 여부 검증 12.0 NOT_STARTED QA 100.0 1 TSK-014 FS 0 2028-09-13 2028-09-13 2차 부하 테스트 결과 보고서, 성능 개선율 비교 보고서, 회귀 테스트 결과, TSK-016 성능 모니터링 대시보드 구축 프로덕션 환경 실시간 성능 모니터링 대시보드 구축. 차트 렌더링 FPS, API 응답 시간, WebSocket 연결 상태, 캐시 히트율, 에러율 등 핵심 지표 시각화 16.0 NOT_STARTED 개발자 100.0 1 TSK-006 FS 0, TSK-008 FS 0 2028-09-14 2028-09-15 모니터링 대시보드, 알림 설정, 지표 수집 코드, TSK-017 성능 최적화 종합 검증 및 문서화 전체 성능 최적화 결과 종합 검증, 최적화 전후 성능 비교 분석, 적용된 최적화 기법 및 설정값 문서화, 운영 가이드 작성 16.0 NOT_STARTED PM 100.0 1 TSK-015 FS 0, TSK-016 FS 0 2028-09-16 2028-09-17 성능 최적화 결과 종합 보고서, 최적화 전후 비교 분석서, 운영 가이드 문서 2028-08-10 2028-09-17, WP-004 사용자 피드백 수집 및 반영 사용자 피드백 수집 채널 구성, 대시보드 UI/UX 개선사항 반영, 뉴스 및 종목정보 표시 품질 개선, 종목 교체 기능 사용성 개선, 버그 리포트 대응 및 핫픽스 배포 프로세스 운영 TSK-001 피드백 수집 채널 요구사항 정의 사용자 피드백을 수집할 채널(인앱 피드백 위젯, 이메일, 설문조사 등)의 요구사항을 정의하고 수집 항목, 분류 체계, 우선순위 기준을 수립 12.0 NOT_STARTED PM 100.0 1 TSK-017 FS 0 2028-09-18 2028-09-18 피드백 수집 채널 요구사항 명세서, 피드백 분류 체계 문서, 우선순위 평가 기준표, TSK-002 인앱 피드백 위젯 UI 설계 대시보드 내 피드백 제출 위젯의 UI/UX 설계. 피드백 유형 선택, 스크린샷 첨부, 만족도 평점 등 입력 폼 디자인 16.0 NOT_STARTED 디자이너 100.0 1 TSK-001 FS 0 2028-09-19 2028-09-20 피드백 위젯 와이어프레임, UI 디자인 시안, 인터랙션 정의서, TSK-003 피드백 저장 API 및 DB 설계 피드백 데이터를 저장하기 위한 DB 테이블 설계 및 피드백 제출/조회/상태변경 REST API 개발 20.0 NOT_STARTED 백엔드 개발자 100.0 1 TSK-001 FS 0 2028-09-21 2028-09-22 ERD, DDL 스크립트, 피드백 CRUD API 코드, API 문서, TSK-004 인앱 피드백 위젯 프론트엔드 개발 디자인 시안 기반으로 피드백 제출 위젯 프론트엔드 컴포넌트 구현. 피드백 유형 선택, 텍스트 입력, 스크린샷 첨부 기능 포함 20.0 NOT_STARTED 프론트엔드 개발자 100.0 1 TSK-002 FS 0, TSK-003 FS 0 2028-09-23 2028-09-24 피드백 위젯 컴포넌트 코드, 단위 테스트 코드, TSK-005 피드백 관리 어드민 대시보드 개발 수집된 피드백을 조회, 분류, 상태 관리할 수 있는 내부 관리자용 대시보드 개발. 필터링, 검색, 통계 차트 포함 24.0 NOT_STARTED 프론트엔드 개발자 100.0 1 TSK-003 FS 0 2028-09-25 2028-09-27 어드민 대시보드 코드, 피드백 통계 리포트 화면, TSK-006 대시보드 UI/UX 개선사항 도출 기존 대시보드의 사용성 분석 및 사용자 피드백 기반 UI/UX 개선 포인트 도출. 히트맵, 사용자 여정 분석 결과 반영 16.0 NOT_STARTED 디자이너 100.0 1 TSK-005 FS 0 2028-09-28 2028-09-29 UX 감사 보고서, 개선사항 목록, 개선 우선순위 매트릭스, TSK-007 대시보드 레이아웃 및 네비게이션 개선 디자인 대시보드 전체 레이아웃 구조, 네비게이션 흐름, 정보 계층 구조 재설계. 반응형 레이아웃 최적화 포함 20.0 NOT_STARTED 디자이너 100.0 1 TSK-006 FS 0 2028-09-30 2028-10-01 개선된 레이아웃 디자인 시안, 네비게이션 플로우차트, 반응형 브레이크포인트 가이드, TSK-008 대시보드 UI/UX 개선 프론트엔드 구현 개선된 디자인 시안에 따라 대시보드 레이아웃, 네비게이션, 컴포넌트 스타일 등 프론트엔드 코드 수정 32.0 NOT_STARTED 프론트엔드 개발자 100.0 1 TSK-007 FS 0 2028-10-02 2028-10-05 개선된 대시보드 프론트엔드 코드, 스타일 가이드 업데이트, TSK-009 뉴스 피드 데이터 품질 분석 및 개선 설계 현재 뉴스 데이터 소스의 품질(정확도, 지연시간, 중복률) 분석 후 개선 방안 설계. 뉴스 필터링 로직 및 관련도 정렬 알고리즘 개선안 수립 16.0 NOT_STARTED 백엔드 개발자 100.0 1 TSK-008 FS 0 2028-10-06 2028-10-07 뉴스 데이터 품질 분석 보고서, 개선 알고리즘 설계 문서, TSK-010 뉴스 필터링 및 관련도 정렬 로직 구현 뉴스 중복 제거, 관련도 기반 정렬, 카테고리별 필터링 로직 백엔드 구현. 뉴스 캐싱 전략 최적화 포함 24.0 NOT_STARTED 백엔드 개발자 100.0 1 TSK-009 FS 0 2028-10-08 2028-10-10 뉴스 필터링 엔진 코드, 정렬 알고리즘 코드, 캐싱 로직 코드, TSK-011 뉴스 및 종목정보 표시 UI 개선 뉴스 카드 레이아웃, 종목 정보 표시 포맷, 실시간 데이터 갱신 인디케이터 등 프론트엔드 표시 품질 개선 20.0 NOT_STARTED 프론트엔드 개발자 100.0 1 TSK-010 FS 0, TSK-007 FS 0 2028-10-11 2028-10-12 개선된 뉴스 카드 컴포넌트, 종목정보 표시 컴포넌트, 실시간 갱신 인디케이터 코드, TSK-012 종목 교체 기능 UX 분석 및 개선 설계 현재 종목 교체 기능의 사용자 흐름 분석, 이탈 지점 파악, 개선된 인터랙션 설계. 종목 검색, 비교, 교체 확인 플로우 재설계 16.0 NOT_STARTED 디자이너 100.0 1 TSK-011 FS 0 2028-10-13 2028-10-14 종목 교체 UX 분석 보고서, 개선 플로우차트, 프로토타입, TSK-013 종목 교체 기능 프론트엔드 개선 구현 종목 검색 자동완성 개선, 드래그앤드롭 교체, 교체 전 비교 미리보기, 교체 확인 모달 등 사용성 개선 구현 24.0 NOT_STARTED 프론트엔드 개발자 100.0 1 TSK-012 FS 0 2028-10-15 2028-10-17 개선된 종목 교체 UI 코드, 종목 검색 자동완성 컴포넌트, 교체 확인 모달 컴포넌트, TSK-014 종목 교체 API 성능 최적화 종목 교체 시 응답 속도 개선을 위한 백엔드 API 최적화. 종목 검색 인덱싱, 교체 트랜잭션 처리 개선 16.0 NOT_STARTED 백엔드 개발자 100.0 1 TSK-012 FS 0 2028-10-18 2028-10-19 최적화된 종목 교체 API 코드, 성능 벤치마크 결과, TSK-015 버그 리포트 접수 및 분류 프로세스 수립 버그 리포트 접수 채널, 심각도 분류 기준, 담당자 배정 규칙, SLA 정의 등 버그 대응 프로세스 표준화 12.0 NOT_STARTED PM 100.0 1 TSK-014 FS 0 2028-10-20 2028-10-20 버그 리포트 프로세스 문서, 심각도 분류 기준표, SLA 정의서, 에스컬레이션 절차서, TSK-016 핫픽스 배포 파이프라인 구축 긴급 버그 수정을 위한 핫픽스 브랜치 전략, CI/CD 파이프라인 구성, 롤백 절차 수립. 스테이징 검증 후 프로덕션 배포 자동화 20.0 NOT_STARTED 백엔드 개발자 100.0 1 TSK-015 FS 0 2028-10-21 2028-10-22 핫픽스 CI/CD 파이프라인 코드, 배포 절차서, 롤백 가이드, TSK-017 버그 모니터링 및 알림 시스템 구성 에러 트래킹 도구(Sentry 등) 설정, 장애 알림 채널 구성, 주요 메트릭 대시보드 구축으로 실시간 장애 감지 체계 수립 16.0 NOT_STARTED 백엔드 개발자 100.0 1 TSK-015 FS 0 2028-10-23 2028-10-24 에러 트래킹 설정 코드, 알림 규칙 설정, 모니터링 대시보드, TSK-018 피드백 수집 채널 통합 테스트 인앱 피드백 위젯, 피드백 저장 API, 어드민 대시보드 간 통합 테스트 수행. 피드백 제출부터 관리자 확인까지 E2E 검증 12.0 NOT_STARTED QA 100.0 1 TSK-004 FS 0, TSK-005 FS 0 2028-10-25 2028-10-25 통합 테스트 케이스, 테스트 실행 결과 보고서, 발견된 결함 목록, TSK-019 대시보드 UI/UX 개선 QA 검증 개선된 대시보드 레이아웃, 네비게이션, 뉴스/종목정보 표시, 종목 교체 기능에 대한 크로스브라우저 및 반응형 테스트 20.0 NOT_STARTED QA 100.0 1 TSK-008 FS 0, TSK-011 FS 0, TSK-013 FS 0 2028-10-26 2028-10-27 UI 테스트 케이스, 크로스브라우저 테스트 결과, 반응형 테스트 결과, 결함 보고서, TSK-020 핫픽스 배포 프로세스 리허설 및 검증 수립된 핫픽스 배포 프로세스의 실제 리허설 수행. 버그 접수부터 핫픽스 배포, 롤백까지 전체 사이클 검증 8.0 NOT_STARTED QA 100.0 1 TSK-016 FS 0, TSK-017 FS 0 2028-10-28 2028-10-28 리허설 시나리오, 리허설 실행 결과, 프로세스 개선 피드백, TSK-021 피드백 반영 주기 및 운영 가이드 수립 수집된 피드백의 정기 리뷰 주기, 반영 우선순위 결정 회의 체계, 피드백 처리 현황 사용자 공지 방안 등 운영 프로세스 확립 10.0 NOT_STARTED PM 100.0 1 TSK-018 FS 0, TSK-019 FS 0, TSK-020 FS 0 2028-10-29 2028-10-29 피드백 운영 가이드, 정기 리뷰 템플릿, 사용자 공지 템플릿 2028-09-18 2028-10-29, WP-005 운영 문서화 및 장애 대응 체계 수립 운영 매뉴얼 작성, 장애 대응 절차(Runbook) 문서화, 외부 API 장애 시 대체 처리(폴백) 시나리오 정의, 데이터 백업 및 복구 절차 수립, 배포 롤백 절차 검증 TSK-001 시스템 아키텍처 및 인프라 현황 정리 운영 문서화의 기초 자료로 활용할 현재 시스템 아키텍처, 인프라 구성, 주요 컴포넌트 간 연관관계, 외부 API 연동 현황을 정리 16.0 NOT_STARTED 개발자 100.0 1 TSK-021 FS 0 2028-10-30 2028-10-31 시스템 아키텍처 다이어그램, 인프라 구성도, 외부 API 연동 목록, TSK-002 운영 매뉴얼 목차 및 템플릿 설계 운영 매뉴얼의 전체 목차 구조를 설계하고, 각 섹션별 작성 템플릿을 정의. 장애 대응, 모니터링, 배포, 백업 등 주요 영역별 문서 표준 수립 8.0 NOT_STARTED PM 100.0 1 TSK-001 FS 0 2028-11-01 2028-11-01 운영 매뉴얼 목차 구조, 섹션별 문서 템플릿, TSK-003 장애 등급 분류 및 에스컬레이션 체계 정의 장애 심각도 등급(Critical/Major/Minor) 분류 기준 수립, 등급별 대응 시간(SLA) 정의, 에스컬레이션 경로 및 담당자 연락처 체계 구성 12.0 NOT_STARTED PM 100.0 1 TSK-001 FS 0 2028-11-02 2028-11-02 장애 등급 분류 기준서, 에스컬레이션 매트릭스, 비상 연락망, TSK-004 서비스별 장애 대응 Runbook 작성 주요 서비스 컴포넌트별(웹서버, API서버, DB, 캐시, 메시지큐 등) 장애 증상 식별, 진단 절차, 복구 명령어, 확인 절차를 포함한 Runbook 작성 32.0 NOT_STARTED 개발자 100.0 1 TSK-002 FS 0, TSK-003 FS 0 2028-11-03 2028-11-06 서비스별 Runbook 문서, 장애 진단 체크리스트, TSK-005 외부 API 장애 시 폴백 시나리오 정의 연동 중인 외부 API별 장애 유형 분석, 폴백 처리 로직 설계(캐시 응답, 기본값 반환, 대체 API 전환, 기능 비활성화 등), 서킷브레이커 설정 기준 정의 24.0 NOT_STARTED 개발자 100.0 1 TSK-001 FS 0 2028-11-07 2028-11-09 외부 API별 폴백 시나리오 문서, 서킷브레이커 설정 명세, 폴백 처리 플로우차트, TSK-006 폴백 로직 구현 및 단위 테스트 정의된 폴백 시나리오에 따라 실제 폴백 처리 코드 구현, 서킷브레이커 패턴 적용, 각 시나리오별 단위 테스트 작성 32.0 NOT_STARTED 개발자 100.0 1 TSK-005 FS 0 2028-11-10 2028-11-13 폴백 처리 소스코드, 단위 테스트 코드, 코드 리뷰 완료 기록, TSK-007 데이터 백업 정책 및 절차 수립 백업 대상 데이터 분류, 백업 주기(전체/증분) 정의, 백업 저장소 및 보관 기간 설정, 자동화 백업 스크립트 작성, 백업 무결성 검증 방법 정의 20.0 NOT_STARTED 개발자 100.0 1 TSK-001 FS 0 2028-11-14 2028-11-15 백업 정책 문서, 백업 자동화 스크립트, 백업 스케줄 설정 명세, TSK-008 데이터 복구 절차 수립 및 검증 장애 유형별(DB 손상, 데이터 유실, 랜섬웨어 등) 복구 절차 정의, 복구 소요시간(RTO) 및 복구 시점(RPO) 목표 설정, 실제 복구 테스트 수행 및 결과 기록 24.0 NOT_STARTED 개발자 100.0 1 TSK-007 FS 0 2028-11-16 2028-11-18 데이터 복구 절차서, 복구 테스트 결과 보고서, RTO/RPO 달성 기록, TSK-009 배포 절차 및 롤백 프로세스 문서화 현재 배포 파이프라인 절차 문서화, 배포 전/중/후 체크리스트 작성, 롤백 트리거 조건 정의, 버전별 롤백 명령어 및 절차 상세 기술 16.0 NOT_STARTED 개발자 100.0 1 TSK-002 FS 0 2028-11-19 2028-11-20 배포 절차서, 배포 체크리스트, 롤백 절차서, TSK-010 배포 롤백 시나리오 테스트 수행 스테이징 환경에서 주요 롤백 시나리오(코드 롤백, DB 마이그레이션 롤백, 설정 롤백) 실제 수행, 롤백 소요시간 측정, 데이터 정합성 확인 16.0 NOT_STARTED QA 100.0 1 TSK-009 FS 0 2028-11-21 2028-11-22 롤백 테스트 시나리오, 롤백 테스트 수행 결과서, 개선 사항 목록, TSK-011 폴백 시나리오 통합 테스트 수행 외부 API 장애 상황을 시뮬레이션하여 폴백 로직이 정상 동작하는지 통합 테스트 수행, 서킷브레이커 동작 확인, 사용자 영향도 검증 16.0 NOT_STARTED QA 100.0 1 TSK-006 FS 0 2028-11-23 2028-11-24 폴백 통합 테스트 결과서, 서킷브레이커 동작 확인서, TSK-012 모니터링 및 알림 설정 문서화 시스템 모니터링 대시보드 구성 현황 정리, 주요 메트릭별 임계치 및 알림 조건 정의, 알림 수신 채널(슬랙, 이메일, SMS) 및 담당자 매핑 문서화 12.0 NOT_STARTED 개발자 100.0 1 TSK-003 FS 0 2028-11-25 2028-11-25 모니터링 설정 문서, 알림 규칙 명세서, 대시보드 접근 가이드, TSK-013 장애 대응 모의 훈련 계획 수립 정기 장애 대응 모의 훈련(Chaos Engineering/Game Day) 계획 수립, 훈련 시나리오 설계, 훈련 평가 기준 및 피드백 프로세스 정의 12.0 NOT_STARTED PM 100.0 1 TSK-004 FS 0, TSK-012 FS 0 2028-11-26 2028-11-26 모의 훈련 계획서, 훈련 시나리오 목록, 훈련 평가 양식, TSK-014 운영 문서 통합 검토 및 최종 승인 작성된 전체 운영 문서(매뉴얼, Runbook, 폴백 시나리오, 백업/복구 절차, 배포/롤백 절차)의 일관성 검토, 누락 항목 확인, 이해관계자 리뷰 및 최종 승인 16.0 NOT_STARTED PM 100.0 1 TSK-004 FS 0, TSK-008 FS 0, TSK-010 FS 0, TSK-011 FS 0, TSK-013 FS 0 2028-11-27 2028-11-28 문서 검토 체크리스트, 리뷰 피드백 반영 기록, 최종 승인 문서 2028-10-30 2028-11-28 | 2028-06-02 | 2028-11-28 | 프로덕션 배포 완료 | 프로덕션 배포본, 모니터링 대시보드, 운영 가이드 문서, 배포 완료 보고서 |

Links (resource_type, total_hours, total_days, peak_allocation):
- PM 704.0 88.0 0
- 개발자 3596.0 449.5 0
- QA 1874.0 234.25 0
- 디자이너 1082.0 135.25 0
- 백엔드 개발자 992.0 124.0 0
- 프론트엔드 개발자 750.0 93.75 0
