# 냉연 통합 MES/APS 시스템 (Project NEXUS) WBS

| id | name | start_date | end_date | duration_weeks | work_packages |
| --- | --- | --- | --- | --- | --- |
| M1 | 분석/설계 | 2026-07-01 | 2026-09-30 | 13 | WP-1.1 프로젝트 관리 체계 수립 T-1.1.1 프로젝트 관리 계획서 수립 PM W1-W2 20, T-1.1.2 개발 환경 및 도구 표준 정의 PM, TA W1-W2 10, T-1.1.3 코딩 표준 및 코드리뷰 프로세스 수립 TA W2 5 T-1.1.2, T-1.1.4 프로젝트 킥오프 PM W1 2, WP-1.2 요구사항 확정 T-1.2.1 현장 인터뷰 추가 수행 (라인별 상세) BA W1-W3 30 전체, T-1.2.2 AS-IS 프로세스 분석 완료 BA W2-W4 20 T-1.2.1 전체, T-1.2.3 TO-BE 프로세스 설계 BA, 현업 W3-W6 40 T-1.2.2 전체, T-1.2.4 요구사항 명세서(SRS) 작성 BA W5-W8 30 T-1.2.3 전체, T-1.2.5 SRS 검토 및 확정 PM, BA W8-W9 10 T-1.2.4 전체, T-1.2.6 품질 성적서 양식 표준화 (10개 고객) 품질팀 W1-W6 15 FR-016, WP-1.3 아키텍처 설계 T-1.3.1 시스템 아키텍처 설계 (MSA, EDA, 하이브리드 클라우드) SA W3-W7 30 T-1.2.3 NFR-012, T-1.3.2 데이터 아키텍처 설계 DBA W4-W7 20 T-1.3.1 NFR-005, NFR-015, T-1.3.3 네트워크/보안 아키텍처 설계 Infra W4-W8 20 T-1.3.1 NFR-009, CON-004, T-1.3.4 API 명세 설계 SA, Dev W5-W8 15 T-1.3.1 FR-014, T-1.3.5 인터페이스 상세 설계 (ERP, L2, LIMS, WMS, EMS) SA, Integ W6-W9 25 T-1.3.4 FR-014, T-1.3.6 아키텍처 설계서 검토 및 확정 PM, SA W9-W10 10 T-1.3.5, WP-1.4 PoC (Proof of Concept) T-1.4.1 APS 엔진 벤치마크 (상용 2종) 컨설팅사 W3-W8 40 FR-002, T-1.4.2 APS 핵심 제약조건 PoC (3개) 컨설팅사 W5-W10 40 T-1.4.1 FR-002, T-1.4.3 RFID 내열 태그 PoC (PCM/CAL) 설비팀 W3-W8 20 FR-006, T-1.4.4 RFID 축소안 비용 재산출 설비팀 W1-W4 10 FR-006, T-1.4.5 OPC-UA 프로토콜 전환 PoC (PCM) Infra, L2 W4-W8 20 FR-007, CON-002, T-1.4.6 PoC 결과 종합 보고 및 의사결정 PM W10-W11 10 T-1.4.2, T-1.4.3, T-1.4.5, WP-1.5 UI/UX 설계 T-1.5.1 사용자 페르소나 정의 (4개 그룹) UX W3-W4 8 T-1.2.1, T-1.5.2 현장 터치스크린 와이어프레임 UX W5-W8 20 T-1.5.1 NFR-014, T-1.5.3 사무실 듀얼 모니터 와이어프레임 UX W5-W8 15 T-1.5.1 NFR-013, T-1.5.4 55인치 현황판 레이아웃 설계 UX W6-W8 8 T-1.5.1 FR-011, NFR-014, T-1.5.5 UI/UX 프로토타입 (Figma) UX W7-W10 15 T-1.5.2, T-1.5.3, T-1.5.6 현업 유저빌리티 테스트 UX, 현업 W10-W11 8 T-1.5.5, T-1.5.7 디자인 시스템 가이드 (Ant Design 기반) UX, FE W9-W12 10 T-1.5.5 NFR-013 |
| M2 | 기반 구축 | 2026-10-01 | 2026-12-31 | 13 | WP-2.1 인프라 구축 T-2.1.1 On-premise 서버 도입 및 설치 Infra W1-W4 30 M1 CON-009, T-2.1.2 Kubernetes/Rancher 클러스터 구성 Infra W3-W6 20 T-2.1.1 CON-009, T-2.1.3 네트워크 구성 (OT/IT/DMZ) Infra W2-W6 25 T-2.1.1 NFR-009, T-2.1.4 AWS 환경 구축 (EKS, RDS, S3, DC) Infra W3-W6 15 NFR-012, T-2.1.5 CI/CD 파이프라인 구축 DevOps W4-W6 15 T-2.1.2 CON-009, T-2.1.6 모니터링 스택 구축 DevOps W5-W7 15 T-2.1.2 CON-009, T-2.1.7 보안 인프라 구축 (Keycloak, Vault, Harbor) Infra W5-W8 20 T-2.1.2 NFR-008, NFR-010, T-2.1.8 RFID 리더기 설치 (PCM/CAL) 설비팀 W4-W10 30 M1 PoC FR-006, WP-2.2 공통 프레임워크 개발 T-2.2.1 Spring Boot 공통 모듈 BE W3-W6 20 T-2.1.2, T-2.2.2 React 공통 컴포넌트 (디자인 시스템) FE W3-W6 20 T-2.1.2 NFR-013, NFR-014, T-2.2.3 Kafka 이벤트 버스 구축 BE W4-W6 15 T-2.1.2, T-2.2.4 Kong API Gateway 설정 BE W5-W7 10 T-2.1.7 FR-014, T-2.2.5 WebSocket Gateway 구축 BE W6-W8 10 T-2.2.3 FR-007, FR-011, WP-2.3 데이터베이스 구축 T-2.3.1 PostgreSQL 클러스터 구축 DBA W3-W5 10 T-2.1.1, T-2.3.2 TimescaleDB 클러스터 구축 DBA W3-W5 10 T-2.1.1 FR-007, T-2.3.3 DB 스키마 생성 및 마스터 데이터 구조 DBA W4-W7 15 T-2.3.1, T-2.3.4 Redis Sentinel 구축 DBA W5-W6 5 T-2.1.1, T-2.3.5 Elasticsearch 클러스터 구축 DBA W5-W6 5 T-2.1.1, T-2.3.6 마스터 데이터 클렌징 DBA, 현업 W1-W10 40 CON-003, WP-2.4 OPC-UA 전환 T-2.4.1 OPC-UA 전환 (PCM, CAL) L2, Infra W2-W8 30 M1 PoC FR-007, CON-002, T-2.4.2 OPC-UA 전환 (EGL, CGL, SPM) L2, Infra W6-W12 30 T-2.4.1 FR-007, T-2.4.3 OPC-UA 전환 (BAF, RCL, SL, CCL) L2, Infra W8-W13 20 T-2.4.1 FR-007, T-2.4.4 OPC-UA Gateway 개발 (Eclipse Milo) BE W5-W10 25 T-2.4.1 FR-007 |
| M3 | 핵심 개발 | 2027-01-01 | 2027-06-30 | 26 | WP-3.1 APS 서비스 개발 T-3.1.1 APS 엔진 통합 APS팀 W1-W4 40 M2 FR-002, T-3.1.2 제약조건 플러그인 P1 (CR-001~005) APS팀 W3-W8 40 T-3.1.1 FR-002, T-3.1.3 제약조건 플러그인 P1 (CR-007~012) APS팀 W5-W12 50 T-3.1.1 FR-002, T-3.1.4 제약조건 플러그인 P2 (CR-006, 013~015) APS팀 W10-W16 30 T-3.1.2 FR-002, FR-015, T-3.1.5 스케줄 생성/조회/수정 API APS팀 W3-W8 20 T-3.1.1 FR-001, T-3.1.6 What-if 시뮬레이션 엔진 APS팀 W8-W14 30 T-3.1.2 FR-003, T-3.1.7 자동 재스케줄링 이벤트 처리 APS팀 W10-W16 20 T-3.1.5 FR-003, T-3.1.8 수주-생산 연계 (ERP 연동) APS팀, Integ W6-W12 25 T-3.1.5 FR-004, WP-3.2 MES 서비스 개발 T-3.2.1 작업지시 관리 MES팀 W1-W8 40 M2 FR-005, T-3.2.2 코일 추적 RFID (PCM/CAL) MES팀 W3-W10 30 T-2.1.8 FR-006, T-3.2.3 코일 추적 바코드 (나머지 라인) MES팀 W5-W10 15 T-3.2.1 FR-006, T-3.2.4 코일 계보 관리 MES팀 W6-W10 15 T-3.2.2 FR-006, T-3.2.5 실시간 데이터 수집 (OPC-UA→Kafka→TSDB) MES팀 W2-W8 30 T-2.4.4 FR-007, T-3.2.6 이상치 감지 및 알람 MES팀 W8-W12 15 T-3.2.5 FR-007, T-3.2.7 WIP 관리 MES팀 W8-W14 25 T-3.2.1 FR-010, T-3.2.8 비상 운영 모드 MES팀 W16-W22 25 T-3.2.1 FR-018, WP-3.3 품질 서비스 개발 T-3.3.1 품질 검사 관리 (15개 항목) QM팀 W3-W10 30 M2 FR-008, T-3.3.2 SPC 관리도 + 자동 Hold QM팀 W6-W12 25 T-3.3.1 FR-008, T-3.3.3 클레임 역추적 (30분) QM팀 W10-W16 25 T-3.3.1, T-3.2.5 FR-008, T-3.3.4 표면검사(SIS) 이미지 연동 QM팀 W12-W16 15 T-3.3.1 FR-008, T-3.3.5 LIMS 연동 QM팀, Integ W10-W14 15 T-3.3.1 FR-008, T-3.3.6 전자 품질 성적서 자동 생성 QM팀 W14-W20 25 T-3.3.1 FR-016, WP-3.4 설비 서비스 개발 T-3.4.1 설비 상태 모니터링 (13개) EQ팀 W3-W8 20 M2 FR-009, T-3.4.2 OEE 자동 산출 EQ팀 W6-W10 15 T-3.4.1 FR-009, T-3.4.3 고장→APS 재스케줄링 연동 EQ팀, APS팀 W10-W14 15 T-3.4.1, T-3.1.7 FR-009, T-3.4.4 롤/다이 교체 이력 + 품질 연계 EQ팀 W8-W14 15 T-3.4.1 FR-009, T-3.4.5 정비 일정 APS 반영 EQ팀, APS팀 W12-W16 10 T-3.4.1 FR-009, WP-3.5 시스템 연동 개발 T-3.5.1 ERP(SAP) 연동 어댑터 Integ팀 W1-W8 30 M2 FR-004, FR-014, T-3.5.2 LIMS 연동 어댑터 Integ팀 W6-W10 15 T-2.2.4 FR-014, T-3.5.3 WMS 연동 어댑터 Integ팀 W8-W12 15 T-2.2.4 FR-014, T-3.5.4 EMS 연동 어댑터 Integ팀 W10-W14 10 T-2.2.4 FR-014, FR-015, T-3.5.5 에러 처리 (재시도 + DLQ) Integ팀 W8-W12 10 T-3.5.1 FR-014, T-3.5.6 BI 데이터 마트 ETL Integ팀, DBA W14-W20 20 T-3.5.1 FR-013, WP-3.6 대시보드 및 KPI T-3.6.1 공장 전체 대시보드 FE, BE W6-W14 35 T-3.2.5, T-2.2.5 FR-011, T-3.6.2 55인치 현황판 레이아웃 FE W10-W14 10 T-3.6.1 FR-011, NFR-014, T-3.6.3 Gantt Chart (DHTMLX) FE W4-W10 25 M2 FR-003, T-3.6.4 KPI 자동 산출 BE W10-W16 20 T-3.2.5 FR-012, T-3.6.5 생산일보/월보 자동 생성 BE W14-W18 15 T-3.6.4 FR-013, T-3.6.6 데이터 그리드 (AG Grid) FE W8-W14 15 M2 FR-013, T-3.6.7 모바일 PWA (KPI + 알림) FE W16-W22 20 T-3.6.4 FR-017, T-3.6.8 에너지 대시보드 FE, BE W14-W18 15 T-3.5.4 FR-015, WP-3.7 알림 및 공통 기능 T-3.7.1 알림 서비스 BE W6-W12 20 T-2.2.3 FR-017, T-3.7.2 사용자 관리 (RBAC) BE W3-W6 10 T-2.1.7 NFR-008, T-3.7.3 감사 로그 시스템 BE W4-W8 10 T-2.2.3, T-2.3.5 NFR-011, T-3.7.4 다국어 지원 FE W12-W16 10 T-2.2.2 NFR-013, T-3.7.5 다크 모드 / 라이트 모드 FE W10-W12 5 T-2.2.2 NFR-013, T-3.7.6 접근성 (WCAG 2.1 AA) FE W14-W18 10 T-2.2.2 NFR-013, NFR-014, WP-3.8 슈퍼유저 교육 T-3.8.1 교육 커리큘럼 개발 PM, BA W18-W22 15, T-3.8.2 슈퍼유저 교육 실시 (18명) PM, BA W22-W26 20 T-3.8.1 |
| M4 | 통합 테스트 | 2027-07-01 | 2027-09-30 | 13 | WP-4.1 통합 테스트 T-4.1.1 단위 테스트 보완 (커버리지 80%+) Dev전체 W1-W3 30 M3 전체, T-4.1.2 통합 테스트 (E2E) QA W2-W6 40 T-4.1.1 전체, T-4.1.3 인터페이스 연동 테스트 QA, Integ W3-W6 25 T-4.1.1 FR-014, T-4.1.4 APS 제약조건 검증 (15개) QA, APS팀 W3-W8 30 T-4.1.1 FR-002, T-4.1.5 UAT (현업 참여) QA, 현업 W6-W10 40 T-4.1.2 전체, WP-4.2 성능 테스트 T-4.2.1 부하 테스트 (300명, k6) QA, Infra W4-W7 20 T-4.1.2 NFR-004, T-4.2.2 데이터 수집 성능 (7,200태그 1초) QA, Infra W4-W7 15 T-4.1.2 NFR-002, T-4.2.3 APS 스케줄링 성능 (5분) QA, APS팀 W5-W7 10 T-4.1.4 NFR-003, T-4.2.4 성능 튜닝 및 최적화 Dev전체 W7-W10 25 T-4.2.1, T-4.2.2 전체 NFR, WP-4.3 보안 테스트 T-4.3.1 보안 취약점 스캔 (OWASP) 보안팀 W5-W7 10 T-4.1.2 NFR-008~011, T-4.3.2 침투 테스트 (외부 업체) 보안팀 W7-W9 15 T-4.3.1 NFR-008~011, T-4.3.3 ISMS-P 기준 점검 보안팀 W8-W12 15 T-4.3.2 CON-004, WP-4.4 데이터 마이그레이션 T-4.4.1 마이그레이션 스크립트 (MES 3년) DBA W1-W4 20 M3 CON-003, T-4.4.2 마이그레이션 스크립트 (히스토리안 5년) DBA W2-W5 20 M3 CON-003, T-4.4.3 마이그레이션 리허설 (1차) DBA W5-W6 10 T-4.4.1, T-4.4.2 CON-003, T-4.4.4 데이터 정합성 검증 DBA, QA W6-W8 15 T-4.4.3 CON-003, T-4.4.5 마이그레이션 리허설 (2차) + 최종 검증 DBA W9-W10 10 T-4.4.4 CON-003, WP-4.5 관리자 교육 T-4.5.1 관리자 교육 (65명) PM, BA W8-W12 25 M3, T-4.5.2 교육 자료 작성 BA W6-W10 15 |
| M5 | 시범 운영 | 2027-10-01 | 2027-11-30 | 9 | WP-5.1 시범 운영 (PCM + CAL) T-5.1.1 PCM 라인 시범 가동 전체 W1-W4 30 M4 전체, T-5.1.2 CAL 라인 시범 가동 전체 W1-W4 30 M4 전체, T-5.1.3 실데이터 기반 APS 스케줄 검증 APS팀, 현업 W1-W6 20 T-5.1.1 FR-002, T-5.1.4 이슈 수집 및 긴급 조치 Dev전체 W1-W9 40 T-5.1.1 전체, T-5.1.5 데이터 정합성 비교 (일일) QA, DBA W1-W9 20 T-5.1.1 CON-006, WP-5.2 전체 사용자 교육 T-5.2.1 전체 사용자 기본 교육 (12회) PM, BA, 슈퍼유저 W2-W6 30 T-3.8.2, T-5.2.2 OJT 현장 실습 슈퍼유저 W4-W9 20 T-5.2.1, T-5.2.3 동영상 매뉴얼 제작 BA W1-W6 15, WP-5.3 나머지 라인 확대 준비 T-5.3.1 나머지 7개 라인 설정 BA, DBA W3-W7 25 T-5.1.3 전체, T-5.3.2 나머지 라인 연동 검증 MES팀 W5-W8 15 T-5.3.1 FR-006 |
| M6 | 전체 오픈 | 2027-12-01 | 2027-12-31 | 4 | WP-6.1 전체 오픈 T-6.1.1 최종 데이터 마이그레이션 DBA W1 10 M5 CON-003, T-6.1.2 9개 라인 Go-Live 전체 W1-W2 40 T-6.1.1 전체, T-6.1.3 기존 MES 전환 PM, Infra W2 10 T-6.1.2 CON-006, T-6.1.4 병행 운영 시작 (3개월) 전체 W2-W4 20 T-6.1.3 CON-006, WP-6.2 안정화 및 인수 T-6.2.1 안정화 지원 (현장 상주) Dev전체 W1-W4 40 T-6.1.2 전체, T-6.2.2 운영 매뉴얼 작성 BA, Dev W1-W3 15, T-6.2.3 운영팀 인수인계 PM, Dev W3-W4 10 T-6.2.2, T-6.2.4 프로젝트 종료 보고 PM W4 5 T-6.2.3 |
