# 냉연 통합 MES/APS 시스템 (NEXUS) WBS

| id | name | description | order | start_date | end_date | milestone | deliverables | work_packages |
| --- | --- | --- | --- | --- | --- | --- | --- | --- |
| P1 | 분석/설계 | 상세 요구사항 확정 및 시스템 아키텍처 설계 완료 | 1 | 2026-07-01 | 2026-09-30 | M1 - 분석/설계 완료 | SRS, 아키텍처 설계서, APS PoC 결과, 인터페이스 설계서 | WP-2 요구사항 분석 현행 시스템 분석 및 요구사항 상세화 2026-07-01 2026-08-15 WP-2.1 현행 시스템 분석 (AS-IS) 기존 MES/APS 시스템 분석 및 문제점 도출 480 NOT_STARTED BA/컨설턴트 100 3 WP-1.1 FS 0 2026-07-01 2026-07-21 AS-IS 분석서, WP-2.2 요구사항 상세화 (18개 FR) 기능 요구사항 상세 분석 및 명세 560 NOT_STARTED BA/컨설턴트 100 3 WP-2.1 FS 0 2026-07-22 2026-08-08 FR-001, FR-002, FR-003, FR-004, FR-005, FR-006, FR-007, FR-008, FR-009, FR-010, FR-011, FR-012, FR-013, FR-014, FR-015, FR-016, FR-017, FR-018 SRS, WP-2.3 APS 제약조건 상세 정의 냉연 공정 특화 15개 제약조건 상세 정의 320 NOT_STARTED APS 전문가 100 2 WP-2.1 FS 0 2026-07-22 2026-08-05 FR-002 제약조건 정의서, WP-2.4 인터페이스 요구사항 분석 6개 외부 시스템 연동 요구사항 분석 240 NOT_STARTED 시스템 아키텍트 100 2 WP-2.1 FS 0 2026-07-22 2026-08-01 FR-014 인터페이스 정의서, WP-2.5 요구사항 검토 및 확정 이해관계자 검토 및 요구사항 확정 160 NOT_STARTED PM/BA 100 2 WP-2.2 FS 0, WP-2.3 FS 0, WP-2.4 FS 0 2026-08-09 2026-08-15 확정 SRS, WP-3 아키텍처 설계 시스템 아키텍처 및 상세 설계 2026-08-16 2026-09-15 WP-3.1 시스템 아키텍처 설계 클라우드 하이브리드 + 마이크로서비스 아키텍처 설계 320 NOT_STARTED 시스템 아키텍트 100 2 WP-2.5 FS 0 2026-08-16 2026-08-29 NFR-008 아키텍처 설계서, WP-3.2 데이터베이스 설계 PostgreSQL + TimescaleDB 데이터베이스 설계 240 NOT_STARTED DBA 100 2 WP-3.1 FS 0 2026-08-30 2026-09-08 ERD, DB 설계서, WP-3.3 API 설계 RESTful API 명세 설계 200 NOT_STARTED 백엔드 개발자 100 2 WP-3.1 FS 0 2026-08-30 2026-09-06 API 명세서, WP-3.4 보안 아키텍처 설계 RBAC, 네트워크 분리, 암호화 설계 160 NOT_STARTED 보안 담당 100 1 WP-3.1 FS 0 2026-08-30 2026-09-05 NFR-007 보안 설계서, WP-3.5 OT/Edge 아키텍처 설계 OPC-UA, Edge Gateway, RFID 연동 설계 200 NOT_STARTED 에지 개발자 100 2 WP-3.1 FS 0 2026-08-30 2026-09-08 FR-007 OT 연동 설계서, WP-3.6 UI/UX 설계 현장 터치스크린 UI, 대시보드 UI 설계 400 NOT_STARTED UI/UX 디자이너 100 2 WP-2.5 FS 0 2026-08-16 2026-09-05 FR-017, NFR-009 와이어프레임, 스타일 가이드, WP-4 PoC 수행 핵심 기술 PoC 검증 2026-07-22 2026-09-30 WP-4.1 APS 엔진 PoC (제약조건 검증) OR-Tools 기반 냉연 제약조건 스케줄링 PoC 320 NOT_STARTED APS 전문가 100 2 WP-2.3 FS 0 2026-08-06 2026-09-15 FR-002 PoC 결과 보고서 크리티컬 패스, WP-4.2 RFID 고온 환경 PoC BAF 출측 200℃ 환경 RFID 내구성 검증 160 NOT_STARTED 에지 개발자 100 1 WP-2.1 FS 0 2026-07-22 2026-08-10 FR-006 PoC 결과 보고서, WP-4.3 OPC-UA 대량 수집 PoC 7,000+ 태그 1초 주기 수집 성능 검증 160 NOT_STARTED 에지 개발자 100 1 WP-3.5 FS 0 2026-09-09 2026-09-22 FR-007, NFR-002 PoC 결과 보고서 |
| P2 | 기반 구축 | 개발 환경 및 인프라 구축, 공통 모듈 개발 완료 | 2 | 2026-10-01 | 2026-12-31 | M2 - 기반 구축 완료 | 개발/테스트/운영 환경, 공통 프레임워크, CI/CD, API Gateway | WP-5 인프라 구축 Kubernetes, DB, Kafka 클러스터 구축 2026-10-01 2026-11-30 WP-5.1 개발 환경 구축 개발자 로컬/원격 개발 환경 구성 240 NOT_STARTED DevOps 엔지니어 100 2 WP-3.1 FS 0 2026-10-01 2026-10-12 개발 환경, WP-5.2 Kubernetes 클러스터 구축 Rancher RKE2 기반 K8s 클러스터 구축 (6노드) 320 NOT_STARTED DevOps 엔지니어 100 2 WP-5.1 FS 0 2026-10-13 2026-10-30 NFR-008 K8s 클러스터, WP-5.3 데이터베이스 구축 PostgreSQL + TimescaleDB HA 클러스터 구축 240 NOT_STARTED DBA 100 2 WP-5.2 FS 0 2026-10-31 2026-11-11 DB 클러스터, WP-5.4 메시지 브로커 구축 (Kafka) Apache Kafka 3.6 클러스터 구축 (3브로커) 160 NOT_STARTED DevOps 엔지니어 100 1 WP-5.2 FS 0 2026-10-31 2026-11-07 Kafka 클러스터, WP-5.5 CI/CD 파이프라인 구축 GitLab CI + ArgoCD 기반 CI/CD 구축 200 NOT_STARTED DevOps 엔지니어 100 1 WP-5.1 FS 0 2026-10-13 2026-10-24 GitLab CI/ArgoCD, WP-5.6 모니터링 시스템 구축 Grafana + Prometheus + ELK 구축 160 NOT_STARTED DevOps 엔지니어 100 1 WP-5.2 FS 0 2026-10-31 2026-11-07 Grafana/Prometheus, WP-5.7 Edge Gateway 구축 (9대) 라인당 1대 Edge Gateway 구축 360 NOT_STARTED 에지 개발자 100 3 WP-5.2 FS 0 2026-10-31 2026-11-18 FR-007 Edge 인프라, WP-5.8 클라우드 (AWS EKS) 구축 AWS EKS, RDS, S3 환경 구축 200 NOT_STARTED DevOps 엔지니어 100 1 WP-5.2 FS 0 2026-11-08 2026-11-19 NFR-008 AWS 환경, WP-6 공통 모듈 개발 공통 프레임워크, 인증, 데이터 모델 개발 2026-10-25 2026-12-31 WP-6.1 API Gateway 개발 Kong Gateway 설정 및 라우팅 240 NOT_STARTED 백엔드 개발자 100 2 WP-5.2 FS 0 2026-10-31 2026-11-11 Kong Gateway 설정, WP-6.2 인증/인가 모듈 (Keycloak) SSO, LDAP 연동, RBAC 구현 200 NOT_STARTED 백엔드 개발자 100 2 WP-6.1 FS 0 2026-11-12 2026-11-21 NFR-007 인증 서비스, WP-6.3 공통 라이브러리 개발 로깅, 예외처리, 유틸리티 등 공통 모듈 320 NOT_STARTED 백엔드 개발자 100 3 WP-5.2 FS 0 2026-10-31 2026-11-14 공통 모듈, WP-6.4 프론트엔드 프레임워크 구축 React 18 + TypeScript 기반 프레임워크 280 NOT_STARTED 프론트엔드 개발자 100 3 WP-5.1 FS 0 2026-10-13 2026-10-28 React 프레임워크, WP-6.5 데이터 모델 구현 테이블, 인덱스, 파티션 생성 240 NOT_STARTED DBA 100 2 WP-5.3 FS 0 2026-11-12 2026-11-23 테이블, 인덱스, WP-6.6 마스터 데이터 마이그레이션 강종, 설비, 고객 등 마스터 데이터 이관 320 NOT_STARTED DBA 50 1, 백엔드 개발자 50 2 WP-6.5 FS 0 2026-11-24 2026-12-10 마스터 데이터 |
| P3 | 핵심 개발 | MES/APS 핵심 기능 개발 완료 | 3 | 2027-01-01 | 2027-06-30 | M3 - 핵심 개발 완료 | APS 엔진, MES 핵심 모듈, 대시보드, 연동 모듈 | WP-7 APS 서비스 개발 생산계획 및 스케줄링 기능 개발 2027-01-01 2027-04-30 WP-7.1 스케줄링 엔진 개발 (FR-002) 냉연 15개 제약조건 반영 스케줄링 엔진 800 NOT_STARTED APS 개발자 100 4 WP-4.1 FS 0 2027-01-01 2027-02-14 FR-002 APS 엔진 크리티컬 패스, WP-7.2 통합 생산계획 기능 (FR-001) 월간/주간/일간 계획 수립 기능 480 NOT_STARTED APS 개발자 100 3 WP-7.1 FS 0 2027-02-15 2027-03-14 FR-001 계획 수립 모듈 크리티컬 패스, WP-7.3 What-if 시뮬레이션 (FR-003) 설비 고장, 긴급 수주 시 영향 분석 320 NOT_STARTED APS 개발자 100 2 WP-7.1 FS 0 2027-02-15 2027-03-04 FR-003 시뮬레이션 모듈, WP-7.4 수주-생산 연계 (FR-004) SAP ERP 수주 데이터 연동 240 NOT_STARTED 백엔드 개발자 100 2 WP-7.2 FS 0 2027-03-15 2027-03-28 FR-004 ERP 연동 모듈, WP-7.5 계획 UI 개발 (Gantt Chart) 드래그&드롭 Gantt Chart UI 400 NOT_STARTED 프론트엔드 개발자 100 3 WP-7.2 FS 0 2027-03-15 2027-04-05 FR-001, FR-003 계획 화면, WP-8 MES 서비스 개발 생산실행 관리 기능 개발 2027-01-01 2027-05-31 WP-8.1 작업지시 관리 (FR-005) 작업지시 생성, 큐 관리, 상태 관리 400 NOT_STARTED 백엔드 개발자 100 3 WP-6.3 FS 0 2027-01-01 2027-01-21 FR-005 작업지시 서비스 크리티컬 패스, WP-8.2 코일 추적 관리 (FR-006) 코일 위치, 계보, 분할/합병 이력 480 NOT_STARTED 백엔드 개발자 100 3 WP-6.3 FS 0 2027-01-01 2027-01-25 FR-006 코일 추적 서비스, WP-8.3 실시간 데이터 수집 (FR-007) OPC-UA 기반 7,000+ 태그 수집 400 NOT_STARTED 에지 개발자 100 3 WP-5.7 FS 0 2027-01-01 2027-01-21 FR-007 데이터 수집 모듈, WP-8.4 WIP 관리 (FR-010) 재공 재고 현황, 체류 시간 모니터링 280 NOT_STARTED 백엔드 개발자 100 2 WP-8.2 FS 0 2027-01-26 2027-02-08 FR-010 재공 관리 모듈, WP-8.5 MES 현장 UI (FR-017) 터치스크린 전용 UI, 다크 모드 480 NOT_STARTED 프론트엔드 개발자 100 3 WP-8.1 FS 0 2027-01-22 2027-02-15 FR-017 터치스크린 UI, WP-8.6 RFID 미들웨어 연동 PCM/CAL 라인 RFID 연동 240 NOT_STARTED 에지 개발자 100 2 WP-8.2 FS 0 2027-01-26 2027-02-05 FR-006 RFID 연동, WP-9 품질 서비스 개발 품질 관리 기능 개발 2027-02-01 2027-04-30 WP-9.1 품질 관리 기능 (FR-008) 품질 검사, 판정, Hold 처리 400 NOT_STARTED 백엔드 개발자 100 3 WP-6.3 FS 0 2027-02-01 2027-02-21 FR-008 품질 서비스, WP-9.2 SPC 관리도 (FR-008) 실시간 관리도, 관리 한계선 알람 240 NOT_STARTED 백엔드 개발자 100 2 WP-9.1 FS 0 2027-02-22 2027-03-05 FR-008 SPC 모듈, WP-9.3 전자 품질 성적서 (FR-015) 고객별 품질 성적서 자동 생성 200 NOT_STARTED 백엔드 개발자 100 2 WP-9.1 FS 0 2027-02-22 2027-03-03 FR-015 성적서 생성, WP-9.4 클레임 역추적 (FR-016) 30분 이내 전 공정 데이터 추출 280 NOT_STARTED 백엔드 개발자 100 2 WP-9.1 FS 0, WP-8.2 FS 0 2027-02-22 2027-03-08 FR-016 역추적 모듈, WP-9.5 품질 UI 개발 품질 관리, SPC, 성적서 UI 320 NOT_STARTED 프론트엔드 개발자 100 2 WP-9.1 FS 0 2027-02-22 2027-03-10 FR-008 품질 화면, WP-10 설비/분석 서비스 개발 설비 관리, 대시보드, KPI, 리포트 개발 2027-02-01 2027-05-31 WP-10.1 설비 관리 연동 (FR-009) 설비 상태 모니터링, 롤 관리 320 NOT_STARTED 백엔드 개발자 100 2 WP-6.3 FS 0 2027-02-01 2027-02-16 FR-009 설비 서비스, WP-10.2 OEE 자동 산출 가동률×성능×품질 자동 계산 160 NOT_STARTED 백엔드 개발자 100 1 WP-10.1 FS 0 2027-02-17 2027-02-26 FR-009 OEE 모듈, WP-10.3 통합 대시보드 (FR-011) 공장 전체 현황 Digital Twin 뷰 400 NOT_STARTED 프론트엔드 개발자 100 3 WP-8.3 FS 0 2027-01-22 2027-02-15 FR-011 대시보드, WP-10.4 KPI 관리 (FR-012) 일/주/월 KPI 자동 산출 240 NOT_STARTED 백엔드 개발자 100 2 WP-10.1 FS 0 2027-02-17 2027-03-01 FR-012 KPI 서비스, WP-10.5 리포트 자동화 (FR-013) 생산일보/월보 자동 생성 280 NOT_STARTED 백엔드 개발자 100 2 WP-10.4 FS 0 2027-03-02 2027-03-15 FR-013 리포트 서비스, WP-10.6 BI 데이터 마트 구축 Tableau/Power BI 연동용 데이터 마트 200 NOT_STARTED DBA 100 1 WP-10.5 FS 0 2027-03-16 2027-03-27 FR-013 데이터 마트, WP-11 시스템 연동 6개 외부 시스템 연동 2027-02-01 2027-06-30 WP-11.1 SAP ERP 연동 (IF-001) 수주, 출하, 자재, 원가 RFC/BAPI 연동 400 NOT_STARTED 백엔드 개발자 100 3 WP-6.3 FS 0 2027-02-01 2027-02-21 FR-014 SAP 연동, WP-11.2 Level 2 연동 (IF-002) OPC-UA 기반 PLC 연동 320 NOT_STARTED 에지 개발자 100 2 WP-8.3 FS 0 2027-01-22 2027-02-08 FR-007, FR-014 PLC 연동, WP-11.3 LIMS 연동 (IF-003) 시험 의뢰/결과 REST API 연동 160 NOT_STARTED 백엔드 개발자 100 1 WP-9.1 FS 0 2027-02-22 2027-03-03 FR-014 LIMS 연동, WP-11.4 WMS 연동 (IF-004) 제품 입출고 REST API 연동 160 NOT_STARTED 백엔드 개발자 100 1 WP-8.2 FS 0 2027-01-26 2027-02-05 FR-014 WMS 연동, WP-11.5 EMS 연동 (IF-005) 에너지 사용량 5분 주기 연동 120 NOT_STARTED 백엔드 개발자 100 1 WP-10.1 FS 0 2027-02-17 2027-02-24 FR-014 EMS 연동, WP-11.6 히스토리안 데이터 마이그레이션 OSIsoft PI 5년치 태그 데이터 이관 400 NOT_STARTED DBA 50 1, 에지 개발자 50 2 WP-8.3 FS 0 2027-01-22 2027-03-05 CON-003 5년 데이터, WP-12 모바일/알림 PWA 및 알림 서비스 개발 2027-03-01 2027-04-15 WP-12.1 PWA 개발 (FR-018) 모바일 웹 PWA (KPI 조회, 알림) 280 NOT_STARTED 프론트엔드 개발자 100 2 WP-6.4 FS 0 2027-03-01 2027-03-18 FR-018 PWA 앱, WP-12.2 알림 서비스 Email/SMS/Push 알림 서비스 200 NOT_STARTED 백엔드 개발자 100 2 WP-6.3 FS 0 2027-03-01 2027-03-12 FR-018 알림 서비스 |
| P4 | 통합 테스트 | 통합 테스트 및 성능 테스트 완료 | 4 | 2027-07-01 | 2027-09-30 | M4 - 통합 테스트 완료 | 테스트 결과 보고서, 보안 점검 결과, 사용자 매뉴얼 | WP-13 통합 테스트 기능, 연동, 성능, 보안 테스트 2027-07-01 2027-09-30 WP-13.1 통합 테스트 계획 수립 테스트 범위, 시나리오, 일정 계획 120 NOT_STARTED QA 100 2 WP-7.5 FS 0, WP-8.5 FS 0 2027-07-01 2027-07-08 테스트 계획서, WP-13.2 기능 통합 테스트 전체 기능 통합 테스트 수행 800 NOT_STARTED QA 100 3 WP-13.1 FS 0 2027-07-09 2027-08-10 테스트 결과 크리티컬 패스, WP-13.3 인터페이스 테스트 6개 외부 시스템 연동 테스트 320 NOT_STARTED QA 100 2 WP-13.1 FS 0 2027-07-09 2027-07-24 FR-014 연동 테스트 결과, WP-13.4 성능 테스트 300 동시사용자, 응답시간 3초 240 NOT_STARTED QA 50 1, DevOps 엔지니어 50 1 WP-13.2 FS 0 2027-08-11 2027-08-22 NFR-001, NFR-004, NFR-005 성능 결과, WP-13.5 보안 취약점 점검 OWASP Top 10, 침투 테스트 160 NOT_STARTED 보안 담당 100 1 WP-13.2 FS 0 2027-08-11 2027-08-20 NFR-007 보안 점검 결과, WP-13.6 UAT (사용자 수용 테스트) 현업 사용자 참여 UAT 400 NOT_STARTED PM 50 2, 현업 50 10 WP-13.2 FS 0 2027-08-11 2027-08-31 UAT 결과, WP-13.7 결함 수정 테스트 발견 결함 수정 800 NOT_STARTED 개발팀 전체 50 20 WP-13.2 SS 0 2027-07-15 2027-09-15 수정 완료, WP-14 교육 및 변화관리 교육 자료 개발 및 사용자 교육 2027-08-15 2027-11-30 WP-14.1 교육 자료 개발 역할별 교육 자료 개발 320 NOT_STARTED BA 50 2, 개발자 50 3 WP-13.6 SS 0 2027-08-15 2027-09-10 교육 자료, WP-14.2 슈퍼유저 교육 (40시간) 슈퍼유저 40명 대상 심화 교육 160 NOT_STARTED 교육팀 100 2 WP-14.1 FS 0 2027-09-11 2027-09-25 교육 완료, WP-14.3 관리자급 교육 (16시간) 관리자 50명 대상 교육 80 NOT_STARTED 교육팀 100 2 WP-14.2 FS 0 2027-09-26 2027-10-05 교육 완료, WP-14.4 전체 사용자 교육 (8시간) 전체 사용자 275명 대상 교육 120 NOT_STARTED 교육팀 100 3 WP-14.3 FS 0 2027-10-06 2027-10-20 교육 완료, WP-14.5 사용자 매뉴얼 작성 역할별 사용자 매뉴얼 240 NOT_STARTED 기술문서 담당 100 2 WP-13.6 FS 0 2027-09-01 2027-09-20 매뉴얼 |
| P5 | 시범 운영 | PCM+CAL 라인 시범 운영 및 안정화 | 5 | 2027-10-01 | 2027-11-30 | M5 - 시범 운영 완료 | 시범 운영 결과 보고서, 이슈 조치 내역, 정합성 검증 | WP-15 시범 운영 PCM+CAL 라인 2개월 시범 운영 2027-10-01 2027-11-30 WP-15.1 PCM+CAL 라인 시범 운영 PCM+CAL 라인 2개월 시범 운영 960 NOT_STARTED 운영팀 50 5, 개발팀 50 10 WP-13.7 FS 0 2027-10-01 2027-11-30 시범 운영 결과 정기 수리 기간 (10월) 활용, WP-15.2 병행 운영 데이터 정합성 검증 기존 MES와 신규 시스템 데이터 일치율 99.5% 320 NOT_STARTED DBA 50 1, QA 50 2 WP-15.1 SS 0 2027-10-01 2027-11-30 CON-007 정합성 보고서, WP-15.3 이슈 대응 및 안정화 현장 이슈 실시간 대응 및 수정 640 NOT_STARTED 개발팀 전체 30 25 WP-15.1 SS 0 2027-10-01 2027-11-30 이슈 조치 내역, WP-15.4 운영 프로세스 수립 운영 절차, SLA, 장애 대응 프로세스 160 NOT_STARTED PM 50 2, 운영팀 50 2 WP-15.1 FS -14 2027-11-15 2027-11-30 운영 절차서 |
| P6 | 전체 오픈 | 전체 9개 라인 Go-Live | 6 | 2027-12-01 | 2027-12-31 | M6 - 전체 오픈 완료 | 운영 매뉴얼, 운영 이관 완료, 안정화 지원 체계 | WP-16 전체 오픈 전체 9개 라인 배포 및 Go-Live 2027-12-01 2027-12-31 WP-16.1 전체 라인 확대 배포 나머지 7개 라인 순차 배포 320 NOT_STARTED DevOps 엔지니어 100 3, 운영팀 50 5 WP-15.4 FS 0 2027-12-01 2027-12-10 전체 배포 크리티컬 패스, WP-16.2 기존 MES 대기 모드 전환 기존 MES를 백업/대기 모드로 전환 80 NOT_STARTED 운영팀 100 2 WP-16.1 FS 0 2027-12-11 2027-12-13 전환 완료, WP-16.3 Go-Live 지원 Go-Live 후 2주간 현장 지원 480 NOT_STARTED 개발팀 전체 30 20 WP-16.1 FS 0 2027-12-11 2027-12-24 안정화 지원, WP-16.4 운영 이관 및 인수인계 운영팀에 시스템 인수인계 160 NOT_STARTED PM 100 2, 개발팀 50 5 WP-16.3 FS 0 2027-12-25 2027-12-30 이관 완료 크리티컬 패스, WP-16.5 프로젝트 종료 보고 최종 결과 보고 및 종료 80 NOT_STARTED PM 100 1 WP-16.4 FS 0 2027-12-30 2027-12-31 종료 보고서 |

Links (resource_type, total_hours, total_days, peak_allocation):
- PM/PL 2800 350 3
- 시스템 아키텍트 1440 180 2
- APS 전문가/개발자 3200 400 4
- 백엔드 개발자 9600 1200 10
- 프론트엔드 개발자 4400 550 6
- 에지/OT 개발자 3360 420 4
- DBA 1760 220 2
- DevOps 엔지니어 2240 280 3
- UI/UX 디자이너 800 100 2
- QA 2400 300 3
- 보안 담당 480 60 1
