# 시스템 모니터링 웹 대시보드 - 작업분해구조 (WBS)

| id | name | description | order | work_packages | start_date | end_date | milestone | deliverables |
| --- | --- | --- | --- | --- | --- | --- | --- | --- |
| PH-001 | 프로젝트 준비 및 설계 | 요구사항 상세화, 시스템 아키텍처 설계, 기술 스택 확정, 개발 환경 구축. 백엔드(FastAPI/Flask)와 프론트엔드(React) 프로젝트 초기 세팅 및 코딩 컨벤션 정의 | 1 | WP-001 요구사항 상세화 및 명세서 작성 16개 기능/비기능 요구사항을 상세화하고, 각 요구사항별 수용 기준(Acceptance Criteria), 우선순위, 의존관계를 정의하여 요구사항 명세서를 작성 TSK-001 기능 요구사항 상세화 CPU/메모리/디스크/네트워크 모니터링, 실시간 갱신, 차트 시각화, 알림 등 기능 요구사항 항목별 상세 설명, 수용 기준(Acceptance Criteria), 우선순위 정의 12.0 NOT_STARTED PM 100.0 1 2026-03-22 2026-03-22 기능 요구사항 상세 목록, 수용 기준 정의서, TSK-002 비기능 요구사항 상세화 성능(데이터 갱신 주기, 응답시간), 호환성(브라우저, 해상도), 사용성(다크테마, 반응형), 보안 등 비기능 요구사항 상세화 및 측정 가능한 수용 기준 정의 8.0 NOT_STARTED PM 100.0 1 TSK-001 FS 0 2026-03-23 2026-03-23 비기능 요구사항 상세 목록, 측정 기준 정의서, TSK-003 요구사항 의존관계 분석 및 우선순위 매트릭스 작성 16개 요구사항 간 의존관계 매핑, MoSCoW 기법 등을 활용한 우선순위 매트릭스 작성, 구현 순서 도출 8.0 NOT_STARTED PM 100.0 1 TSK-001 FS 0, TSK-002 FS 0 2026-03-24 2026-03-24 의존관계 다이어그램, 우선순위 매트릭스, TSK-004 요구사항 명세서(SRS) 작성 상세화된 기능/비기능 요구사항, 수용 기준, 우선순위, 의존관계를 통합한 공식 요구사항 명세서 문서 작성 및 리뷰 12.0 NOT_STARTED PM 100.0 1 TSK-003 FS 0 2026-03-25 2026-03-25 요구사항 명세서(SRS), 리뷰 체크리스트 2026-03-22 2026-03-25, WP-002 시스템 아키텍처 설계 FastAPI/Flask 백엔드와 React 프론트엔드 간의 전체 시스템 아키텍처 설계. 단일 서버 모니터링 제약사항과 데이터 비영속성을 고려한 인메모리 데이터 흐름 설계, 실시간 데이터 갱신을 위한 WebSocket/SSE 통신 방식 결정 TSK-005 전체 시스템 아키텍처 설계 FastAPI/Flask 백엔드와 React 프론트엔드 간 계층 구조 설계, 단일 서버 모니터링 제약 조건 반영, 컴포넌트 간 책임 분리 및 통신 흐름 정의 16.0 NOT_STARTED 개발자 100.0 1 TSK-004 FS 0 2026-03-26 2026-03-27 시스템 아키텍처 다이어그램, 컴포넌트 구조도, TSK-006 인메모리 데이터 흐름 설계 데이터 비영속성 제약을 고려한 인메모리 데이터 저장 구조 설계, 시계열 데이터 보관 전략(버퍼 크기, 순환 큐 등), 메모리 사용량 제한 정책 수립 12.0 NOT_STARTED 개발자 100.0 1 TSK-005 FS 0 2026-03-28 2026-03-28 데이터 흐름도, 인메모리 저장 구조 설계서, TSK-007 실시간 통신 방식 설계 (WebSocket/SSE) WebSocket vs SSE 방식 비교 분석, 실시간 데이터 갱신 주기 및 프로토콜 결정, 연결 관리(재연결, 타임아웃) 정책 수립, 백프레셔 처리 전략 정의 12.0 NOT_STARTED 개발자 100.0 1 TSK-005 FS 0 2026-03-29 2026-03-29 통신 방식 결정 문서, 프로토콜 설계서, 연결 관리 정책 2026-03-26 2026-03-29, WP-003 API 인터페이스 설계 및 JSON 스키마 정의 시스템 정보 수집 API(CPU, 메모리, 디스크, 네트워크) 엔드포인트 설계 및 요청/응답 JSON 스키마 정의. OpenAPI(Swagger) 기반 API 문서화 규격 수립, 실시간 데이터 갱신용 WebSocket 메시지 포맷 정의 TSK-008 시스템 정보 수집 REST API 엔드포인트 설계 CPU, 메모리, 디스크, 네트워크 정보 조회 API 엔드포인트(URL, HTTP 메서드, 파라미터) 설계, 리소스별 URI 체계 정의 8.0 NOT_STARTED 개발자 100.0 1 TSK-005 FS 0 2026-03-30 2026-03-30 API 엔드포인트 목록, URL 설계 문서, TSK-009 요청/응답 JSON 스키마 정의 각 API 엔드포인트별 요청 파라미터 및 응답 본문의 JSON 스키마 정의, 데이터 타입/단위/범위 명세, 에러 응답 포맷 표준화 12.0 NOT_STARTED 개발자 100.0 1 TSK-008 FS 0 2026-03-31 2026-03-31 JSON 스키마 정의서, 에러 응답 포맷 문서, TSK-010 WebSocket 메시지 포맷 정의 실시간 데이터 갱신용 WebSocket 메시지 타입(구독, 데이터 푸시, 에러 등) 정의, 메시지 페이로드 JSON 포맷 설계, 구독/해제 프로토콜 정의 8.0 NOT_STARTED 개발자 100.0 1 TSK-007 FS 0, TSK-008 FS 0 2026-04-01 2026-04-01 WebSocket 메시지 스키마, 구독 프로토콜 명세, TSK-011 OpenAPI(Swagger) 문서 규격 수립 OpenAPI 3.0 기반 API 문서화 규격 수립, 스키마 정의를 반영한 Swagger YAML/JSON 작성, 자동 문서 생성 파이프라인 설계 8.0 NOT_STARTED 개발자 100.0 1 TSK-009 FS 0 2026-04-02 2026-04-02 OpenAPI 규격 문서, Swagger 명세 파일 2026-03-30 2026-04-02, WP-004 기술 스택 확정 및 PoC 검증 백엔드(FastAPI vs Flask) 최종 선정, 프론트엔드 차트 라이브러리(Recharts, Chart.js, D3 등) 비교 검증, 실시간 통신 라이브러리 선정. 각 기술 후보에 대한 PoC(Proof of Concept)를 통해 성능·호환성·사용성 비기능 요구사항 충족 여부 검증 TSK-012 백엔드 프레임워크 PoC (FastAPI vs Flask) FastAPI와 Flask로 동일한 시스템 정보 수집 API를 구현하여 성능(응답시간, 동시처리), 비동기 지원, WebSocket 통합 용이성, psutil 연동 편의성 비교 검증 16.0 NOT_STARTED 개발자 100.0 1 TSK-005 FS 0 2026-04-03 2026-04-04 PoC 소스코드(FastAPI), PoC 소스코드(Flask), 비교 분석 보고서, TSK-013 프론트엔드 차트 라이브러리 PoC Recharts, Chart.js, D3.js를 활용한 CPU/메모리 실시간 차트 프로토타입 구현, 렌더링 성능(60fps 유지), 실시간 데이터 갱신 호환성, 다크테마 지원, React 통합 편의성 비교 16.0 NOT_STARTED 개발자 100.0 1 TSK-005 FS 0 2026-04-05 2026-04-06 차트 PoC 프로토타입, 라이브러리 비교 매트릭스, TSK-014 실시간 통신 라이브러리 PoC 및 기술 스택 최종 확정 WebSocket/SSE 클라이언트 라이브러리 후보 PoC, 재연결·에러 핸들링 검증. 전체 PoC 결과를 종합하여 백엔드 프레임워크, 차트 라이브러리, 통신 라이브러리 최종 선정 및 기술 스택 확정 12.0 NOT_STARTED 개발자 100.0 1 TSK-012 FS 0, TSK-013 FS 0 2026-04-07 2026-04-07 통신 라이브러리 PoC, 기술 스택 확정 문서, 의사결정 기록 2026-04-03 2026-04-07, WP-005 백엔드 프로젝트 초기 세팅 및 개발 환경 구축 FastAPI/Flask 프로젝트 초기화, 프로젝트 디렉토리 구조 설정, 가상환경 및 의존성 관리(poetry/pip), psutil 기반 시스템 정보 수집 모듈 스캐폴딩, 코딩 컨벤션(PEP 8, Black, Flake8) 정의 및 pre-commit 훅 설정 TSK-015 백엔드 프로젝트 초기화 및 디렉토리 구조 설정 확정된 프레임워크(FastAPI/Flask) 기반 프로젝트 초기화, 모듈별 디렉토리 구조(api, services, models, utils 등) 설정, poetry/pip 기반 가상환경 및 의존성 관리 구성 8.0 NOT_STARTED 개발자 100.0 1 TSK-014 FS 0 2026-04-08 2026-04-08 프로젝트 초기 구조, pyproject.toml/requirements.txt, 가상환경 설정, TSK-016 psutil 기반 시스템 정보 수집 모듈 스캐폴딩 psutil 라이브러리를 활용한 CPU, 메모리, 디스크, 네트워크 정보 수집 서비스 모듈 기초 구조 구현, 인터페이스 정의 및 기본 수집 로직 작성 12.0 NOT_STARTED 개발자 100.0 1 TSK-015 FS 0 2026-04-09 2026-04-09 시스템 정보 수집 모듈, 인터페이스 정의, TSK-017 백엔드 코딩 컨벤션 및 pre-commit 훅 설정 PEP 8 기반 코딩 컨벤션 정의, Black 포매터 및 Flake8 린터 설정, pre-commit 훅 구성(black, flake8, isort), .editorconfig 설정, CI 파이프라인 연동 준비 6.0 NOT_STARTED 개발자 100.0 1 TSK-015 FS 0 2026-04-10 2026-04-10 코딩 컨벤션 문서, .pre-commit-config.yaml, 린터/포매터 설정 파일 2026-04-08 2026-04-10, WP-006 프론트엔드 프로젝트 초기 세팅 및 개발 환경 구축 React 프로젝트 초기화(Vite/CRA), TypeScript 설정, 다크 테마 기반 디자인 시스템 스캐폴딩, 반응형 레이아웃 기초 구조 설계, 코딩 컨벤션(ESLint, Prettier) 정의 및 Storybook 등 컴포넌트 개발 환경 구축 TSK-018 프론트엔드 프로젝트 초기화 및 TypeScript 설정 Vite 기반 React 프로젝트 초기화, TypeScript strict 모드 설정, 경로 alias 구성, 디렉토리 구조(components, pages, hooks, services, types 등) 설정 8.0 NOT_STARTED 개발자 100.0 1 TSK-014 FS 0 2026-04-11 2026-04-11 프로젝트 초기 구조, tsconfig.json, vite.config.ts, TSK-019 다크 테마 디자인 시스템 스캐폴딩 다크 테마 기반 컬러 팔레트, 타이포그래피, 간격 체계 등 디자인 토큰 정의, CSS 변수 또는 Theme Provider 기반 테마 시스템 구축, 기본 UI 컴포넌트(Button, Card, Layout 등) 스캐폴딩 16.0 NOT_STARTED 개발자 100.0 1 TSK-018 FS 0 2026-04-12 2026-04-13 디자인 토큰 정의, 테마 설정 파일, 기본 UI 컴포넌트, TSK-020 반응형 레이아웃 기초 구조 설계 대시보드 그리드 레이아웃 설계, 브레이크포인트별(데스크톱, 태블릿, 모바일) 반응형 레이아웃 구조 구현, 공통 레이아웃 컴포넌트(Header, Sidebar, Content Area) 개발 12.0 NOT_STARTED 개발자 100.0 1 TSK-019 FS 0 2026-04-14 2026-04-14 레이아웃 컴포넌트, 반응형 그리드 시스템, TSK-021 프론트엔드 코딩 컨벤션 및 개발 도구 설정 ESLint 규칙 설정(React, TypeScript 플러그인), Prettier 포매터 설정, Storybook 초기 구성 및 기본 컴포넌트 스토리 작성, Husky pre-commit 훅 연동 8.0 NOT_STARTED 개발자 100.0 1 TSK-018 FS 0 2026-04-15 2026-04-15 .eslintrc, .prettierrc, Storybook 설정, husky 설정 2026-04-11 2026-04-15 | 2026-03-22 | 2026-04-15 | 설계 완료 및 개발 환경 준비 | 요구사항 명세서(16개 요구사항 상세화), 시스템 아키텍처 설계서, API 인터페이스 설계서(JSON 스키마 정의), 기술 스택 확정 문서, 개발 환경 구축(백엔드/프론트엔드 프로젝트 초기화), 코딩 표준 및 Git 브랜치 전략 |
| PH-002 | 백엔드 API 개발 (Sprint 1-2) | 시스템 리소스 수집 백엔드 API 구현. CPU, 메모리, 디스크, 네트워크 데이터를 수집하는 FastAPI/Flask 기반 REST API 개발 및 단위 테스트 | 2 | WP-001 프로젝트 초기 설정 및 API 아키텍처 설계 FastAPI 프로젝트 구조 셋업, 의존성 관리(requirements.txt/pyproject.toml), 코드 컨벤션 정의, API 엔드포인트 설계, JSON 응답 스키마 정의, OpenAPI/Swagger 자동 문서화 설정 TSK-001 FastAPI 프로젝트 구조 셋업 FastAPI 프로젝트 디렉토리 구조 생성, pyproject.toml/requirements.txt 의존성 정의, 가상환경 설정, .gitignore 및 기본 설정 파일 구성 8.0 NOT_STARTED 개발자 100.0 1 TSK-021 FS 0 2026-04-16 2026-04-16 FR-001 프로젝트 디렉토리 구조, pyproject.toml, requirements.txt, .gitignore, TSK-002 코드 컨벤션 및 개발 표준 정의 코딩 스타일 가이드 작성, linter/formatter 설정(black, ruff, mypy), pre-commit hook 구성, 브랜치 전략 및 커밋 메시지 규칙 정의 6.0 NOT_STARTED 개발자 100.0 1 TSK-001 FS 0 2026-04-17 2026-04-17 FR-002 코드 컨벤션 문서, linter/formatter 설정 파일, pre-commit 설정, TSK-003 API 엔드포인트 설계 및 JSON 스키마 정의 전체 API 엔드포인트 목록 설계, URL 패턴 정의, 각 엔드포인트별 요청/응답 JSON 스키마 정의(Pydantic 모델), 에러 응답 형식 표준화 8.0 NOT_STARTED 개발자 100.0 1 TSK-001 FS 0 2026-04-18 2026-04-18 FR-003 API 설계 문서, Pydantic 스키마 모델 코드, 에러 응답 표준 정의서, TSK-004 OpenAPI/Swagger 자동 문서화 설정 FastAPI의 OpenAPI 자동 문서화 커스터마이징, Swagger UI 및 ReDoc 설정, API 버전 관리 및 메타데이터 구성 4.0 NOT_STARTED 개발자 100.0 1 TSK-003 FS 0 2026-04-19 2026-04-19 FR-004 Swagger UI 설정, ReDoc 설정, API 문서화 구성 코드 2026-04-16 2026-04-19, WP-002 시스템 리소스 수집 모듈 개발 psutil 라이브러리를 활용한 시스템 리소스 데이터 수집 모듈 구현. CPU 사용률, 메모리 사용률, 디스크 사용량, 네트워크 트래픽 데이터를 수집하는 서비스 레이어 개발. 단일 서버 환경 기준으로 로컬 시스템 정보를 실시간 조회하며, 데이터 비영속성 제약에 따라 인메모리 처리 방식 적용 TSK-005 CPU 사용률 수집 모듈 개발 psutil을 활용한 CPU 사용률 데이터 수집 서비스 구현. 전체/코어별 사용률, CPU 주파수, 프로세스 수 등 수집. 인메모리 처리 방식 적용 8.0 NOT_STARTED 개발자 100.0 1 TSK-003 FS 0 2026-04-20 2026-04-20 FR-005 CPU 수집 모듈 코드, 데이터 모델 정의, TSK-006 메모리 사용률 수집 모듈 개발 psutil을 활용한 메모리(RAM, Swap) 사용률 데이터 수집 서비스 구현. 전체 용량, 사용량, 가용량, 사용률 등 수집. 인메모리 처리 방식 적용 6.0 NOT_STARTED 개발자 100.0 1 TSK-003 FS 0 2026-04-21 2026-04-21 FR-006 메모리 수집 모듈 코드, 데이터 모델 정의, TSK-007 디스크 사용량 수집 모듈 개발 psutil을 활용한 디스크 사용량 데이터 수집 서비스 구현. 파티션별 전체 용량, 사용량, 잔여 용량, 사용률, 디스크 I/O 통계 수집 6.0 NOT_STARTED 개발자 100.0 1 TSK-003 FS 0 2026-04-22 2026-04-22 FR-007 디스크 수집 모듈 코드, 데이터 모델 정의, TSK-008 네트워크 트래픽 수집 모듈 개발 psutil을 활용한 네트워크 트래픽 데이터 수집 서비스 구현. 인터페이스별 송수신 바이트, 패킷 수, 에러 수, 연결 상태 수집 8.0 NOT_STARTED 개발자 100.0 1 TSK-003 FS 0 2026-04-23 2026-04-23 FR-008 네트워크 수집 모듈 코드, 데이터 모델 정의, TSK-009 시스템 리소스 수집 통합 서비스 레이어 개발 개별 리소스 수집 모듈을 통합하는 서비스 레이어 구현. 전체 시스템 요약 데이터 집계 로직, 인메모리 데이터 관리, 데이터 갱신 주기 제어 8.0 NOT_STARTED 개발자 100.0 1 TSK-005 FS 0, TSK-006 FS 0, TSK-007 FS 0, TSK-008 FS 0 2026-04-24 2026-04-24 통합 서비스 레이어 코드, 시스템 요약 데이터 모델 2026-04-20 2026-04-24, WP-003 REST API 엔드포인트 개발 시스템 리소스 수집 모듈을 기반으로 FastAPI REST API 엔드포인트 구현. 각 리소스(CPU, 메모리, 디스크, 네트워크)별 조회 API와 전체 시스템 요약 API 개발. 실시간 데이터 갱신을 위한 폴링 방식 지원 및 응답 성능 최적화 TSK-010 CPU 리소스 조회 API 개발 GET /api/v1/cpu 엔드포인트 구현. CPU 사용률, 코어별 상세 정보 조회 API. Pydantic 응답 모델 적용 및 에러 처리 8.0 NOT_STARTED 개발자 100.0 1 TSK-004 FS 0, TSK-009 FS 0 2026-04-25 2026-04-25 API 엔드포인트 코드, 라우터 설정, TSK-011 메모리 리소스 조회 API 개발 GET /api/v1/memory 엔드포인트 구현. RAM 및 Swap 메모리 사용률 조회 API. Pydantic 응답 모델 적용 및 에러 처리 8.0 NOT_STARTED 개발자 100.0 1 TSK-004 FS 0, TSK-009 FS 0 2026-04-26 2026-04-26 API 엔드포인트 코드, 라우터 설정, TSK-012 디스크 리소스 조회 API 개발 GET /api/v1/disk 엔드포인트 구현. 파티션별 디스크 사용량 및 I/O 통계 조회 API. Pydantic 응답 모델 적용 및 에러 처리 8.0 NOT_STARTED 개발자 100.0 1 TSK-004 FS 0, TSK-009 FS 0 2026-04-27 2026-04-27 API 엔드포인트 코드, 라우터 설정, TSK-013 네트워크 트래픽 조회 API 개발 GET /api/v1/network 엔드포인트 구현. 인터페이스별 네트워크 트래픽 및 연결 상태 조회 API. Pydantic 응답 모델 적용 및 에러 처리 8.0 NOT_STARTED 개발자 100.0 1 TSK-004 FS 0, TSK-009 FS 0 2026-04-28 2026-04-28 API 엔드포인트 코드, 라우터 설정, TSK-014 전체 시스템 요약 API 개발 GET /api/v1/system/summary 엔드포인트 구현. CPU, 메모리, 디스크, 네트워크 전체 요약 데이터를 단일 응답으로 제공하는 API. 응답 성능 최적화 및 폴링 지원 10.0 NOT_STARTED 개발자 100.0 1 TSK-010 FS 0, TSK-011 FS 0, TSK-012 FS 0, TSK-013 FS 0 2026-04-29 2026-04-29 API 엔드포인트 코드, 통합 응답 모델, 성능 최적화 로직, TSK-015 API 공통 미들웨어 및 에러 핸들링 구현 CORS 설정, 요청 로깅, 전역 예외 처리 핸들러, 응답 시간 측정 미들웨어 구현. 표준 에러 응답 포맷 적용 8.0 NOT_STARTED 개발자 100.0 1 TSK-004 FS 0 2026-04-30 2026-04-30 미들웨어 코드, 에러 핸들러 코드, 로깅 설정 2026-04-25 2026-04-30, WP-004 API 단위 테스트 및 품질 검증 pytest 기반 단위 테스트 및 통합 테스트 작성. 각 API 엔드포인트의 응답 형식, 상태 코드, 에러 처리 검증. 시스템 리소스 수집 모듈의 데이터 정합성 테스트. 응답 시간 성능 검증 및 호환성 확인 TSK-016 시스템 리소스 수집 모듈 단위 테스트 작성 pytest 기반 CPU, 메모리, 디스크, 네트워크 수집 모듈 단위 테스트 작성. psutil 모킹을 통한 데이터 정합성 검증, 예외 상황 테스트 8.0 NOT_STARTED QA 100.0 1 TSK-009 FS 0 2026-05-01 2026-05-01 단위 테스트 코드, 테스트 커버리지 리포트, TSK-017 API 엔드포인트 단위 테스트 작성 pytest + httpx(AsyncClient) 기반 각 API 엔드포인트 단위 테스트 작성. 응답 상태 코드, JSON 스키마 검증, 에러 케이스 테스트 10.0 NOT_STARTED QA 100.0 1 TSK-014 FS 0, TSK-015 FS 0 2026-05-02 2026-05-02 API 단위 테스트 코드, 테스트 리포트, TSK-018 통합 테스트 작성 수집 모듈과 API 엔드포인트 간 통합 테스트 작성. 실제 시스템 데이터 기반 end-to-end 흐름 검증, 동시 요청 처리 테스트 12.0 NOT_STARTED QA 100.0 1 TSK-016 FS 0, TSK-017 FS 0 2026-05-03 2026-05-03 통합 테스트 코드, 테스트 시나리오 문서, TSK-019 응답 시간 성능 검증 및 호환성 테스트 API 응답 시간 벤치마크 테스트, 부하 테스트(locust/k6), 다양한 OS 환경 호환성 확인, 성능 기준 미달 시 최적화 방안 도출 10.0 NOT_STARTED QA 100.0 1 TSK-018 FS 0 2026-05-04 2026-05-04 성능 테스트 결과 리포트, 호환성 테스트 결과, 최적화 권고사항 2026-05-01 2026-05-04 | 2026-04-16 | 2026-05-04 | 백엔드 API 개발 완료 | Python 백엔드 서버(FastAPI/Flask), 시스템 정보 수집 API 엔드포인트(CPU, 메모리, 디스크, 네트워크), API 응답 JSON 스키마 정의, API 단위 테스트 코드, API 문서(Swagger/OpenAPI) |
| PH-003 | 프론트엔드 MVP 개발 (Sprint 3-5) | React 기반 대시보드 UI 핵심 기능 개발. 다크 테마 레이아웃, 4개 모니터링 차트 컴포넌트(CPU, 메모리, 디스크, 네트워크), 실시간 데이터 갱신(3초 주기 폴링) 구현 | 3 | WP-001 다크 테마 대시보드 레이아웃 개발 React 기반 다크 테마 레이아웃 구조 설계 및 구현. 헤더, 사이드바, 메인 콘텐츠 영역의 그리드 레이아웃 구성, 다크 테마 컬러 시스템 정의, 반응형 브레이크포인트 설정 및 4개 차트 위젯 배치 영역 구현 TSK-001 다크 테마 컬러 시스템 및 디자인 토큰 정의 다크 테마 기반 컬러 팔레트(배경, 표면, 텍스트, 강조색 등) 정의 및 CSS 변수/디자인 토큰 체계 수립. 차트별 컬러 코드, 상태 컬러(정상/경고/위험) 포함 8.0 NOT_STARTED 디자이너 100.0 1 TSK-019 FS 0 2026-05-05 2026-05-05 컬러 팔레트 정의서, 디자인 토큰 파일(CSS variables/theme.ts), TSK-002 React 프로젝트 초기 세팅 및 레이아웃 그리드 구조 설계 React 프로젝트 보일러플레이트 구성(CRA/Vite), 글로벌 스타일 설정, CSS-in-JS 또는 CSS 모듈 환경 구성. 헤더, 사이드바, 메인 콘텐츠 영역의 CSS Grid/Flexbox 레이아웃 골격 구현 12.0 NOT_STARTED 개발자 100.0 1 TSK-001 FS 0 2026-05-06 2026-05-06 프로젝트 초기 구조, 레이아웃 컴포넌트(Header, Sidebar, MainContent), TSK-003 반응형 브레이크포인트 설정 및 4개 차트 위젯 배치 영역 구현 데스크탑/태블릿/모바일 반응형 브레이크포인트 정의 및 미디어쿼리 적용. 4개 차트 위젯(CPU, 메모리, 디스크, 네트워크)을 배치할 그리드 영역 구현 및 반응형 리사이즈 처리 12.0 NOT_STARTED 개발자 100.0 1 TSK-002 FS 0 2026-05-07 2026-05-07 반응형 레이아웃 코드, 위젯 배치 그리드 컴포넌트, TSK-004 레이아웃 UI 검수 및 다크 테마 스타일 QA 다크 테마 적용 상태에서 레이아웃 컴포넌트들의 시각적 일관성, 반응형 동작, 컬러 대비(접근성) 검증 4.0 NOT_STARTED QA 100.0 1 TSK-003 FS 0 2026-05-08 2026-05-08 UI 검수 체크리스트, 이슈 리포트 2026-05-05 2026-05-08, WP-002 시스템 정보 수집 백엔드 API 개발 CPU, 메모리, 디스크, 네트워크 메트릭을 수집하는 백엔드 REST API 개발. 단일 서버 대상으로 시스템 리소스 정보를 JSON 형태로 반환하는 엔드포인트 구현 및 데이터 수집 로직 개발 TSK-005 백엔드 프로젝트 초기 세팅 및 API 구조 설계 백엔드 프레임워크(Express/FastAPI 등) 프로젝트 초기 구성, 디렉토리 구조 설계, API 라우팅 체계 정의. REST API 엔드포인트 명세(URL, 메서드, 응답 스키마) 설계 8.0 NOT_STARTED 개발자 100.0 1 TSK-004 FS 0 2026-05-09 2026-05-09 백엔드 프로젝트 구조, API 명세서(Swagger/OpenAPI), TSK-006 CPU 메트릭 수집 API 개발 GET /api/metrics/cpu 엔드포인트 구현. 전체 CPU 사용률, 코어별 사용률, 로드 애버리지 등 CPU 관련 메트릭을 시스템에서 수집하여 JSON으로 반환하는 로직 개발 8.0 NOT_STARTED 개발자 100.0 1 TSK-005 FS 0 2026-05-10 2026-05-10 CPU 메트릭 API 코드, 응답 JSON 스키마, TSK-007 메모리 메트릭 수집 API 개발 GET /api/metrics/memory 엔드포인트 구현. 전체 메모리, 사용 중, 캐시, 여유 메모리, 스왑 메모리 정보를 수집하여 JSON으로 반환하는 로직 개발 8.0 NOT_STARTED 개발자 100.0 1 TSK-005 FS 0 2026-05-11 2026-05-11 메모리 메트릭 API 코드, 응답 JSON 스키마, TSK-008 디스크 메트릭 수집 API 개발 GET /api/metrics/disk 엔드포인트 구현. 파티션별 마운트 포인트, 전체 용량, 사용량, 여유 공간, 사용률 등 디스크 메트릭을 수집하여 JSON으로 반환 8.0 NOT_STARTED 개발자 100.0 1 TSK-005 FS 0 2026-05-12 2026-05-12 디스크 메트릭 API 코드, 응답 JSON 스키마, TSK-009 네트워크 메트릭 수집 API 개발 GET /api/metrics/network 엔드포인트 구현. 인터페이스별 송수신 바이트, 전송 속도(Mbps), 누적 전송량, 패킷 수 등 네트워크 메트릭을 수집하여 JSON으로 반환 8.0 NOT_STARTED 개발자 100.0 1 TSK-005 FS 0 2026-05-13 2026-05-13 네트워크 메트릭 API 코드, 응답 JSON 스키마, TSK-010 통합 메트릭 API 및 백엔드 단위 테스트 GET /api/metrics/all 통합 엔드포인트 구현(전체 메트릭 한 번에 반환). 각 메트릭 수집 API에 대한 단위 테스트 코드 작성 및 에러 핸들링 검증 8.0 NOT_STARTED 개발자 100.0 1 TSK-006 FS 0, TSK-007 FS 0, TSK-008 FS 0, TSK-009 FS 0 2026-05-14 2026-05-14 통합 API 코드, 단위 테스트 코드, 테스트 리포트 2026-05-09 2026-05-14, WP-003 실시간 데이터 갱신 서비스 개발 3초 주기 폴링 기반 실시간 데이터 갱신 로직 구현. 프론트엔드에서 백엔드 API를 주기적으로 호출하여 최신 메트릭 데이터를 가져오는 커스텀 훅 및 상태 관리 로직 개발. 연결 상태 표시, 에러 핸들링, 데이터 캐싱 버퍼 포함 TSK-011 폴링 기반 데이터 갱신 커스텀 훅 개발 3초 주기로 백엔드 API를 호출하여 최신 메트릭 데이터를 가져오는 React 커스텀 훅(usePolling/useMetrics) 구현. setInterval 기반 폴링, 컴포넌트 언마운트 시 정리(cleanup) 로직 포함 12.0 NOT_STARTED 개발자 100.0 1 TSK-010 FS 0 2026-05-15 2026-05-15 커스텀 훅 코드(usePolling), 폴링 설정 옵션, TSK-012 상태 관리 및 데이터 캐싱 버퍼 구현 메트릭 데이터의 전역 상태 관리(Context/Zustand 등) 구현. 시계열 데이터 캐싱 버퍼(최근 N분 데이터 보관) 로직 개발, 차트 렌더링에 필요한 히스토리 데이터 구조 설계 12.0 NOT_STARTED 개발자 100.0 1 TSK-011 FS 0 2026-05-16 2026-05-16 상태 관리 코드, 데이터 캐싱 버퍼 로직, TSK-013 연결 상태 표시 및 에러 핸들링 구현 API 연결 상태(연결됨/연결 끊김/재연결 중) UI 표시 컴포넌트 개발. 네트워크 오류, 타임아웃, 서버 오류 시 재시도 로직 및 사용자 알림 처리 8.0 NOT_STARTED 개발자 100.0 1 TSK-012 FS 0 2026-05-17 2026-05-17 연결 상태 컴포넌트, 에러 핸들링 로직, TSK-014 실시간 데이터 갱신 서비스 단위 테스트 폴링 훅, 상태 관리, 에러 핸들링 로직에 대한 단위 테스트 작성. 폴링 주기 정확성, 데이터 버퍼 동작, 에러 시나리오 검증 8.0 NOT_STARTED 개발자 100.0 1 TSK-013 FS 0 2026-05-18 2026-05-18 단위 테스트 코드, 테스트 리포트 2026-05-15 2026-05-18, WP-004 CPU 사용률 실시간 모니터링 차트 개발 CPU 사용률을 실시간으로 시각화하는 차트 컴포넌트 개발. 전체 CPU 사용률 라인 차트, 코어별 사용률 표시, 시계열 데이터 렌더링 및 애니메이션 처리. 차트 라이브러리 연동 및 다크 테마 스타일 적용 TSK-015 차트 라이브러리 선정 및 공통 차트 래퍼 컴포넌트 개발 Recharts/Chart.js/Nivo 등 차트 라이브러리 선정 및 설치. 다크 테마 기본 스타일이 적용된 공통 차트 래퍼 컴포넌트 구현(축, 그리드, 툴팁 등 공통 설정) 12.0 NOT_STARTED 개발자 100.0 1 TSK-001 FS 0, TSK-003 FS 0 2026-05-19 2026-05-19 차트 라이브러리 설정, 공통 차트 래퍼 컴포넌트, TSK-016 CPU 사용률 라인 차트 컴포넌트 개발 전체 CPU 사용률 시계열 라인 차트 구현. 코어별 사용률 다중 라인 표시, X축 시간축/Y축 퍼센트 설정, 실시간 데이터 업데이트 시 애니메이션 처리, 다크 테마 스타일 적용 16.0 NOT_STARTED 개발자 100.0 1 TSK-015 FS 0, TSK-012 FS 0 2026-05-20 2026-05-21 CPU 차트 컴포넌트, 코어별 표시 로직, TSK-017 CPU 차트 단위 테스트 및 스타일 검수 CPU 차트 컴포넌트의 데이터 바인딩, 렌더링, 애니메이션 동작 테스트. 다크 테마 적용 상태 시각적 검수 6.0 NOT_STARTED 개발자 100.0 1 TSK-016 FS 0 2026-05-22 2026-05-22 테스트 코드, 스타일 검수 결과 2026-05-19 2026-05-22, WP-005 메모리 사용률 실시간 모니터링 차트 개발 메모리 사용률을 실시간으로 시각화하는 차트 컴포넌트 개발. 전체 메모리, 사용 중, 캐시, 여유 메모리를 영역 차트로 표시. 메모리 사용량 수치(GB/%) 및 스왑 메모리 정보 포함 TSK-018 메모리 사용률 영역 차트 컴포넌트 개발 전체 메모리, 사용 중, 캐시, 여유 메모리를 스택 영역(Area) 차트로 시각화하는 컴포넌트 구현. 메모리 사용량 수치(GB/%) 오버레이 표시, 다크 테마 컬러 적용 16.0 NOT_STARTED 개발자 100.0 1 TSK-015 FS 0, TSK-012 FS 0 2026-05-23 2026-05-24 메모리 영역 차트 컴포넌트, TSK-019 스왑 메모리 정보 표시 및 메모리 수치 패널 구현 스왑 메모리 사용량/전체 용량 정보 표시 UI 구현. 메모리 관련 주요 수치(총 용량, 사용량, 사용률 등)를 요약 표시하는 정보 패널 컴포넌트 개발 8.0 NOT_STARTED 개발자 100.0 1 TSK-018 FS 0 2026-05-25 2026-05-25 스왑 메모리 표시 컴포넌트, 메모리 수치 패널, TSK-020 메모리 차트 단위 테스트 및 스타일 검수 메모리 차트 컴포넌트의 데이터 바인딩, 영역 차트 렌더링, 수치 표시 정확성 테스트. 다크 테마 시각적 검수 6.0 NOT_STARTED 개발자 100.0 1 TSK-019 FS 0 2026-05-26 2026-05-26 테스트 코드, 스타일 검수 결과 2026-05-23 2026-05-26, WP-006 디스크 사용량 시각화 차트 개발 디스크 파티션별 사용량을 시각화하는 차트 컴포넌트 개발. 도넛/파이 차트로 사용/여유 공간 표시, 파티션별 마운트 포인트 및 용량 정보, 사용률 바 차트 구현 TSK-021 디스크 사용량 도넛 차트 컴포넌트 개발 파티션별 디스크 사용/여유 공간을 도넛(또는 파이) 차트로 시각화하는 컴포넌트 구현. 파티션별 마운트 포인트, 전체 용량, 사용량 정보 툴팁/레이블 표시, 다크 테마 적용 12.0 NOT_STARTED 개발자 100.0 1 TSK-015 FS 0, TSK-012 FS 0 2026-05-27 2026-05-27 디스크 도넛 차트 컴포넌트, TSK-022 파티션별 사용률 바 차트 구현 각 디스크 파티션의 사용률을 수평/수직 바 차트로 표시하는 컴포넌트 구현. 사용률 임계치별 컬러 변경(정상/경고/위험), 용량 수치(GB) 표시 10.0 NOT_STARTED 개발자 100.0 1 TSK-021 FS 0 2026-05-28 2026-05-28 사용률 바 차트 컴포넌트, TSK-023 디스크 차트 단위 테스트 및 스타일 검수 디스크 차트 컴포넌트들의 데이터 바인딩, 렌더링, 임계치 컬러 변경 테스트. 다크 테마 시각적 검수 6.0 NOT_STARTED 개발자 100.0 1 TSK-022 FS 0 2026-05-29 2026-05-29 테스트 코드, 스타일 검수 결과 2026-05-27 2026-05-29, WP-007 네트워크 트래픽 실시간 모니터링 차트 개발 네트워크 인바운드/아웃바운드 트래픽을 실시간으로 시각화하는 차트 컴포넌트 개발. 송수신 데이터 속도(Mbps) 라인 차트, 누적 전송량, 인터페이스별 트래픽 표시 TSK-024 네트워크 트래픽 라인 차트 컴포넌트 개발 인바운드/아웃바운드 트래픽 송수신 속도(Mbps)를 실시간 듀얼 라인 차트로 시각화하는 컴포넌트 구현. 시계열 X축, 속도 Y축, 다크 테마 컬러 적용, 실시간 애니메이션 16.0 NOT_STARTED 개발자 100.0 1 TSK-015 FS 0, TSK-012 FS 0 2026-05-30 2026-05-31 네트워크 라인 차트 컴포넌트, TSK-025 누적 전송량 및 인터페이스별 트래픽 정보 패널 구현 총 송수신 누적 전송량(MB/GB) 표시 및 네트워크 인터페이스별 트래픽 요약 정보를 표시하는 패널 컴포넌트 개발 10.0 NOT_STARTED 개발자 100.0 1 TSK-024 FS 0 2026-06-01 2026-06-01 누적 전송량 패널, 인터페이스별 트래픽 표시, TSK-026 네트워크 차트 단위 테스트 및 스타일 검수 네트워크 차트 컴포넌트의 데이터 바인딩, 듀얼 라인 렌더링, 수치 표시 정확성 테스트. 다크 테마 시각적 검수 6.0 NOT_STARTED 개발자 100.0 1 TSK-025 FS 0 2026-06-02 2026-06-02 테스트 코드, 스타일 검수 결과 2026-05-30 2026-06-02, WP-008 통합 테스트 및 성능 최적화 전체 대시보드 통합 테스트 수행 및 성능 최적화. 4개 차트 동시 렌더링 시 성능 측정, 3초 폴링 안정성 검증, 브라우저 호환성 테스트, 메모리 누수 점검 및 차트 렌더링 최적화 TSK-027 4개 차트 동시 렌더링 통합 테스트 CPU, 메모리, 디스크, 네트워크 4개 차트가 대시보드에서 동시에 렌더링되는 상태에서 기능 정상 동작, 데이터 정확성, UI 레이아웃 깨짐 여부 통합 테스트 수행 12.0 NOT_STARTED QA 100.0 1 TSK-017 FS 0, TSK-020 FS 0, TSK-023 FS 0, TSK-026 FS 0, TSK-014 FS 0 2026-06-03 2026-06-03 통합 테스트 시나리오, 테스트 리포트, TSK-028 3초 폴링 안정성 및 장시간 운영 테스트 3초 주기 폴링이 장시간(1시간 이상) 안정적으로 동작하는지 검증. 메모리 누수 여부, 브라우저 탭 비활성화 시 동작, 네트워크 불안정 시나리오 테스트 12.0 NOT_STARTED QA 100.0 1 TSK-027 FS 0 2026-06-04 2026-06-04 안정성 테스트 리포트, 메모리 프로파일링 결과, TSK-029 차트 렌더링 성능 최적화 4개 차트 동시 렌더링 시 프레임 드롭, CPU 점유율 측정 및 최적화. React.memo, useMemo 적용, 불필요한 리렌더링 제거, 차트 데이터 포인트 제한, requestAnimationFrame 활용 등 성능 개선 16.0 NOT_STARTED 개발자 100.0 1 TSK-028 FS 0 2026-06-05 2026-06-06 최적화된 컴포넌트 코드, 성능 측정 비교 리포트, TSK-030 브라우저 호환성 테스트 및 최종 검수 Chrome, Firefox, Safari, Edge 주요 브라우저에서 대시보드 전체 기능 및 UI 호환성 테스트. 최종 버그 수정 및 릴리즈 검수 12.0 NOT_STARTED QA 100.0 1 TSK-029 FS 0 2026-06-07 2026-06-07 브라우저 호환성 테스트 리포트, 최종 검수 체크리스트, 릴리즈 승인서 2026-06-03 2026-06-07 | 2026-05-05 | 2026-06-07 | 프론트엔드 대시보드 MVP 릴리스 | 다크 테마 대시보드 레이아웃, CPU 사용률 실시간 모니터링 차트, 메모리 사용률 실시간 모니터링 차트, 디스크 사용량 시각화 차트, 네트워크 트래픽 실시간 모니터링 차트, 실시간 데이터 갱신 로직(3초 주기 폴링), 백엔드 API 연동 완료 |
| PH-004 | 기능 확장 및 UI 완성 (Sprint 6-7) | 반응형 대시보드 레이아웃 적용, UI/UX 개선, 비기능 요구사항(성능, 호환성, 사용성) 반영. 다양한 해상도 및 브라우저 호환성 확보 | 4 | WP-001 반응형 대시보드 레이아웃 개발 모바일, 태블릿, 데스크톱 해상도에 대응하는 반응형 그리드 레이아웃 구현. CSS Grid/Flexbox 기반 브레이크포인트 설계 및 위젯 재배치 로직 개발 TSK-001 반응형 브레이크포인트 설계 모바일(~767px), 태블릿(768~1023px), 데스크톱(1024px~) 브레이크포인트 정의 및 CSS Grid/Flexbox 기반 그리드 시스템 설계. 디자인 토큰으로 간격·컬럼 수·거터 규격 문서화 8.0 NOT_STARTED 디자이너 100.0 1 TSK-030 FS 0 2026-06-08 2026-06-08 브레이크포인트 정의서, 그리드 시스템 설계 문서, 디자인 토큰 명세, TSK-002 반응형 그리드 레이아웃 컴포넌트 개발 CSS Grid 기반 대시보드 메인 레이아웃 컴포넌트 구현. 사이드바, 헤더, 콘텐츠 영역의 반응형 배치 및 미디어 쿼리 적용 16.0 NOT_STARTED 개발자 100.0 1 TSK-001 FS 0 2026-06-09 2026-06-10 레이아웃 컴포넌트 코드, 반응형 CSS 스타일시트, TSK-003 위젯 재배치 로직 개발 해상도별 위젯 그리드 재배치 로직 구현. 드래그앤드롭 위젯 순서 변경, 해상도 변경 시 자동 리플로우, 사용자 커스텀 레이아웃 저장/복원 기능 24.0 NOT_STARTED 개발자 100.0 1 TSK-002 FS 0 2026-06-11 2026-06-13 위젯 재배치 컴포넌트, 레이아웃 상태 관리 로직, 로컬스토리지 저장 모듈, TSK-004 반응형 레이아웃 단위 테스트 브레이크포인트별 레이아웃 렌더링 테스트, 위젯 재배치 로직 테스트, 리사이즈 이벤트 핸들링 테스트 작성 8.0 NOT_STARTED 개발자 100.0 1 TSK-003 FS 0 2026-06-14 2026-06-14 테스트 코드, 테스트 커버리지 리포트 2026-06-08 2026-06-14, WP-002 다크 테마 UI 및 테마 전환 구현 다크 테마 디자인 시스템 구축 및 라이트/다크 테마 전환 기능 구현. CSS 변수 기반 테마 토큰 정의, 전환 애니메이션, 사용자 설정 유지 TSK-005 다크 테마 디자인 시스템 설계 라이트/다크 테마 컬러 팔레트 정의. 배경, 텍스트, 보더, 섀도우, 상태색(success/warning/error) 등 전체 디자인 토큰 설계 및 명세서 작성 8.0 NOT_STARTED 디자이너 100.0 1 TSK-004 FS 0 2026-06-15 2026-06-15 다크 테마 컬러 팔레트, 디자인 토큰 명세서, UI 컴포넌트별 테마 가이드, TSK-006 CSS 변수 기반 테마 토큰 구현 CSS Custom Properties로 라이트/다크 테마 변수 정의. 시맨틱 토큰(--color-bg-primary, --color-text-secondary 등) 체계 구축 및 전역 스타일시트 적용 12.0 NOT_STARTED 개발자 100.0 1 TSK-005 FS 0 2026-06-16 2026-06-16 테마 CSS 변수 파일, 시맨틱 토큰 매핑, TSK-007 테마 전환 기능 및 애니메이션 개발 테마 토글 UI 컴포넌트 구현, 전환 시 부드러운 트랜지션 애니메이션 적용, 사용자 테마 설정 로컬스토리지 저장 및 시스템 설정(prefers-color-scheme) 연동 16.0 NOT_STARTED 개발자 100.0 1 TSK-006 FS 0 2026-06-17 2026-06-18 테마 토글 컴포넌트, 전환 애니메이션 CSS, 설정 유지 로직, TSK-008 기존 컴포넌트 테마 토큰 마이그레이션 기존 하드코딩된 색상값을 CSS 변수 참조로 일괄 전환. 모든 UI 컴포넌트에서 다크/라이트 테마 정상 렌더링 검증 16.0 NOT_STARTED 개발자 100.0 1 TSK-006 FS 0 2026-06-19 2026-06-20 마이그레이션된 컴포넌트 코드, 테마 적용 스크린샷, TSK-009 테마 기능 테스트 테마 전환 동작 테스트, 설정 유지 테스트, 시스템 설정 연동 테스트, 전체 컴포넌트 다크 테마 시각 검증 8.0 NOT_STARTED QA 100.0 1 TSK-007 FS 0, TSK-008 FS 0 2026-06-21 2026-06-21 테스트 케이스, 테스트 리포트, 이슈 목록 2026-06-15 2026-06-21, WP-003 모니터링 차트 및 시각화 UI 개선 CPU, 메모리, 디스크, 네트워크 모니터링 위젯의 시각화 품질 향상. 차트 인터랙션 개선, 툴팁 정보 강화, 게이지/그래프 애니메이션 최적화 TSK-010 CPU/메모리 모니터링 차트 개선 CPU 사용률 라인차트 및 메모리 사용량 영역차트 시각화 품질 향상. 실시간 데이터 스트리밍 렌더링, 줌/팬 인터랙션, 상세 툴팁(프로세스별 점유율, 타임스탬프) 구현 20.0 NOT_STARTED 개발자 100.0 1 TSK-009 FS 0 2026-06-22 2026-06-23 CPU 모니터링 차트 컴포넌트, 메모리 모니터링 차트 컴포넌트, 인터랙션 핸들러, TSK-011 디스크/네트워크 모니터링 위젯 개선 디스크 I/O 바차트 및 네트워크 트래픽 차트 개선. 디스크 파티션별 사용량 게이지, 네트워크 인/아웃바운드 실시간 그래프, 대역폭 임계치 시각 경고 구현 20.0 NOT_STARTED 개발자 100.0 1 TSK-010 FS 0 2026-06-24 2026-06-25 디스크 모니터링 위젯, 네트워크 모니터링 위젯, 임계치 알림 UI, TSK-012 게이지/그래프 애니메이션 최적화 requestAnimationFrame 기반 차트 애니메이션 최적화. 게이지 위젯 트랜지션 부드러움 개선, 불필요한 리렌더링 제거, 60fps 유지를 위한 렌더링 파이프라인 튜닝 16.0 NOT_STARTED 개발자 100.0 1 TSK-010 FS 0, TSK-011 FS 0 2026-06-26 2026-06-27 최적화된 애니메이션 코드, 성능 프로파일링 결과, TSK-013 차트 시각화 디자인 리뷰 및 가이드 작성 개선된 차트 컴포넌트 디자인 검수, 색상·타이포그래피·간격 일관성 확인, 차트 시각화 스타일 가이드 문서 작성 8.0 NOT_STARTED 디자이너 100.0 1 TSK-010 FS 0, TSK-011 FS 0 2026-06-28 2026-06-28 차트 스타일 가이드, 디자인 검수 피드백, TSK-014 차트 컴포넌트 단위 테스트 각 차트 컴포넌트 렌더링 테스트, 데이터 바인딩 테스트, 인터랙션(줌/팬/툴팁) 동작 테스트 작성 8.0 NOT_STARTED 개발자 100.0 1 TSK-012 FS 0 2026-06-29 2026-06-29 테스트 코드, 테스트 커버리지 리포트 2026-06-22 2026-06-29, WP-004 크로스 브라우저 호환성 확보 및 테스트 Chrome, Firefox, Safari, Edge 등 주요 브라우저에서의 호환성 테스트 수행 및 이슈 수정. 벤더 프리픽스, 폴리필 적용 및 브라우저별 렌더링 차이 해소 TSK-015 크로스 브라우저 테스트 계획 수립 테스트 대상 브라우저/버전 매트릭스 정의(Chrome 최신 2버전, Firefox 최신 2버전, Safari 16+, Edge 최신). 테스트 시나리오, 체크리스트, 자동화 도구(Playwright/BrowserStack) 설정 계획 수립 8.0 NOT_STARTED QA 100.0 1 TSK-014 FS 0 2026-06-30 2026-06-30 브라우저 테스트 매트릭스, 테스트 계획서, 자동화 도구 설정 가이드, TSK-016 브라우저 호환성 자동화 테스트 구축 Playwright 기반 크로스 브라우저 E2E 테스트 스크립트 작성. 주요 사용자 시나리오(대시보드 로딩, 위젯 인터랙션, 테마 전환, 반응형 동작) 자동화 24.0 NOT_STARTED QA 100.0 1 TSK-015 FS 0 2026-07-01 2026-07-03 E2E 테스트 스크립트, CI 파이프라인 설정, TSK-017 벤더 프리픽스 및 폴리필 적용 Autoprefixer 설정으로 벤더 프리픽스 자동 적용, 필요 시 core-js/polyfill 추가. CSS Grid, Flexbox gap, CSS 변수 등 브라우저 지원 범위 확인 및 대응 12.0 NOT_STARTED 개발자 100.0 1 TSK-015 FS 0 2026-07-04 2026-07-04 Autoprefixer 설정 파일, 폴리필 적용 코드, 브라우저 지원 매트릭스, TSK-018 브라우저별 렌더링 이슈 수정 자동화 및 수동 테스트에서 발견된 브라우저별 렌더링 차이 이슈 수정. Safari 스크롤 이슈, Firefox 폰트 렌더링, Edge 레이아웃 차이 등 개별 이슈 대응 16.0 NOT_STARTED 개발자 100.0 1 TSK-016 FS 0, TSK-017 FS 0 2026-07-05 2026-07-06 이슈 수정 코드, 수정 전후 스크린샷, TSK-019 크로스 브라우저 최종 검증 이슈 수정 후 전체 브라우저에서 회귀 테스트 수행. 모든 테스트 시나리오 통과 확인 및 최종 호환성 리포트 작성 8.0 NOT_STARTED QA 100.0 1 TSK-018 FS 0 2026-07-07 2026-07-07 최종 테스트 리포트, 호환성 인증 문서 2026-06-30 2026-07-07, WP-005 프론트엔드 성능 최적화 대시보드 초기 로딩 속도 및 실시간 데이터 갱신 성능 최적화. 컴포넌트 렌더링 최적화, 번들 사이즈 축소, 데이터 갱신 지연 최소화 TSK-020 프론트엔드 성능 프로파일링 Lighthouse, Chrome DevTools Performance 탭, React Profiler 등을 활용한 초기 로딩 및 런타임 성능 병목 분석. LCP, FCP, CLS, TTI 기준 현재 성능 베이스라인 측정 8.0 NOT_STARTED 개발자 100.0 1 TSK-019 FS 0 2026-07-08 2026-07-08 성능 프로파일링 리포트, 병목 지점 목록, 성능 베이스라인 문서, TSK-021 컴포넌트 렌더링 최적화 React.memo, useMemo, useCallback 적용으로 불필요한 리렌더링 제거. 가상화(virtualization) 적용이 필요한 대용량 리스트/테이블 식별 및 구현 16.0 NOT_STARTED 개발자 100.0 1 TSK-020 FS 0 2026-07-09 2026-07-10 최적화된 컴포넌트 코드, 렌더링 성능 비교 데이터, TSK-022 번들 사이즈 최적화 코드 스플리팅(React.lazy, dynamic import) 적용, 트리 셰이킹 점검, 대형 의존성 교체/제거. 번들 분석기(webpack-bundle-analyzer)로 사이즈 감소 검증 16.0 NOT_STARTED 개발자 100.0 1 TSK-020 FS 0 2026-07-11 2026-07-12 코드 스플리팅 적용 코드, 번들 분석 리포트, 최적화 전후 비교, TSK-023 실시간 데이터 갱신 성능 최적화 WebSocket/SSE 데이터 수신 시 상태 업데이트 배치 처리, 디바운스/쓰로틀 적용. 차트 리렌더링 최소화, 백그라운드 탭 데이터 갱신 제어 16.0 NOT_STARTED 개발자 100.0 1 TSK-020 FS 0 2026-07-13 2026-07-14 데이터 갱신 최적화 코드, 갱신 지연 측정 결과, TSK-024 성능 최적화 검증 및 리포트 최적화 적용 후 성능 지표 재측정. 베이스라인 대비 개선율 산출, Lighthouse 점수 비교, 목표 달성 여부 확인 리포트 작성 8.0 NOT_STARTED QA 100.0 1 TSK-021 FS 0, TSK-022 FS 0, TSK-023 FS 0 2026-07-15 2026-07-15 성능 비교 리포트, Lighthouse 점수 기록, 최적화 결과 요약 2026-07-08 2026-07-15, WP-006 사용성 테스트 및 UX 개선 사용자 시나리오 기반 사용성 테스트 수행 및 피드백 반영. 접근성(a11y) 개선, 키보드 네비게이션, 에러 상태 표시, 로딩 상태 UX 개선 TSK-025 사용성 테스트 시나리오 설계 주요 사용자 페르소나(시스템 관리자, DevOps 엔지니어) 정의 및 핵심 태스크 시나리오 작성. 대시보드 조회, 알림 확인, 위젯 커스터마이징, 상세 드릴다운 등 시나리오 설계 8.0 NOT_STARTED PM 100.0 1 TSK-024 FS 0 2026-07-16 2026-07-16 페르소나 문서, 테스트 시나리오, 평가 기준표, TSK-026 사용성 테스트 수행 설계된 시나리오 기반 사용성 테스트 실행. 태스크 완료율, 에러율, 소요시간 측정 및 사용자 피드백 수집. 주요 UX 이슈 도출 16.0 NOT_STARTED QA 100.0 1 TSK-025 FS 0 2026-07-17 2026-07-18 사용성 테스트 결과, UX 이슈 목록, 우선순위별 개선 사항, TSK-027 접근성(a11y) 개선 WCAG 2.1 AA 기준 접근성 감사 수행 및 이슈 수정. ARIA 레이블 추가, 색상 대비 비율 확보, 스크린 리더 호환성 개선, 포커스 관리 구현 16.0 NOT_STARTED 개발자 100.0 1 TSK-026 FS 0 2026-07-19 2026-07-20 접근성 개선 코드, axe/Lighthouse 접근성 리포트, TSK-028 키보드 네비게이션 구현 전체 대시보드 키보드 네비게이션 지원. 탭 순서 최적화, 위젯 간 포커스 이동, 차트 키보드 인터랙션, 단축키(Shortcut) 시스템 구현 16.0 NOT_STARTED 개발자 100.0 1 TSK-026 FS 0 2026-07-21 2026-07-22 키보드 네비게이션 코드, 단축키 매핑 문서, TSK-029 에러/로딩 상태 UX 개선 API 에러 시 사용자 친화적 에러 메시지 표시, 재시도 옵션 제공. 스켈레톤 UI 로딩 상태, 데이터 없음 상태, 연결 끊김 상태 등 빈 상태(empty state) 디자인 및 구현 16.0 NOT_STARTED 개발자 100.0 1 TSK-026 FS 0 2026-07-23 2026-07-24 에러 상태 컴포넌트, 로딩 스켈레톤 컴포넌트, 빈 상태 UI, TSK-030 UX 개선 검증 테스트 접근성, 키보드 네비게이션, 에러/로딩 상태 개선 사항에 대한 회귀 테스트 및 최종 사용성 검증 수행 8.0 NOT_STARTED QA 100.0 1 TSK-027 FS 0, TSK-028 FS 0, TSK-029 FS 0 2026-07-25 2026-07-25 회귀 테스트 결과, 최종 사용성 검증 리포트 2026-07-16 2026-07-25 | 2026-06-08 | 2026-07-25 | 전체 기능 완료 | 반응형 대시보드 레이아웃(모바일/태블릿/데스크톱), 크로스 브라우저 호환성 확보, UI/UX 개선 및 사용성 테스트 결과, 성능 기준 충족 확인(데이터 갱신 지연 최소화) |
| PH-005 | 통합 테스트 및 안정화 (Sprint 8) | 프론트엔드-백엔드 통합 테스트, 성능 최적화(메모리 누수 방지, 차트 렌더링 최적화), 가용성 검증, 배포 준비 | 5 | WP-001 프론트엔드-백엔드 통합 테스트 CPU, 메모리, 디스크, 네트워크 모니터링 API와 프론트엔드 대시보드 간 End-to-End 통합 테스트 수행. 실시간 데이터 갱신 흐름, API 응답 매핑, 에러 핸들링 시나리오 검증 TSK-001 통합 테스트 시나리오 설계 CPU, 메모리, 디스크, 네트워크 모니터링 API와 프론트엔드 대시보드 간 E2E 테스트 시나리오 및 테스트 케이스 문서 작성. 정상 흐름, 에러 흐름, 경계값 케이스 정의 8.0 NOT_STARTED QA 100.0 1 TSK-030 FS 0 2026-07-26 2026-07-26 테스트 시나리오 문서, 테스트 케이스 목록, TSK-002 API 응답 매핑 통합 테스트 구현 각 모니터링 API(CPU, 메모리, 디스크, 네트워크) 엔드포인트 호출 후 프론트엔드 컴포넌트에 데이터가 정확히 매핑되는지 검증하는 E2E 테스트 코드 작성. Cypress 또는 Playwright 활용 16.0 NOT_STARTED 개발자 100.0 1 TSK-001 FS 0 2026-07-27 2026-07-28 E2E 테스트 코드, 테스트 실행 스크립트, TSK-003 실시간 데이터 갱신 흐름 테스트 WebSocket/Polling 기반 실시간 데이터 갱신이 프론트엔드에 정상 반영되는지 검증. 데이터 수신 주기, 순서 보장, 연결 재시도 로직 테스트 12.0 NOT_STARTED 개발자 100.0 1 TSK-001 FS 0 2026-07-29 2026-07-29 실시간 갱신 테스트 코드, 테스트 리포트, TSK-004 에러 핸들링 시나리오 테스트 API 타임아웃, 500 에러, 네트워크 단절, 잘못된 응답 포맷 등 에러 상황에서 프론트엔드의 에러 표시 및 복구 동작 검증 12.0 NOT_STARTED QA 100.0 1 TSK-002 FS 0, TSK-003 FS 0 2026-07-30 2026-07-30 에러 시나리오 테스트 코드, 에러 핸들링 검증 리포트, TSK-005 통합 테스트 결과 분석 및 버그 리포트 전체 통합 테스트 실행 결과 취합, 발견된 결함 분류 및 버그 리포트 작성, 재테스트 항목 식별 8.0 NOT_STARTED QA 100.0 1 TSK-004 FS 0 2026-07-31 2026-07-31 통합 테스트 리포트, 버그 리포트, 재테스트 목록 2026-07-26 2026-07-31, WP-002 성능 최적화 - 메모리 누수 방지 실시간 데이터 갱신(WebSocket/Polling) 과정에서 발생하는 메모리 누수 탐지 및 수정. 컴포넌트 언마운트 시 구독 해제, 타이머 정리, 이벤트 리스너 정리 검증. 장시간 운영 시 메모리 사용량 프로파일링 TSK-006 메모리 누수 탐지 프로파일링 환경 구성 Chrome DevTools Memory Profiler, Node.js --inspect 등 프로파일링 도구 설정. 장시간 운영 시뮬레이션을 위한 테스트 환경 및 자동화 스크립트 구성 8.0 NOT_STARTED 개발자 100.0 1 TSK-005 FS 0 2026-08-01 2026-08-01 프로파일링 환경 설정 가이드, 자동화 스크립트, TSK-007 프론트엔드 메모리 누수 탐지 및 수정 컴포넌트 언마운트 시 WebSocket 구독 해제, setInterval/setTimeout 정리, addEventListener 제거 누락 지점 식별 및 수정. useEffect cleanup 로직 점검 16.0 NOT_STARTED 개발자 100.0 1 TSK-006 FS 0 2026-08-02 2026-08-03 수정된 컴포넌트 코드, 메모리 프로파일 비교 결과, TSK-008 백엔드 메모리 누수 탐지 및 수정 WebSocket 연결 관리, 이벤트 리스너 누적, 미해제 스트림 등 백엔드 메모리 누수 포인트 식별 및 수정. 힙 스냅샷 분석 16.0 NOT_STARTED 개발자 100.0 1 TSK-006 FS 0 2026-08-04 2026-08-05 수정된 서버 코드, 힙 스냅샷 분석 결과, TSK-009 장시간 운영 메모리 사용량 검증 24시간 이상 연속 운영 시뮬레이션 후 메모리 사용량 추이 측정. 수정 전후 비교 분석 및 안정성 확인 8.0 NOT_STARTED QA 100.0 1 TSK-007 FS 0, TSK-008 FS 0 2026-08-06 2026-08-06 메모리 사용량 추이 그래프, 안정성 검증 리포트 2026-08-01 2026-08-06, WP-003 성능 최적화 - 차트 렌더링 최적화 CPU, 메모리, 네트워크 트래픽 등 실시간 차트 컴포넌트의 렌더링 성능 개선. 불필요한 리렌더링 방지, 데이터 포인트 간솎(다운샘플링), 가상화 적용. 다크 테마 및 반응형 레이아웃 환경에서의 렌더링 성능 검증 TSK-010 차트 렌더링 성능 베이스라인 측정 현재 CPU, 메모리, 네트워크 트래픽 차트 컴포넌트의 FPS, 렌더링 시간, 리렌더링 횟수 측정. React Profiler 및 Performance API 활용 8.0 NOT_STARTED 개발자 100.0 1 TSK-009 FS 0 2026-08-07 2026-08-07 성능 베이스라인 측정 결과, 병목 지점 분석 보고서, TSK-011 불필요한 리렌더링 방지 최적화 React.memo, useMemo, useCallback 적용. 차트 데이터 상태 관리 구조 개선. 부모 컴포넌트 리렌더링 시 차트 컴포넌트 격리 16.0 NOT_STARTED 개발자 100.0 1 TSK-010 FS 0 2026-08-08 2026-08-09 최적화된 차트 컴포넌트 코드, 리렌더링 횟수 비교 결과, TSK-012 데이터 다운샘플링 및 가상화 적용 시계열 데이터 포인트 다운샘플링 알고리즘 구현(LTTB 등). 대량 데이터 포인트 렌더링 시 canvas 기반 가상화 또는 windowing 적용 20.0 NOT_STARTED 개발자 100.0 1 TSK-010 FS 0 2026-08-10 2026-08-11 다운샘플링 모듈, 가상화 적용 차트 컴포넌트, TSK-013 다크 테마 및 반응형 환경 렌더링 성능 검증 다크 테마 전환 시 차트 리렌더링 성능 검증. 다양한 뷰포트 크기에서 차트 리사이즈 성능 측정. 최적화 전후 비교 8.0 NOT_STARTED QA 100.0 1 TSK-011 FS 0, TSK-012 FS 0 2026-08-12 2026-08-12 테마별 렌더링 성능 리포트, 반응형 성능 테스트 결과 2026-08-07 2026-08-12, WP-004 가용성 및 호환성 검증 단일 서버 환경에서의 시스템 가용성 테스트 수행. 백엔드 API 장애 시 프론트엔드 폴백 동작 검증, 데이터 비영속성 환경에서의 복구 시나리오 테스트. 주요 브라우저(Chrome, Firefox, Edge, Safari) 호환성 및 반응형 레이아웃 다양한 해상도 테스트 TSK-014 백엔드 장애 시 프론트엔드 폴백 동작 테스트 API 서버 다운, 응답 지연, 부분 장애 시 프론트엔드의 폴백 UI 표시, 캐시 데이터 활용, 자동 재연결 동작 검증 12.0 NOT_STARTED QA 100.0 1 TSK-013 FS 0 2026-08-13 2026-08-13 폴백 동작 테스트 코드, 장애 시나리오 검증 리포트, TSK-015 데이터 비영속성 환경 복구 시나리오 테스트 서버 재시작 후 인메모리 데이터 초기화 상태에서 대시보드 정상 동작 검증. 데이터 재수집 시작, 빈 상태 UI 처리, 점진적 데이터 채움 확인 8.0 NOT_STARTED QA 100.0 1 TSK-014 FS 0 2026-08-14 2026-08-14 복구 시나리오 테스트 결과, 비영속성 환경 동작 검증서, TSK-016 크로스 브라우저 호환성 테스트 Chrome, Firefox, Edge, Safari에서 대시보드 전체 기능 동작 검증. 차트 렌더링, WebSocket 연결, CSS 호환성, JavaScript API 호환성 확인 16.0 NOT_STARTED QA 100.0 1 TSK-015 FS 0 2026-08-15 2026-08-16 브라우저별 테스트 결과, 호환성 이슈 목록, TSK-017 반응형 레이아웃 다해상도 테스트 데스크탑(1920x1080, 1440x900), 태블릿(1024x768), 모바일(375x667) 등 주요 해상도에서 대시보드 레이아웃 및 차트 표시 검증 12.0 NOT_STARTED QA 100.0 1 TSK-016 FS 0 2026-08-17 2026-08-17 해상도별 스크린샷, 반응형 테스트 리포트, TSK-018 호환성 이슈 수정 및 재검증 크로스 브라우저 및 반응형 테스트에서 발견된 이슈 수정. 수정 후 재테스트 수행 및 최종 검증 16.0 NOT_STARTED 개발자 100.0 1 TSK-016 FS 0, TSK-017 FS 0 2026-08-18 2026-08-19 수정된 코드, 재검증 리포트 2026-08-13 2026-08-19, WP-005 배포 준비 및 운영 문서화 프론트엔드·백엔드 빌드 및 배포 파이프라인 구성. 배포 가이드 문서 작성(환경 설정, 의존성, 빌드 명령어). 운영 매뉴얼 작성(시스템 시작/중지, 로그 확인, 트러블슈팅 가이드). 프론트엔드·백엔드 기술 스택 제약사항 반영 TSK-019 프론트엔드 빌드 및 배포 파이프라인 구성 프론트엔드 프로젝트 빌드 스크립트 정리, 환경별(개발/스테이징/운영) 빌드 설정, 정적 파일 배포 자동화 스크립트 작성 12.0 NOT_STARTED 개발자 100.0 1 TSK-018 FS 0 2026-08-20 2026-08-20 빌드 스크립트, 배포 자동화 스크립트, 환경별 설정 파일, TSK-020 백엔드 빌드 및 배포 파이프라인 구성 백엔드 프로젝트 빌드 및 실행 스크립트 정리, 환경 변수 관리, 프로세스 매니저(PM2 등) 설정, 배포 자동화 구성 12.0 NOT_STARTED 개발자 100.0 1 TSK-019 FS 0 2026-08-21 2026-08-21 빌드 스크립트, 배포 자동화 스크립트, 프로세스 매니저 설정, TSK-021 배포 가이드 문서 작성 환경 요구사항, 의존성 설치, 환경 변수 설정, 빌드 명령어, 배포 절차를 포함하는 배포 가이드 문서 작성. 기술 스택 제약사항 명시 8.0 NOT_STARTED 개발자 100.0 1 TSK-019 FS 0, TSK-020 FS 0 2026-08-22 2026-08-22 배포 가이드 문서, TSK-022 운영 매뉴얼 작성 시스템 시작/중지 절차, 로그 확인 방법, 주요 트러블슈팅 시나리오 및 대응 방법, 모니터링 항목 점검 체크리스트 작성 8.0 NOT_STARTED PM 100.0 1 TSK-019 FS 0, TSK-020 FS 0 2026-08-23 2026-08-23 운영 매뉴얼 문서, 트러블슈팅 가이드, TSK-023 배포 파이프라인 검증 및 드라이런 구성된 배포 파이프라인의 실제 동작 검증. 스테이징 환경 배포 드라이런 수행, 롤백 절차 확인 8.0 NOT_STARTED 개발자 100.0 1 TSK-021 FS 0 2026-08-24 2026-08-24 드라이런 실행 결과, 배포 검증 리포트 2026-08-20 2026-08-24 | 2026-07-26 | 2026-08-24 | 서비스 오픈 | 통합 테스트 완료 보고서, 성능 최적화 결과(메모리 누수 방지, 차트 렌더링 최적화), 가용성 테스트 결과, 배포 가이드 문서, 운영 매뉴얼, 최종 배포 완료 |

Links (resource_type, total_hours, total_days, peak_allocation):
- PM 56.0 7.0 0
- 개발자 1010.0 126.25 0
- QA 252.0 31.5 0
- 디자이너 32.0 4.0 0
